# Project Bravo

Schedule from MS Project XML, 2026-04-01 to 2026-10-30.

## Calendars

- Standard: Mon-Fri as the base calendar; Sat-Sun off.

## Resources

| Resource |
| --- |
| All WS Leads |
| All Workstreams |
| App Teams |
| Asset Mgmt |
| BGSW |
| BGSW AD Team |
| BGSW Azure Team |
| BGSW CIO |
| BGSW CISO |
| BGSW CWP |
| BGSW CWP Team |
| BGSW Cloud Team |
| BGSW HR IT |
| BGSW IT |
| BGSW IT Architects |
| BGSW IT PM |
| BGSW Infra |
| BGSW Infra Team |
| BGSW Procurement |
| Bosch BD/MIL |
| Business |
| Business Key Users |
| Business Leads |
| Comms |
| Dev Teams |
| Executive Leadership |
| Facilities |
| Finance |
| Help Desk |
| IT |
| IT Ops |
| Legal |
| PMO |
| Partners |
| Riyaz Ahmed |
| Steering Committee |
| Tata Architects |
| Tata Executive |
| Tata Senior Mgmt |
| Test Team |
| WS Leads |

## Schedule

| ID | WBS | Task | Type | Duration | Start | Finish | Predecessors | Constraint | Resources |
| --- | --- | --- | --- | --- | --- | --- | --- | --- | --- |
| 1 | 1 | **Phase 0 - Initialization** |  | 22d | 2026-04-01 | 2026-04-30 |  |  | Riyaz Ahmed; BGSW IT |
| 2 | 1.1 | **0.1 Project Setup and Governance** |  | 8d | 2026-04-01 | 2026-04-10 |  |  | Riyaz Ahmed |
| 3 | 1.1.1 | Appoint Bravo Programme Leads (BGSW and JV-Tata) |  | 3d | 2026-04-01 | 2026-04-03 |  | must start on 2026-04-01 | BGSW CIO; Riyaz Ahmed |
| 4 | 1.1.2 | Establish Bravo Steering Committee |  | 3d | 2026-04-01 | 2026-04-03 | 3 | must start on 2026-04-01 | BGSW; Tata Senior Mgmt |
| 5 | 1.1.3 | Define RACI and Governance Model |  | 5d | 2026-04-06 | 2026-04-10 | 3 | must start on 2026-04-06 | Riyaz Ahmed |
| 6 | 1.1.4 | Set Up PMO Tools and Collaboration Site |  | 5d | 2026-04-06 | 2026-04-10 | 4 | must start on 2026-04-06 | PMO; Riyaz Ahmed |
| 7 | 1.2 | Signing - Frozen Zone Activated | milestone | 0d | 2026-04-07 | 2026-04-07 | 3 | must start on 2026-04-07 | BGSW; Tata Executive |
| 8 | 1.3 | **0.2 BGSW AI IT Landscape Assessment (2 India Sites)** |  | 15d | 2026-04-06 | 2026-04-24 | 3 |  | BGSW IT; Riyaz Ahmed |
| 9 | 1.3.1 | AI IT Inventory (17 Apps / 70 Users / 2 Sites) |  | 5d | 2026-04-06 | 2026-04-10 | 5 | must start on 2026-04-06 | BGSW IT PM |
| 10 | 1.3.2 | Location Confirmation - 2 India Sites |  | 5d | 2026-04-06 | 2026-04-10 | 5 | must start on 2026-04-06 | BGSW IT; Facilities |
| 11 | 1.3.3 | JV Legal Entity Preparation (India MCA Registration) |  | 10d | 2026-04-13 | 2026-04-24 | 9 | must start on 2026-04-13 | Legal; Finance |
| 12 | 1.3.4 | Identify AI IT Dependencies on BGSW Shared Services |  | 10d | 2026-04-13 | 2026-04-24 | 9 | must start on 2026-04-13 | BGSW IT Architects |
| 13 | 1.4 | **0.3 Scope Definition and Charter** |  | 10d | 2026-04-13 | 2026-04-24 | 8 |  | Riyaz Ahmed |
| 14 | 1.4.1 | Define Scope - 17 AI Apps, 70 Users, 2 India Sites |  | 5d | 2026-04-13 | 2026-04-17 | 8 | must start on 2026-04-13 | Riyaz Ahmed; BGSW IT |
| 15 | 1.4.2 | JV Operating Framework Confirmation |  | 5d | 2026-04-13 | 2026-04-17 | 8 | must start on 2026-04-13 | Riyaz Ahmed; Legal |
| 16 | 1.4.3 | Project Charter Draft and Approval |  | 5d | 2026-04-20 | 2026-04-24 | 14, 15 | must start on 2026-04-20 | Riyaz Ahmed |
| 17 | 1.5 | QG0 - Initialization Quality Gate | milestone | 0d | 2026-04-30 | 2026-04-30 | 12, 16 | must start on 2026-04-30 | Steering Committee |
| 18 | 2 | **Phase 1 - Concept** |  | 11d | 2026-05-01 | 2026-05-15 | 17 |  | BGSW IT; Riyaz Ahmed |
| 19 | 2.1 | **1.1 As-Is Analysis** |  | 11d | 2026-05-01 | 2026-05-15 | 17 |  | BGSW IT; Riyaz Ahmed |
| 20 | 2.1.1 | Application Deep-Dive - 17 AI Apps |  | 8d | 2026-05-01 | 2026-05-12 | 17 | must start on 2026-05-01 | BGSW IT Architects |
| 21 | 2.1.2 | IT Infrastructure Mapping - 2 India Sites |  | 5d | 2026-05-01 | 2026-05-07 | 17 | must start on 2026-05-01 | BGSW Infra Team |
| 22 | 2.1.3 | Data Ownership and Separation Rules |  | 5d | 2026-05-04 | 2026-05-08 | 17 | must start on 2026-05-04 | Riyaz Ahmed; Legal |
| 23 | 2.1.4 | Contract and Licence Review - 17 AI Apps |  | 8d | 2026-05-01 | 2026-05-12 | 17 | must start on 2026-05-01 | BGSW Procurement; IT |
| 24 | 2.1.5 | HR IT Mapping - 70 AI Business Users |  | 5d | 2026-05-01 | 2026-05-07 | 17 | must start on 2026-05-01 | BGSW HR IT |

Notes:
- 1: Resources: Riyaz Ahmed + BGSW IT
- 2: Resources: Riyaz Ahmed
- 3: Resources: BGSW CIO + Riyaz Ahmed
- 4: Resources: BGSW + Tata Senior Mgmt
- 5: Resources: Riyaz Ahmed
- 6: Resources: PMO + Riyaz Ahmed
- 7: Resources: BGSW + Tata Executive / No AI IT production changes without SteerCo approval from this date
- 8: Resources: BGSW IT + Riyaz Ahmed / 2 India sites
- 9: Resources: BGSW IT PM / 17 AI apps; 70 users; 2 India sites; no ERP; no SAP
- 10: Resources: BGSW IT + Facilities
- 11: Resources: Legal + Finance / 50/50 Tata-Bosch JV; Bosch leadership control; not antitrust relevant; no regulatory filing required
- 12: Resources: BGSW IT Architects / Minimal dependencies; Bosch-led JV remains closely aligned with BGSW operations post-GoLive
- 13: Resources: Riyaz Ahmed
- 14: Resources: Riyaz Ahmed + BGSW IT / No ERP; No SAP; No TSA post-GoLive; Bosch-led JV; Combination model
- 15: Resources: Riyaz Ahmed + Legal / Bosch leadership control; 50/50 JV with Tata; not antitrust relevant; JV continues under Bosch governance
- 16: Resources: Riyaz Ahmed
- 17: Resources: Steering Committee / Charter approved; inventory confirmed (17 apps, 70 users, 2 India sites); JV governance agreed; proceed to Concept
- 18: Resources: BGSW IT + Riyaz Ahmed
- 19: Resources: BGSW IT + Riyaz Ahmed
- 20: Resources: BGSW IT Architects / Classify all 17 apps: retain in JV / retire / re-host; no ERP or SAP in scope
- 21: Resources: BGSW Infra Team
- 22: Resources: Riyaz Ahmed + Legal / AI data vs BGSW corporate data; simplified by Bosch JV leadership
- 23: Resources: BGSW Procurement + IT / Change-of-control clause review for all 17 AI applications
- 24: Resources: BGSW HR IT / India payroll and HR for 70 users across 2 India sites

| ID | WBS | Task | Duration | Start | Finish | Predecessors | Constraint | Resources |
| --- | --- | --- | --- | --- | --- | --- | --- | --- |
| 25 | 3 | **Phase 2 - Architecture and Design** | 15d | 2026-05-11 | 2026-05-29 | 20 |  | BGSW IT Architects; Riyaz Ahmed |
| 26 | 3.1 | **2.1 JV IT Architecture Design** | 15d | 2026-05-11 | 2026-05-29 | 20 |  | BGSW IT Architects; Riyaz Ahmed |
| 27 | 3.1.1 | JV Architecture Workshop (Combination Model) | 3d | 2026-05-11 | 2026-05-13 | 20 | must start on 2026-05-11 | BGSW; Tata Architects |
| 28 | 3.1.2 | M365 and Azure Tenant Design - JV Entity (<70 Mailboxes) | 7d | 2026-05-14 | 2026-05-22 | 27 | must start on 2026-05-14 | BGSW Azure Team |
| 29 | 3.1.3 | Active Directory Design - JV Forest | 7d | 2026-05-14 | 2026-05-22 | 27 | must start on 2026-05-14 | BGSW AD Team |
| 30 | 3.1.4 | Network Architecture - 2 India JV Sites | 7d | 2026-05-14 | 2026-05-22 | 27 | must start on 2026-05-14 | BGSW Infra |
| 31 | 3.1.5 | Security Architecture - JV Entity | 5d | 2026-05-25 | 2026-05-29 | 29, 30 | must start on 2026-05-25 | BGSW CISO |
| 32 | 3.2 | **2.2 Migration Strategy and Planning Baseline** | 15d | 2026-05-11 | 2026-05-29 | 20 |  | Riyaz Ahmed; WS Leads |
| 33 | 3.2.1 | Application Migration Plan - 17 Apps (Single Wave) | 7d | 2026-05-11 | 2026-05-19 | 20 | must start on 2026-05-11 | Riyaz Ahmed; WS Leads |
| 34 | 3.2.2 | Data Migration Plan | 7d | 2026-05-11 | 2026-05-19 | 22 | must start on 2026-05-11 | Riyaz Ahmed; BGSW IT |
| 35 | 3.2.3 | Detailed Project Plan and Budget Baseline | 5d | 2026-05-25 | 2026-05-29 | 33 | must start on 2026-05-25 | Riyaz Ahmed; Finance |
| 36 | 3.2.4 | Risk Register Baseline | 5d | 2026-05-25 | 2026-05-29 | 33 | must start on 2026-05-25 | Riyaz Ahmed; WS Leads |
| 37 | 4 | **Phase 3 - Build and Test** | 20d | 2026-06-01 | 2026-06-26 | 35, 36 |  | All Workstreams |
| 38 | 4.1 | **3.1 JV IT Infrastructure Build** | 18d | 2026-06-01 | 2026-06-24 | 36 |  | BGSW Infra; Partners |
| 39 | 4.1.1 | M365 Tenant Provisioning (<70 Mailboxes) | 5d | 2026-06-01 | 2026-06-05 | 36 | must start on 2026-06-01 | BGSW Azure Team |
| 40 | 4.1.2 | Azure and Cloud Environment Setup - JV | 7d | 2026-06-08 | 2026-06-16 | 39 | must start on 2026-06-08 | BGSW Cloud Team |
| 41 | 4.1.3 | Active Directory Build - JV Forest | 10d | 2026-06-01 | 2026-06-12 | 36 | must start on 2026-06-01 | BGSW AD Team |
| 42 | 4.1.4 | Network Setup - 2 India JV Sites | 10d | 2026-06-01 | 2026-06-12 | 36 | must start on 2026-06-01 | BGSW Infra |
| 43 | 4.1.5 | Security and IAM Platform Setup - JV | 8d | 2026-06-11 | 2026-06-22 | 41, 42 | must start on 2026-06-11 | BGSW CISO |
| 44 | 4.2 | **3.2 Application Migration - 17 AI Apps (Single Wave)** | 18d | 2026-06-01 | 2026-06-24 | 36 |  | Dev Teams; BGSW IT |
| 45 | 4.2.1 | Application Reconfiguration for JV - 17 Apps | 12d | 2026-06-01 | 2026-06-16 | 36 | must start on 2026-06-01 | Dev Teams |
| 46 | 4.2.2 | Data Migration Execution | 8d | 2026-06-11 | 2026-06-22 | 45 | must start on 2026-06-11 | BGSW IT; Riyaz Ahmed |
| 47 | 4.3 | **3.3 Device Migration - 70 Devices (2 India Sites)** | 10d | 2026-06-15 | 2026-06-26 | 41 |  | BGSW CWP Team |
| 48 | 4.3.1 | Device Inventory and Assessment - 70 Devices | 3d | 2026-06-15 | 2026-06-17 | 41 | must start on 2026-06-15 | BGSW IT; Asset Mgmt |
| 49 | 4.3.2 | Device Reimaging - JV Standard Image (70 Devices) | 7d | 2026-06-18 | 2026-06-26 | 48 | must start on 2026-06-18 | BGSW CWP |

Notes:
- 25: Resources: BGSW IT Architects + Riyaz Ahmed
- 26: Resources: BGSW IT Architects + Riyaz Ahmed
- 27: Resources: BGSW + Tata Architects / Confirms Combination JV model; Bosch leadership; JV IT target state defined
- 28: Resources: BGSW Azure Team / New M365 tenant; <70 mailboxes; Teams and OneDrive in scope
- 29: Resources: BGSW AD Team / New AD forest for JV; fully separate from BGSW corporate AD
- 30: Resources: BGSW Infra / Domestic India connectivity across 2 JV sites; no international WAN required
- 31: Resources: BGSW CISO / JV security independent of BGSW; ISO 27001 baseline; Bosch security standards retained
- 32: Resources: Riyaz Ahmed + WS Leads
- 33: Resources: Riyaz Ahmed + WS Leads / Single wave; all 17 apps; Bosch-led JV simplifies target endpoint configuration
- 34: Resources: Riyaz Ahmed + BGSW IT
- 35: Resources: Riyaz Ahmed + Finance
- 36: Resources: Riyaz Ahmed + WS Leads
- 37: Resources: All Workstreams
- 38: Resources: BGSW Infra + Partners
- 39: Resources: BGSW Azure Team
- 40: Resources: BGSW Cloud Team
- 41: Resources: BGSW AD Team / Foundation for all 70 JV users and 17 AI applications; no backout possible
- 42: Resources: BGSW Infra
- 43: Resources: BGSW CISO
- 44: Resources: Dev Teams + BGSW IT
- 45: Resources: Dev Teams / Re-point 17 apps from BGSW to JV AD / M365 / Azure; Bosch-led JV simplifies target configuration
- 46: Resources: BGSW IT + Riyaz Ahmed
- 47: Resources: BGSW CWP Team
- 48: Resources: BGSW IT + Asset Mgmt
- 49: Resources: BGSW CWP / JV domain image across 2 India sites

| ID | WBS | Task | Type | Duration | Start | Finish | Predecessors | Constraint | Resources |
| --- | --- | --- | --- | --- | --- | --- | --- | --- | --- |
| 50 | 4.4 | **3.4 Testing and Validation** |  | 10d | 2026-06-15 | 2026-06-26 | 44 |  | Test Team; Business |
| 51 | 4.4.1 | Integration Testing - All 17 AI Applications |  | 7d | 2026-06-15 | 2026-06-23 | 45 | must start on 2026-06-15 | App Teams; Test Team |
| 52 | 4.4.2 | User Acceptance Testing (UAT) - 70 Users |  | 5d | 2026-06-18 | 2026-06-24 | 51 | must start on 2026-06-18 | Business Key Users |
| 53 | 4.4.3 | Security and Penetration Testing - JV Environment |  | 5d | 2026-06-15 | 2026-06-19 | 43 | must start on 2026-06-15 | BGSW CISO |
| 54 | 4.5 | UAT Sign-Off | milestone | 0d | 2026-06-24 | 2026-06-24 | 52 | must start on 2026-06-24 | Business Leads; Riyaz Ahmed |
| 55 | 4.6 | QG1/2/3 - Combined Quality Gate (Concept + Architecture + Build) | milestone | 0d | 2026-06-26 | 2026-06-26 | 49, 53, 54 | must start on 2026-06-26 | Steering Committee |
| 56 | 5 | **Phase 4 - GoLive and Closure** |  | 89d | 2026-06-29 | 2026-10-30 | 55 |  | All Workstreams |
| 57 | 5.1 | **4.1 Pre-GoLive Preparation** |  | 2d | 2026-06-29 | 2026-06-30 | 55 |  | Riyaz Ahmed; WS Leads |
| 58 | 5.1.1 | Cutover Plan Finalisation and Go No-Go Assessment |  | 1d | 2026-06-29 | 2026-06-29 | 55 | must start on 2026-06-29 | All WS Leads; Riyaz Ahmed |
| 59 | 5.1.2 | Help Desk Activation and Training - JV |  | 2d | 2026-06-29 | 2026-06-30 | 55 | must start on 2026-06-29 | IT Ops |
| 60 | 5.1.3 | End-User Pre-GoLive Communication - 70 AI Business Users |  | 1d | 2026-06-29 | 2026-06-29 | 55 | must start on 2026-06-29 | Comms; BGSW IT |
| 61 | 5.2 | QG4 - Pre-GoLive Quality Gate | milestone | 0d | 2026-06-30 | 2026-06-30 | 58, 59, 60 | must start on 2026-06-30 | Steering Committee |
| 62 | 5.3 | **4.2 Day 1 GoLive** |  | 1d | 2026-07-01 | 2026-07-01 | 61 |  | All Workstreams |
| 63 | 5.3.1 | Day 1 - JV IT GoLive (Legal Separation Effective) | milestone | 0d | 2026-07-01 | 2026-07-01 | 61 | must start on 2026-07-01 | Executive Leadership |
| 64 | 5.3.2 | Network Domain Cutover to JV Active Directory |  | 1d | 2026-07-01 | 2026-07-01 | 63 | must start on 2026-07-01 | BGSW Infra |
| 65 | 5.3.3 | Application Day 1 Activation - All 17 AI Apps |  | 1d | 2026-07-01 | 2026-07-01 | 63 | must start on 2026-07-01 | App Teams |
| 66 | 5.3.4 | User Go-Live Communication - 70 AI Business Users |  | 1d | 2026-07-01 | 2026-07-01 | 63 | must start on 2026-07-01 | Comms; BGSW IT |
| 67 | 5.4 | **4.3 Hypercare - 60 Working Days** |  | 60d | 2026-07-06 | 2026-09-25 | 62 |  | WS Leads; IT Ops |
| 68 | 5.4.1 | Daily Operations Review Meetings |  | 60d | 2026-07-06 | 2026-09-25 | 62 | must start on 2026-07-06 | Riyaz Ahmed; WS Leads |
| 69 | 5.4.2 | Incident Management and P1/P2 Resolution |  | 60d | 2026-07-06 | 2026-09-25 | 62 | must start on 2026-07-06 | IT Ops; Help Desk |
| 70 | 5.4.3 | Application Stability Monitoring - 17 Apps |  | 60d | 2026-07-06 | 2026-09-25 | 62 | must start on 2026-07-06 | App Teams; IT Ops |
| 71 | 5.5 | Hypercare Close - Formal Sign-Off | milestone | 0d | 2026-09-25 | 2026-09-25 | 68, 69, 70 | must start on 2026-09-25 | Steering Committee |
| 72 | 5.6 | **4.4 Programme Closure** |  | 25d | 2026-09-28 | 2026-10-30 | 71 |  | Riyaz Ahmed; Bosch BD/MIL |
| 73 | 5.6.1 | Lessons Learned Workshop |  | 3d | 2026-09-28 | 2026-09-30 | 71 | must start on 2026-09-28 | All WS Leads |
| 74 | 5.6.2 | Final Financial Reconciliation |  | 5d | 2026-09-28 | 2026-10-02 | 71 | must start on 2026-09-28 | Finance; Riyaz Ahmed |
| 75 | 5.6.3 | Programme Closure Report |  | 10d | 2026-10-05 | 2026-10-16 | 73 | must start on 2026-10-05 | Riyaz Ahmed; Bosch BD/MIL |
| 76 | 5.6.4 | Final Programme Sign-Off | milestone | 0d | 2026-10-16 | 2026-10-16 | 75, 74 | must start on 2026-10-16 | Executive Leadership |
| 77 | 5.7 | QG5 - Programme Closure Quality Gate | milestone | 0d | 2026-10-30 | 2026-10-30 | 76 | must start on 2026-10-30 | Steering Committee |

Notes:
- 50: Resources: Test Team + Business
- 51: Resources: App Teams + Test Team
- 52: Resources: Business Key Users / JV AI business users confirm Day 1 readiness across 2 India sites
- 53: Resources: BGSW CISO
- 54: Resources: Business Leads + Riyaz Ahmed
- 55: Resources: Steering Committee / Architecture approved; all 17 apps reconfigured and tested; 70 devices configured; UAT passed; proceed to GoLive preparation
- 56: Resources: All Workstreams
- 57: Resources: Riyaz Ahmed + WS Leads
- 58: Resources: All WS Leads + Riyaz Ahmed
- 59: Resources: IT Ops / India support coverage for 70 JV AI users across 2 sites ready before GoLive
- 60: Resources: Comms + BGSW IT / Pre-GoLive communication to all 70 AI users across 2 India sites
- 61: Resources: Steering Committee / Cutover plan approved; all 17 apps ready; 70 users and devices ready; JV infra stable; DAY 1 GOLIVE AUTHORISED
- 62: Resources: All Workstreams / GoLive proceeds only after QG4 passed on 30 Jun 2026
- 63: Resources: Executive Leadership / Bosch-led JV AI IT fully separated from BGSW; JV IT independent from this date; no TSA required
- 64: Resources: BGSW Infra
- 65: Resources: App Teams
- 66: Resources: Comms + BGSW IT
- 67: Resources: WS Leads + IT Ops
- 68: Resources: Riyaz Ahmed + WS Leads / India standup cadence; JV AI systems stability; Bosch-led escalation path available
- 69: Resources: IT Ops + Help Desk
- 70: Resources: App Teams + IT Ops / No TSA; JV Bosch-led; escalation via normal BGSW governance channels
- 71: Resources: Steering Committee
- 72: Resources: Riyaz Ahmed + Bosch BD/MIL
- 73: Resources: All WS Leads
- 74: Resources: Finance + Riyaz Ahmed
- 75: Resources: Riyaz Ahmed + Bosch BD/MIL
- 76: Resources: Executive Leadership
- 77: Resources: Steering Committee / Hypercare stable; JV IT fully operational under Bosch governance; all 17 apps stable; Project Bravo formally closed
