# Project Trinity

Schedule from MS Project XML, 2026-06-01 to 2027-12-31.

## Calendars

- Standard: Mon-Fri as the base calendar; Sat-Sun off.

## Resources

| Resource |
| --- |
| AM IT Team |
| AP IT Team |
| All WS |
| All WS Leads |
| All Workstreams |
| App Owners |
| App Teams |
| Asset Mgmt |
| Bosch |
| Bosch AD Team |
| Bosch Azure Team |
| Bosch BW Team |
| Bosch CIO |
| Bosch CISO |
| Bosch CWP |
| Bosch CWP Team |
| Bosch Cloud Team |
| Bosch ERP Team |
| Bosch HR |
| Bosch HR IT |
| Bosch IAM |
| Bosch IAM Team |
| Bosch IT |
| Bosch IT Architects |
| Bosch IT Ops |
| Bosch IT Org Team |
| Bosch IT PM |
| Bosch ITSM |
| Bosch ITSM Team |
| Bosch Infra |
| Bosch Infra Team |
| Bosch OT |
| Bosch Procurement |
| Bosch SAP |
| Bosch SAP Security |
| Bosch Telecom |
| Business |
| Business Key Users |
| Business Leads |
| CWP Team |
| Comms |
| Dev Teams |
| EMEA IT Team |
| ERP Architects |
| ERP Team |
| Executive Leadership |
| Facilities |
| Finance |
| Help Desk |
| IAM Team |
| IT |
| IT Ops |
| IT PM |
| Integration Team |
| KPMG |
| Legal |
| Migration Partner |
| NewCo |
| NewCo Architects |
| NewCo Executive |
| NewCo IT |
| NewCo Management |
| NewCo Senior Mgmt |
| OT Security Team |
| PMO |
| Partners |
| Production IT |
| Regional IT |
| Regional IT Leads |
| Regional WS Leads |
| Steering Committee |
| Test Manager |
| Test Team |
| WAN Provider |
| WAN Team |
| WS Leads |

## Schedule

| ID | WBS | Task | Type | Duration | Start | Finish | Predecessors | Resources |
| --- | --- | --- | --- | --- | --- | --- | --- | --- |
| 1 | 1 | **Phase 1 - Initialization** |  | 65d | 2026-06-01 | 2026-08-31 |  | Bosch IT; NewCo; KPMG |
| 2 | 1.1 | **1.1 Project Setup and Governance** |  | 20d | 2026-06-01 | 2026-06-26 |  | Bosch IT PM; KPMG |
| 3 | 1.1.1 | Appoint AlphaX Programme Leads (Bosch and NewCo) |  | 10d | 2026-06-01 | 2026-06-12 |  | Bosch CIO; NewCo Management |
| 4 | 1.1.2 | Establish AlphaX Steering Committee |  | 7d | 2026-06-08 | 2026-06-16 | 3 | Bosch; NewCo Senior Mgmt |
| 5 | 1.1.3 | Define RACI and Governance Model |  | 10d | 2026-06-08 | 2026-06-19 | 3 | KPMG; IT PM |
| 6 | 1.1.4 | Set Up PMO Tools and SharePoint Collaboration Site |  | 15d | 2026-06-15 | 2026-07-03 | 3 | PMO; KPMG |
| 7 | 1.1.5 | Onboard KPMG PMO Team |  | 10d | 2026-06-15 | 2026-06-26 | 3 | KPMG |
| 8 | 1.2 | Signing - Frozen Zone Activated | milestone | 0d | 2026-06-15 | 2026-06-15 | 3 | Bosch; NewCo Executive |
| 9 | 1.3 | **1.2 Battery IT Landscape Assessment - 35 Sites** |  | 35d | 2026-06-29 | 2026-08-14 | 3 | Bosch IT; KPMG |
| 10 | 1.3.1 | Battery IT Inventory Request (Apps / Infrastructure / Devices) |  | 10d | 2026-06-29 | 2026-07-10 | 5 | Bosch IT PM |
| 11 | 1.3.2 | Location List - 35 Battery Sites (EMEA / AP / AM) |  | 20d | 2026-07-01 | 2026-07-28 | 10 | Bosch IT; Facilities |
| 12 | 1.3.3 | Legal Entity Identification - NewCo Battery Registration |  | 20d | 2026-07-01 | 2026-07-28 | 10 | Legal; Finance |
| 13 | 1.3.4 | Identify Battery IT Dependencies on Bosch Shared Services |  | 25d | 2026-07-13 | 2026-08-14 | 11 | Bosch IT Architects |
| 14 | 1.4 | **1.3 Project Charter and Scope Definition** |  | 20d | 2026-08-03 | 2026-08-28 | 9 | Bosch IT PM; KPMG |
| 15 | 1.4.1 | Draft AlphaX Project Charter |  | 10d | 2026-08-03 | 2026-08-14 | 9 | KPMG; Bosch IT PM |
| 16 | 1.4.2 | Define Scope Boundaries - Battery IT Only (Stand Alone) |  | 10d | 2026-08-10 | 2026-08-21 | 11 | KPMG; Bosch IT |
| 17 | 1.4.3 | Guiding Principles Workshop - First Make It Work |  | 5d | 2026-08-17 | 2026-08-21 | 15 | All WS Leads |
| 18 | 1.4.4 | TSA Framework Preliminary Scope (Bosch-operated TSA) |  | 10d | 2026-08-17 | 2026-08-28 | 15 | Legal; IT PM |
| 19 | 1.4.5 | Project Charter Approval | milestone | 5d | 2026-08-25 | 2026-08-31 | 15, 16, 17, 18 | Steering Committee |
| 20 | 1.5 | QG1 - Initialization Quality Gate | milestone | 0d | 2026-08-31 | 2026-08-31 | 19 | Steering Committee |
| 21 | 2 | **Phase 2 - Concept** |  | 65d | 2026-09-01 | 2026-11-30 | 20 | All Workstreams; KPMG |
| 22 | 2.1 | **2.1 Detailed As-Is Analysis** |  | 50d | 2026-09-01 | 2026-11-10 | 20 | Bosch IT; KPMG |
| 23 | 2.1.1 | Application Landscape Inventory (LeanIX) ~200 Battery Apps |  | 35d | 2026-09-01 | 2026-10-19 | 20 | Bosch IT Architects; KPMG |
| 24 | 2.1.2 | IT Infrastructure As-Is Mapping - 35 Battery Sites |  | 35d | 2026-09-01 | 2026-10-19 | 20 | Bosch Infra Team |
| 25 | 2.1.3 | ERP Landscape Analysis - Battery SAP Scope |  | 35d | 2026-09-01 | 2026-10-19 | 20 | Bosch ERP Team; KPMG |
| 26 | 2.1.4 | Data Ownership and Separation Rules |  | 25d | 2026-10-20 | 2026-11-23 | 23, 25 | KPMG; Legal |
| 27 | 2.1.5 | Contract and Licence Inventory (~200 App Licences) |  | 35d | 2026-09-01 | 2026-10-19 | 20 | Bosch Procurement; IT |
| 28 | 2.1.6 | HR IT Systems Mapping - 3000 Battery Employees |  | 25d | 2026-09-01 | 2026-10-05 | 20 | Bosch HR IT |
| 29 | 2.1.7 | OT and Production IT Assessment - Battery Manufacturing |  | 25d | 2026-09-14 | 2026-10-16 | 20 | Bosch OT; Production IT |
| 30 | 2.1.8 | Country-Specific IT Requirements (Germany / China / India / Mexico) |  | 20d | 2026-09-21 | 2026-10-16 | 20 | Regional IT Leads |

Notes:
- 1: Resources: Bosch IT + NewCo + KPMG
- 2: Resources: Bosch IT PM + KPMG
- 3: Resources: Bosch CIO + NewCo Management
- 4: Resources: Bosch + NewCo Senior Mgmt
- 5: Resources: KPMG + IT PM
- 6: Resources: PMO + KPMG
- 7: Resources: KPMG
- 8: Resources: Bosch + NewCo Executive / No Battery IT production changes without SteerCo approval from this date
- 9: Resources: Bosch IT + KPMG / 35 Battery sites: EMEA ~15 / AP ~12 / AM ~8
- 10: Resources: Bosch IT PM
- 11: Resources: Bosch IT + Facilities / EMEA ~15 sites; AP ~12 sites; AM ~8 sites
- 12: Resources: Legal + Finance / NewCo legal entity registration critical; watch for Mexico and China delays
- 13: Resources: Bosch IT Architects / Identifies all Bosch shared services used by Battery; forms full TSA scope
- 14: Resources: Bosch IT PM + KPMG
- 15: Resources: KPMG + Bosch IT PM
- 16: Resources: KPMG + Bosch IT / 3000 employees; ~2500 client devices; ~200 apps; Full Stand Alone - no Merger Zone
- 17: Resources: All WS Leads
- 18: Resources: Legal + IT PM / Bosch operates all Battery IT during TSA until Dec 2027; define scope and exit dates
- 19: Resources: Steering Committee
- 20: Resources: Steering Committee / Charter approved; full inventory confirmed; governance accepted; proceed to Concept Phase
- 21: Resources: All Workstreams + KPMG
- 22: Resources: Bosch IT + KPMG
- 23: Resources: Bosch IT Architects + KPMG / Battery-specific apps only; flag Bosch shared platform dependencies
- 24: Resources: Bosch Infra Team / Site surveys for top 10 locations; EMEA and AP hubs prioritised
- 25: Resources: Bosch ERP Team + KPMG / Identify Battery-specific vs shared Bosch SAP systems; scope separation complexity
- 26: Resources: KPMG + Legal / Define data classification; confirm non-selective migration approach
- 27: Resources: Bosch Procurement + IT / Change of control clause review; FOSS compliance audit; ~2500 device licences
- 28: Resources: Bosch HR IT / Country-by-country HR rules; payroll separation per region
- 29: Resources: Bosch OT + Production IT / Battery OT systems; MES; safety certifications; ICS/SCADA
- 30: Resources: Regional IT Leads / Germany works council; China PIPL; India RBIN waiver needed; Mexico SAT delays

| ID | WBS | Task | Type | Duration | Start | Finish | Predecessors | Resources |
| --- | --- | --- | --- | --- | --- | --- | --- | --- |
| 31 | 2.2 | **2.2 NewCo Stand-Alone Architecture Design** |  | 55d | 2026-09-14 | 2026-11-27 | 23, 24 | Bosch IT Architects; KPMG |
| 32 | 2.2.1 | NewCo Architecture Concept Workshop (Stand Alone) |  | 10d | 2026-09-14 | 2026-09-25 | 23 | Bosch; NewCo Architects |
| 33 | 2.2.2 | WAN and LAN Architecture Design - 35 Battery Sites |  | 20d | 2026-09-28 | 2026-10-23 | 32 | Bosch Infra; KPMG |
| 34 | 2.2.3 | Active Directory Design - NewCo Battery Forest |  | 20d | 2026-09-28 | 2026-10-23 | 32 | Bosch AD Team |
| 35 | 2.2.4 | M365 and Azure Tenant Design - NewCo Battery |  | 20d | 2026-09-28 | 2026-10-23 | 32 | Bosch Azure Team |
| 36 | 2.2.5 | Co-Location and Data Centre Selection (1 Regional Hub) |  | 20d | 2026-09-14 | 2026-10-09 | 23 | Bosch Procurement; IT |
| 37 | 2.2.6 | Security Architecture Design - NewCo Battery |  | 20d | 2026-10-26 | 2026-11-20 | 33, 34 | Bosch CISO |
| 38 | 2.2.7 | IAM and IdM Architecture Design - NewCo Battery |  | 15d | 2026-10-26 | 2026-11-13 | 34 | Bosch IAM Team |
| 39 | 2.3 | **2.3 Battery IT Migration Strategy** |  | 45d | 2026-10-20 | 2026-12-21 | 23, 25 | KPMG; All WS Leads |
| 40 | 2.3.1 | ERP Migration Strategy Decision - Shell Copy vs Greenfield |  | 20d | 2026-10-20 | 2026-11-16 | 25 | ERP Architects; KPMG |
| 41 | 2.3.2 | Application Categorisation and Wave Planning (~200 Apps) |  | 20d | 2026-11-17 | 2026-12-14 | 40 | KPMG; WS Leads |
| 42 | 2.3.3 | Data Separation Rules Finalised |  | 15d | 2026-11-24 | 2026-12-12 | 26 | KPMG; Legal |
| 43 | 2.3.4 | TSA Service Catalogue Definition (Bosch-provided Services) |  | 25d | 2026-10-20 | 2026-11-23 | 32 | Bosch IT; NewCo IT |
| 44 | 2.3.5 | NewCo Stand-Alone Operating Model (post-TSA) |  | 20d | 2026-11-17 | 2026-12-14 | 40, 41 | Bosch IT Architects |
| 45 | 2.4 | **2.4 Client Device and Workplace Strategy** |  | 20d | 2026-10-20 | 2026-11-16 | 23 | Bosch CWP Team |
| 46 | 2.4.1 | Client Device Inventory (~2500 Battery Devices) |  | 10d | 2026-10-20 | 2026-10-30 | 23 | Bosch IT; Asset Mgmt |
| 47 | 2.4.2 | Client Migration Approach - Wave-Based Reimaging |  | 10d | 2026-10-31 | 2026-11-13 | 46 | Bosch CWP Team |
| 48 | 2.5 | **2.5 Planning and Baseline** |  | 20d | 2026-11-10 | 2026-12-03 | 31, 39 | KPMG; IT PM |
| 49 | 2.5.1 | Detailed Project Plan Development |  | 15d | 2026-11-10 | 2026-11-28 | 31, 39 | KPMG; IT PM |
| 50 | 2.5.2 | Risk Register Baseline |  | 12d | 2026-11-10 | 2026-11-25 | 39 | KPMG; All WS Leads |
| 51 | 2.5.3 | OPL Establishment and Tracking Setup |  | 10d | 2026-11-16 | 2026-11-27 | 49 | PMO |
| 52 | 2.5.4 | Resource Plan and Budget Baseline |  | 12d | 2026-11-16 | 2026-12-01 | 49 | Finance; IT PM |
| 53 | 2.6 | QG2 - Concept Quality Gate | milestone | 0d | 2026-11-30 | 2026-11-30 | 48, 44, 43 | Steering Committee |
| 54 | 3 | **Phase 3 - Development and Build** |  | 145d | 2026-12-01 | 2027-06-30 | 53 | All Workstreams |
| 55 | 3.1 | **3.1 NewCo IT Infrastructure Build** |  | 120d | 2026-12-01 | 2027-05-28 | 53 | Bosch Infra; Partners |
| 56 | 3.1.1 | WAN Provider Selection and Ordering - 35 Battery Sites |  | 20d | 2026-12-01 | 2026-12-28 | 53 | Bosch Procurement |
| 57 | 3.1.2 | Co-Location Data Centre Procurement - 1 Regional Hub |  | 30d | 2026-12-01 | 2027-01-12 | 53 | Bosch Infra |
| 58 | 3.1.3 | Active Directory Build - NewCo Battery Forest |  | 30d | 2027-01-13 | 2027-02-24 | 56 | Bosch AD Team |
| 59 | 3.1.4 | WAN Delivery and Testing - EMEA Battery Sites (~15 sites) |  | 40d | 2027-04-20 | 2027-06-16 | 56 | WAN Provider; Bosch Infra |
| 60 | 3.1.5 | WAN Delivery and Testing - AP Battery Sites (~12 sites) |  | 50d | 2027-04-20 | 2027-06-30 | 56 | WAN Provider; Bosch Infra |
| 61 | 3.1.6 | WAN Delivery and Testing - AM Battery Sites (~8 sites) |  | 40d | 2027-04-20 | 2027-06-16 | 56 | WAN Provider; Bosch Infra |
| 62 | 3.1.7 | LAN and WiFi Setup - Top 15 Priority Battery Sites |  | 30d | 2027-02-25 | 2027-04-07 | 58 | Bosch Infra |
| 63 | 3.1.8 | Server Infrastructure Build - NewCo Co-Lo DC |  | 30d | 2027-01-13 | 2027-02-24 | 57 | Bosch Infra |
| 64 | 3.1.9 | M365 Tenant Provisioning - NewCo Battery (3000 Mailboxes) |  | 25d | 2027-01-13 | 2027-02-17 | 53 | Bosch Azure Team |
| 65 | 3.1.10 | Azure and Cloud Environment Setup - NewCo Battery |  | 25d | 2027-02-18 | 2027-03-24 | 64 | Bosch Cloud Team |
| 66 | 3.1.11 | Telephony Design and Platform Setup - NewCo Battery 35 Sites |  | 20d | 2027-03-25 | 2027-04-21 | 63 | Bosch Telecom |
| 67 | 3.1.12 | File Share Infrastructure - NewCo (NAS / Cloud) |  | 15d | 2027-02-25 | 2027-03-17 | 63 | Bosch Infra |
| 68 | 3.1.13 | Backup and Archiving Setup - NewCo Battery |  | 12d | 2027-03-18 | 2027-04-02 | 63 | Bosch Infra |

Notes:
- 31: Resources: Bosch IT Architects + KPMG / Stand Alone model - no Merger Zone; direct to NewCo environment
- 32: Resources: Bosch + NewCo Architects / Confirm Stand Alone approach; no Merger Zone; define NewCo IT target state
- 33: Resources: Bosch Infra + KPMG / Hub-and-spoke model; 1 regional co-lo; 4-6 month WAN lead time; order at QG2
- 34: Resources: Bosch AD Team / New AD forest for NewCo Battery; fully separate from Bosch corporate AD
- 35: Resources: Bosch Azure Team / New M365 tenant for NewCo; 3000 mailboxes; OneDrive and Teams in scope
- 36: Resources: Bosch Procurement + IT / Single regional co-locator; decision required by QG2; EMEA primary recommended
- 37: Resources: Bosch CISO / NewCo security architecture; independent from Bosch SOC post-Day 1
- 38: Resources: Bosch IAM Team / New IAM platform for NewCo; decouple from Bosch IAM / Saviynt
- 39: Resources: KPMG + All WS Leads
- 40: Resources: ERP Architects + KPMG / Decision must be made at QG2; shell copy benchmarked at 9-12 month SIT cycle
- 41: Resources: KPMG + WS Leads / Wave 1 ~60 critical; Wave 2 ~80 standard; Wave 3 ~60 local and OT apps
- 42: Resources: KPMG + Legal
- 43: Resources: Bosch IT + NewCo IT / Catalogue all Bosch services Battery NewCo requires; define exit criteria per service line
- 44: Resources: Bosch IT Architects / Stand Alone: all services exit directly to NewCo; define NewCo IT operating model
- 45: Resources: Bosch CWP Team
- 46: Resources: Bosch IT + Asset Mgmt / Identify device age and type; replacement hardware plan for out-of-support devices
- 47: Resources: Bosch CWP Team / ~2500 devices across 35 sites; EMEA first then AP then AM
- 48: Resources: KPMG + IT PM
- 49: Resources: KPMG + IT PM
- 50: Resources: KPMG + All WS Leads
- 51: Resources: PMO
- 52: Resources: Finance + IT PM
- 53: Resources: Steering Committee / Architecture approved; ERP strategy decided; WAN vendor contracted; TSA catalogue signed off; proceed to Development
- 54: Resources: All Workstreams
- 55: Resources: Bosch Infra + Partners
- 56: Resources: Bosch Procurement / Order immediately after QG2; 4-6 month lead time; covers all 35 Battery sites
- 57: Resources: Bosch Infra / Primary EMEA co-locator for NewCo DC; connectivity to AP and AM
- 58: Resources: Bosch AD Team / Foundation: all 3000 users and ~200 applications migrate to this new AD forest
- 59: Resources: WAN Provider + Bosch Infra / 4-6 month lead time from Dec 2026 order; EMEA circuit activation April 2027 onwards
- 60: Resources: WAN Provider + Bosch Infra / China requires local provider; stagger by country
- 61: Resources: WAN Provider + Bosch Infra / Mexico legal entity confirmed before ordering; CSD leads required
- 62: Resources: Bosch Infra / Remaining 20 sites use existing Bosch LAN under TSA until cutover
- 63: Resources: Bosch Infra
- 64: Resources: Bosch Azure Team
- 65: Resources: Bosch Cloud Team
- 66: Resources: Bosch Telecom / Phone number porting plan; 4-8 weeks per operator per site; state-owned operators longer
- 67: Resources: Bosch Infra / User documents and shared drives for ~3000 Battery employees
- 68: Resources: Bosch Infra

| ID | WBS | Task | Duration | Start | Finish | Predecessors | Resources |
| --- | --- | --- | --- | --- | --- | --- | --- |
| 69 | 3.2 | **3.2 ERP and SAP Development - NewCo Battery** | 100d | 2026-12-01 | 2027-05-14 | 53 | Bosch ERP Team; Migration Partner |
| 70 | 3.2.1 | SAP System Landscape Analysis - Battery Scope | 20d | 2026-12-01 | 2026-12-28 | 53 | ERP Architects |
| 71 | 3.2.2 | SAP Shell Copy Preparation - Battery Systems (NewCo) | 40d | 2027-01-13 | 2027-03-10 | 70 | Migration Partner; Bosch SAP |
| 72 | 3.2.3 | SAP Interface Identification and Adaptation Plan | 30d | 2027-01-13 | 2027-02-24 | 70 | Bosch ERP Team |
| 73 | 3.2.4 | SAP Authorisation Concept - Disconnect from Bosch IdM | 25d | 2027-03-11 | 2027-04-14 | 71 | Bosch SAP Security |
| 74 | 3.2.5 | BW and Reporting Setup - NewCo Battery | 25d | 2027-03-11 | 2027-04-14 | 71 | Bosch BW Team |
| 75 | 3.2.6 | EDI and Integration Setup - NewCo Battery | 25d | 2027-02-25 | 2027-03-31 | 72 | Integration Team |
| 76 | 3.2.7 | ERP Test Environment Setup (SIT and UAT) - NewCo | 20d | 2027-04-15 | 2027-05-12 | 71 | Migration Partner; Bosch SAP |
| 77 | 3.3 | **3.3 Application Migration Preparation (~200 Battery Apps)** | 80d | 2026-12-01 | 2027-04-08 | 53 | Bosch IT; KPMG |
| 78 | 3.3.1 | Application Inventory Finalisation (~200 Battery Apps) | 20d | 2026-12-01 | 2026-12-28 | 53 | KPMG; Bosch IT |
| 79 | 3.3.2 | Application Grouping into Migration Waves | 15d | 2027-01-13 | 2027-02-03 | 78 | KPMG; WS Leads |
| 80 | 3.3.3 | Migration Package Development per Wave | 35d | 2027-02-04 | 2027-03-24 | 79 | Bosch IT; App Owners |
| 81 | 3.3.4 | Custom Application Adaptation for NewCo Environment | 25d | 2027-03-10 | 2027-04-11 | 79 | Dev Teams |
| 82 | 3.3.5 | Integration Development (APIs and Interfaces) - NewCo | 25d | 2027-03-10 | 2027-04-11 | 79 | Integration Team |
| 83 | 3.4 | **3.4 Client Workplace - 2500 Device Migration Preparation** | 50d | 2026-12-01 | 2027-02-08 | 53 | Bosch CWP Team |
| 84 | 3.4.1 | Client Software Management Setup (SCCM / Intune) - NewCo | 20d | 2026-12-01 | 2026-12-28 | 53 | Bosch CWP |
| 85 | 3.4.2 | Device Reimaging Standard and Packaging (~2500 Devices) | 25d | 2027-01-13 | 2027-02-17 | 84 | Bosch CWP |
| 86 | 3.4.3 | Regional Wave Plan - Client Migration (EMEA / AP / AM) | 12d | 2026-12-15 | 2027-01-02 | 84 | Bosch CWP; IT PM |
| 87 | 3.4.4 | User Profile and OneDrive Migration Tooling Setup | 20d | 2027-01-18 | 2027-02-08 | 85 | Bosch Azure Team |
| 88 | 3.5 | **3.5 Security and IAM - NewCo Battery** | 60d | 2026-12-01 | 2027-02-24 | 53 | Bosch CISO; IAM Team |
| 89 | 3.5.1 | IAM Platform Deployment - NewCo Battery | 35d | 2026-12-01 | 2027-01-19 | 53 | Bosch IAM |
| 90 | 3.5.2 | IT Security Concept Finalisation (incl. ISO 27001 Baseline) | 20d | 2027-01-20 | 2027-02-16 | 89 | Bosch CISO |
| 91 | 3.5.3 | OT Security Assessment and Remediation - Battery Manufacturing | 25d | 2026-12-15 | 2027-01-19 | 53 | OT Security Team |
| 92 | 3.5.4 | CMDB Setup (ServiceNow or ITSM Platform) - 2500 NewCo Assets | 25d | 2027-01-20 | 2027-02-23 | 89 | Bosch ITSM Team |

Notes:
- 69: Resources: Bosch ERP Team + Migration Partner
- 70: Resources: ERP Architects
- 71: Resources: Migration Partner + Bosch SAP / Shell copy approach confirmed; Battery-specific systems only; disconnect from Bosch SAP
- 72: Resources: Bosch ERP Team
- 73: Resources: Bosch SAP Security / Battery user authorisations must be fully decoupled from Bosch IAM and Saviynt
- 74: Resources: Bosch BW Team
- 75: Resources: Integration Team
- 76: Resources: Migration Partner + Bosch SAP
- 77: Resources: Bosch IT + KPMG
- 78: Resources: KPMG + Bosch IT / Validate LeanIX entries; add local and regional apps discovered post-QG2
- 79: Resources: KPMG + WS Leads / Wave 1 ~60 critical; Wave 2 ~80 standard; Wave 3 ~60 local and OT
- 80: Resources: Bosch IT + App Owners
- 81: Resources: Dev Teams / Re-point app configs from Bosch to NewCo domain / AD / M365 / ITSM
- 82: Resources: Integration Team
- 83: Resources: Bosch CWP Team
- 84: Resources: Bosch CWP
- 85: Resources: Bosch CWP / Standard image for NewCo domain; hardware refresh for out-of-support devices
- 86: Resources: Bosch CWP + IT PM / EMEA Wave 1; AP Wave 2; AM Wave 3; stagger by site count and regional complexity
- 87: Resources: Bosch Azure Team
- 88: Resources: Bosch CISO + IAM Team
- 89: Resources: Bosch IAM / New IAM platform independent of Bosch Saviynt; provisioning for 3000 Battery users
- 90: Resources: Bosch CISO / NewCo CISO appointed; ISO 27001 pre-assessment; BCM and GDPR compliance
- 91: Resources: OT Security Team / Battery plant OT systems; ICS/SCADA assessment; safety certification review
- 92: Resources: Bosch ITSM Team

| ID | WBS | Task | Type | Duration | Start | Finish | Predecessors | Resources |
| --- | --- | --- | --- | --- | --- | --- | --- | --- |
| 93 | 3.6 | **3.6 NewCo IT Organisation and Operations Setup** |  | 70d | 2026-12-01 | 2027-03-10 | 53 | Bosch IT Org Team |
| 94 | 3.6.1 | NewCo IT Target Operating Model (TOM) |  | 20d | 2026-12-01 | 2026-12-28 | 53 | Bosch HR; IT |
| 95 | 3.6.2 | MSP and ITO Contracting - Field Support 35 Battery Sites |  | 35d | 2027-01-13 | 2027-02-28 | 94 | Bosch Procurement |
| 96 | 3.6.3 | ITSM and ServiceNow Configuration - NewCo Battery |  | 25d | 2027-01-20 | 2027-02-23 | 92 | Bosch ITSM |
| 97 | 3.6.4 | Help Desk Setup and Staffing - Multi-Region NewCo |  | 20d | 2027-02-24 | 2027-03-23 | 95 | Bosch IT Ops |
| 98 | 3.7 | **3.7 TSA Framework Finalisation (Bosch-provided Services)** |  | 55d | 2026-12-01 | 2027-02-14 | 53 | Bosch IT; Legal |
| 99 | 3.7.1 | TSA Service Descriptions Finalised - All 35 Battery Sites |  | 25d | 2026-12-01 | 2027-01-05 | 53 | Bosch IT; NewCo IT |
| 100 | 3.7.2 | TSA SLA and KPI Framework |  | 20d | 2027-01-06 | 2027-02-02 | 99 | IT PM; Legal |
| 101 | 3.7.3 | TSA Governance Model (Monthly SteerCo Reviews) |  | 12d | 2027-02-03 | 2027-02-18 | 100 | IT PM |
| 102 | 3.7.4 | TSA Contracts Legal Review and Finalisation |  | 20d | 2027-02-03 | 2027-03-02 | 100 | Legal |
| 103 | 3.8 | QG3 - Development Quality Gate | milestone | 0d | 2027-06-30 | 2027-06-30 | 55, 69, 77, 83, 88, 93, 98 | Steering Committee |
| 104 | 4 | **Phase 4 - Implementation** |  | 65d | 2027-07-01 | 2027-09-30 | 103 | All Workstreams |
| 105 | 4.1 | **4.1 Infrastructure Cutover - 35 Battery Sites to NewCo** |  | 55d | 2027-07-01 | 2027-09-12 | 103 | Bosch Infra; Partners |
| 106 | 4.1.1 | WAN Cutover - EMEA Battery Sites Batch 1 (~8 sites) |  | 15d | 2027-07-01 | 2027-07-21 | 103 | WAN Team; Bosch Infra |
| 107 | 4.1.2 | WAN Cutover - AP Battery Sites Batch 1 (Major Hubs ~6 sites) |  | 15d | 2027-07-01 | 2027-07-21 | 103 | WAN Team; Bosch Infra |
| 108 | 4.1.3 | WAN Cutover - AM Battery Sites Batch 1 (Major Hubs ~4 sites) |  | 15d | 2027-07-01 | 2027-07-21 | 103 | WAN Team; Bosch Infra |
| 109 | 4.1.4 | WAN Cutover - EMEA Battery Sites Batch 2 (Remaining ~7) |  | 15d | 2027-07-22 | 2027-08-11 | 106 | WAN Team; Bosch Infra |
| 110 | 4.1.5 | WAN Cutover - AP Battery Sites Batch 2 (Remaining ~6) |  | 15d | 2027-07-22 | 2027-08-11 | 107 | WAN Team; Bosch Infra |
| 111 | 4.1.6 | WAN Cutover - AM Battery Sites Batch 2 (Remaining ~4) |  | 15d | 2027-07-22 | 2027-08-11 | 108 | WAN Team; Bosch Infra |
| 112 | 4.1.7 | File Share Migration to NewCo (~3000 Battery Users) |  | 25d | 2027-07-22 | 2027-08-25 | 106 | Bosch Infra |
| 113 | 4.1.8 | Telephony Cutover to NewCo - 35 Battery Sites |  | 35d | 2027-08-11 | 2027-09-26 | 109, 110, 111 | Bosch Telecom |
| 114 | 4.2 | **4.2 Client Device Migration - 2500 Battery Devices** |  | 65d | 2027-07-01 | 2027-09-30 | 103 | Bosch CWP; Regional IT |
| 115 | 4.2.1 | Client Migration Wave 1 - EMEA Battery Hub Sites (~500 devices) |  | 20d | 2027-07-01 | 2027-07-28 | 103 | EMEA IT Team |
| 116 | 4.2.2 | Client Migration Wave 2 - AP Battery Sites (~700 devices) |  | 20d | 2027-07-01 | 2027-07-28 | 103 | AP IT Team |
| 117 | 4.2.3 | Client Migration Wave 3 - EMEA Remaining Sites (~300 devices) |  | 15d | 2027-07-29 | 2027-08-18 | 115 | EMEA IT Team |
| 118 | 4.2.4 | Client Migration Wave 4 - AM Battery Sites (~500 devices) |  | 20d | 2027-07-29 | 2027-08-25 | 116 | AM IT Team |
| 119 | 4.2.5 | Client Migration Wave 5 - AP Remaining + AM Remaining (~400) |  | 20d | 2027-08-19 | 2027-09-15 | 117, 118 | CWP Team |
| 120 | 4.2.6 | Client Migration Wave 6 - Stragglers and Exceptions (~100) |  | 10d | 2027-09-16 | 2027-09-29 | 119 | CWP Team |
| 121 | 4.2.7 | Email and M365 Mailbox Migration (3000 Battery Mailboxes) |  | 40d | 2027-07-22 | 2027-09-15 | 106 | Bosch Azure Team |
| 122 | 4.2.8 | OneDrive and User Document Migration |  | 25d | 2027-08-12 | 2027-09-15 | 121 | Bosch Azure Team |

Notes:
- 93: Resources: Bosch IT Org Team
- 94: Resources: Bosch HR + IT / NewCo IT org structure; Regional IT leads for EMEA / AP / AM
- 95: Resources: Bosch Procurement / On-site support for AP and AM Battery sites; multi-language support required
- 96: Resources: Bosch ITSM
- 97: Resources: Bosch IT Ops / Multilingual support for EMEA / AP / AM Battery users; 24x5 coverage
- 98: Resources: Bosch IT + Legal
- 99: Resources: Bosch IT + NewCo IT / Each TSA service line must have an exit date and acceptance criteria
- 100: Resources: IT PM + Legal
- 101: Resources: IT PM
- 102: Resources: Legal
- 103: Resources: Steering Committee / NewCo infra ready; ERP built; app packages ready; 2500 devices packaged; TSA contracts signed; proceed to Implementation
- 104: Resources: All Workstreams
- 105: Resources: Bosch Infra + Partners
- 106: Resources: WAN Team + Bosch Infra
- 107: Resources: WAN Team + Bosch Infra / AP hub sites first
- 108: Resources: WAN Team + Bosch Infra
- 109: Resources: WAN Team + Bosch Infra
- 110: Resources: WAN Team + Bosch Infra
- 111: Resources: WAN Team + Bosch Infra
- 112: Resources: Bosch Infra / User documents and shared drives migration to NewCo environment
- 113: Resources: Bosch Telecom / Staggered by operator; parallel execution across sites; 4-8 weeks per operator
- 114: Resources: Bosch CWP + Regional IT
- 115: Resources: EMEA IT Team / EMEA hub sites first; ~500 devices
- 116: Resources: AP IT Team / ~700 AP devices; run parallel with EMEA Wave 1
- 117: Resources: EMEA IT Team / ~300 remaining EMEA devices
- 118: Resources: AM IT Team / ~500 AM devices
- 119: Resources: CWP Team / ~400 devices to complete all regions
- 120: Resources: CWP Team / ~100 devices; special handling; exceptions and replacements
- 121: Resources: Bosch Azure Team / Migrate in batches aligned with client device waves
- 122: Resources: Bosch Azure Team

| ID | WBS | Task | Type | Duration | Start | Finish | Predecessors | Resources |
| --- | --- | --- | --- | --- | --- | --- | --- | --- |
| 123 | 4.3 | **4.3 ERP Migration to NewCo Battery** |  | 65d | 2027-07-01 | 2027-09-30 | 103 | ERP Team; Migration Partner |
| 124 | 4.3.1 | SAP Shell Copy Execution - Test Run (NewCo Battery) |  | 20d | 2027-07-01 | 2027-07-28 | 103 | Migration Partner; Bosch SAP |
| 125 | 4.3.2 | SAP System Integration Test 1 (SIT1) - Battery |  | 25d | 2027-07-29 | 2027-09-02 | 124 | ERP Team; Business |
| 126 | 4.3.3 | SAP Shell Copy Execution - Production Preparation |  | 10d | 2027-09-03 | 2027-09-16 | 125 | Migration Partner; Bosch SAP |
| 127 | 4.3.4 | SAP System Integration Test 2 (SIT2) - Battery |  | 10d | 2027-09-17 | 2027-09-30 | 126 | ERP Team; Business |
| 128 | 4.3.5 | Business User Acceptance Testing (UAT) - Battery ERP |  | 15d | 2027-09-03 | 2027-09-23 | 125 | Business Key Users |
| 129 | 4.3.6 | UAT Sign-Off | milestone | 0d | 2027-09-23 | 2027-09-23 | 128 | Business Leads; IT PM |
| 130 | 4.4 | **4.4 Application Migration to NewCo Battery** |  | 65d | 2027-07-01 | 2027-09-30 | 103 | Bosch IT; App Teams |
| 131 | 4.4.1 | Wave 1 Application Migration - Critical Battery Apps (~60) |  | 20d | 2027-07-01 | 2027-07-28 | 103 | App Teams; KPMG |
| 132 | 4.4.2 | Wave 2 Application Migration - Standard Apps (~80) |  | 25d | 2027-07-29 | 2027-09-02 | 131 | App Teams |
| 133 | 4.4.3 | Wave 3 Application Migration - Local and OT Apps (~60) |  | 25d | 2027-09-03 | 2027-10-07 | 132 | App Teams |
| 134 | 4.4.4 | End-to-End Integration Testing - NewCo Battery |  | 15d | 2027-08-19 | 2027-09-08 | 132 | Test Team; Business |
| 135 | 4.4.5 | Regression Testing Sign-Off | milestone | 0d | 2027-09-08 | 2027-09-08 | 134 | Test Manager |
| 136 | 4.5 | **4.5 Day 1 Cutover Preparation** |  | 25d | 2027-09-01 | 2027-09-30 | 129, 135, 103 | IT PM; All WS |
| 137 | 4.5.1 | Cutover Plan Finalisation |  | 10d | 2027-09-01 | 2027-09-12 | 103 | IT PM; WS Leads |
| 138 | 4.5.2 | End-User Communication Plan (3000 Battery Users / 35 Sites) |  | 15d | 2027-09-01 | 2027-09-19 | 137 | Comms; Regional IT |
| 139 | 4.5.3 | Dress Rehearsal and Cutover Simulation |  | 5d | 2027-09-15 | 2027-09-19 | 137 | All WS Leads |
| 140 | 4.5.4 | Help Desk 24x7 Activation and Training - NewCo Battery |  | 10d | 2027-09-15 | 2027-09-26 | 137 | IT Ops |
| 141 | 4.5.5 | Go No-Go Readiness Assessment | milestone | 0d | 2027-09-15 | 2027-09-15 | 138, 139, 140 | Steering Committee |
| 142 | 4.6 | QG4 - Implementation Quality Gate - Go / No-Go | milestone | 0d | 2027-09-15 | 2027-09-15 | 141 | Steering Committee |
| 143 | 5 | **Phase 5 - GoLive and Programme Closure** |  | 65d | 2027-10-01 | 2027-12-31 | 142 | All Workstreams |
| 144 | 5.1 | **5.1 Day 1 GoLive Activities** |  | 5d | 2027-10-01 | 2027-10-07 | 142 | IT PM; Business |
| 145 | 5.1.1 | Day 1 - NewCo Battery IT GoLive (Legal Separation Effective) | milestone | 0d | 2027-10-01 | 2027-10-01 | 142 | Executive Leadership |
| 146 | 5.1.2 | Network Domain Cutover to NewCo Active Directory |  | 2d | 2027-10-01 | 2027-10-02 | 145 | Bosch Infra |
| 147 | 5.1.3 | ERP Day 1 Go-Live Activation - Battery SAP NewCo |  | 2d | 2027-10-01 | 2027-10-02 | 145 | ERP Team |
| 148 | 5.1.4 | Application Day 1 Activation - All Battery Regions |  | 2d | 2027-10-01 | 2027-10-02 | 145 | App Teams |
| 149 | 5.1.5 | Bosch TSA Residual Services Activated (Minimal Scope) |  | 1d | 2027-10-01 | 2027-10-01 | 145 | Bosch IT; NewCo IT |
| 150 | 5.1.6 | User Go-Live Communication (3000 Battery Users) |  | 1d | 2027-10-01 | 2027-10-01 | 145 | Comms; Regional IT |
| 151 | 5.1.7 | Help Desk 24x7 Live - NewCo Battery |  | 1d | 2027-10-01 | 2027-10-01 | 145 | IT Ops |

Notes:
- 123: Resources: ERP Team + Migration Partner
- 124: Resources: Migration Partner + Bosch SAP
- 125: Resources: ERP Team + Business
- 126: Resources: Migration Partner + Bosch SAP
- 127: Resources: ERP Team + Business
- 128: Resources: Business Key Users
- 129: Resources: Business Leads + IT PM
- 130: Resources: Bosch IT + App Teams
- 131: Resources: App Teams + KPMG
- 132: Resources: App Teams
- 133: Resources: App Teams / Regional and OT-linked apps; some may require TSA extension if not Day 1 ready
- 134: Resources: Test Team + Business
- 135: Resources: Test Manager
- 136: Resources: IT PM + All WS
- 137: Resources: IT PM + WS Leads
- 138: Resources: Comms + Regional IT / Multi-language; EMEA + AP + AM; Battery users only
- 139: Resources: All WS Leads
- 140: Resources: IT Ops / Multi-region time zone coverage for Battery users
- 141: Resources: Steering Committee
- 142: Resources: Steering Committee / 2500 clients migrated; ERP live in NewCo; apps live in NewCo; UAT passed; cutover plan approved; Day 1 confirmed
- 143: Resources: All Workstreams
- 144: Resources: IT PM + Business
- 145: Resources: Executive Leadership / Battery IT fully separated from Bosch; NewCo IT independent from this date
- 146: Resources: Bosch Infra
- 147: Resources: ERP Team
- 148: Resources: App Teams
- 149: Resources: Bosch IT + NewCo IT / TSA clock starts 01 Oct 2027; expires 31 Dec 2027; only residual services below full separation threshold
- 150: Resources: Comms + Regional IT
- 151: Resources: IT Ops

| ID | WBS | Task | Type | Duration | Start | Finish | Predecessors | Resources |
| --- | --- | --- | --- | --- | --- | --- | --- | --- |
| 152 | 5.2 | **5.2 Hypercare - 65 Working Days** |  | 65d | 2027-10-01 | 2027-12-31 | 144 | All WS Leads; IT Ops |
| 153 | 5.2.1 | Daily Operations Review Meetings (Regional Standups) |  | 65d | 2027-10-01 | 2027-12-31 | 144 | IT PM; Regional WS Leads |
| 154 | 5.2.2 | Incident Management and P1/P2 Issue Resolution |  | 65d | 2027-10-01 | 2027-12-31 | 144 | IT Ops; Help Desk |
| 155 | 5.2.3 | Performance Monitoring and TSA SLA Tracking |  | 65d | 2027-10-01 | 2027-12-31 | 144 | IT Ops |
| 156 | 5.2.4 | Issue Backlog Management and Prioritisation |  | 65d | 2027-10-01 | 2027-12-31 | 144 | IT PM |
| 157 | 5.2.5 | Hypercare Close - Formal Sign-Off | milestone | 0d | 2027-12-31 | 2027-12-31 | 153, 154, 155, 156 | Steering Committee |
| 158 | 5.3 | **5.3 TSA Exit and Bosch Service Termination** |  | 60d | 2027-10-01 | 2027-12-24 | 144 | Bosch IT; NewCo IT |
| 159 | 5.3.1 | TSA Exit Planning per Service |  | 15d | 2027-10-01 | 2027-10-21 | 144 | IT PM; Bosch IT |
| 160 | 5.3.2 | TSA Service Exit Wave 1 - Infrastructure Services |  | 20d | 2027-10-22 | 2027-11-18 | 159 | Bosch IT; NewCo IT |
| 161 | 5.3.3 | TSA Service Exit Wave 2 - Application and ERP Services |  | 20d | 2027-11-19 | 2027-12-16 | 160 | Bosch IT; NewCo IT |
| 162 | 5.3.4 | TSA Exit Confirmation (All Bosch Services Terminated) | milestone | 0d | 2027-12-31 | 2027-12-31 | 161 | Bosch; NewCo Executive |
| 163 | 5.4 | **5.4 Programme Closure** |  | 20d | 2027-12-08 | 2027-12-31 | 157 | IT PM; KPMG |
| 164 | 5.4.1 | Lessons Learned Workshop (All Regions) |  | 5d | 2027-12-08 | 2027-12-12 | 157 | All WS Leads |
| 165 | 5.4.2 | Programme Closure Report |  | 10d | 2027-12-13 | 2027-12-26 | 164 | IT PM; KPMG |
| 166 | 5.4.3 | Final Programme Sign-Off | milestone | 0d | 2027-12-31 | 2027-12-31 | 165 | Executive Leadership |
| 167 | 5.5 | QG5 - Programme Closure Quality Gate | milestone | 0d | 2027-12-31 | 2027-12-31 | 157, 162, 166 | Steering Committee |

Notes:
- 152: Resources: All WS Leads + IT Ops
- 153: Resources: IT PM + Regional WS Leads / EMEA + AP + AM standup cadence; Battery NewCo focus
- 154: Resources: IT Ops + Help Desk
- 155: Resources: IT Ops / Bosch residual TSA SLA compliance tracked from Day 1; exit by Dec 2027
- 156: Resources: IT PM
- 157: Resources: Steering Committee
- 158: Resources: Bosch IT + NewCo IT
- 159: Resources: IT PM + Bosch IT / Define exit criteria per remaining TSA service; agree acceptance tests
- 160: Resources: Bosch IT + NewCo IT
- 161: Resources: Bosch IT + NewCo IT
- 162: Resources: Bosch + NewCo Executive
- 163: Resources: IT PM + KPMG
- 164: Resources: All WS Leads
- 165: Resources: IT PM + KPMG
- 166: Resources: Executive Leadership
- 167: Resources: Steering Committee / Hypercare stable; TSA fully exited; NewCo IT fully independent; AlphaX programme formally closed
