# Project Falcon

Schedule from MS Project XML, 2026-05-01 to 2027-01-29.

## Calendars

- Standard: Mon-Fri as the base calendar; Sat-Sun off.

## Resources

| Resource |
| --- |
| All WS |
| All WS Leads |
| All Workstreams |
| App Teams |
| Asset Mgmt |
| BGSW |
| BGSW AD Team |
| BGSW Azure Team |
| BGSW CIO |
| BGSW CISO |
| BGSW CWP |
| BGSW CWP Team |
| BGSW Cloud Team |
| BGSW HR IT |
| BGSW IT |
| BGSW IT Architects |
| BGSW IT PM |
| BGSW Infra |
| BGSW Infra Team |
| BGSW Procurement |
| Bosch BD/MIL |
| Business |
| Business Key Users |
| Business Leads |
| Comms |
| Dev Teams |
| Executive Leadership |
| Facilities |
| Finance |
| Help Desk |
| IT |
| IT Ops |
| IT PM |
| JV Architects |
| JV Executive |
| JV IT |
| JV Senior Mgmt |
| Legal |
| PMO |
| Partners |
| Steering Committee |
| Test Team |
| WS Leads |

## Schedule

| ID | WBS | Task | Type | Duration | Start | Finish | Predecessors | Resources |
| --- | --- | --- | --- | --- | --- | --- | --- | --- |
| 1 | 1 | **Phase 1 - Initialization** |  | 45d | 2026-05-01 | 2026-06-30 |  | Bosch BD/MIL; BGSW IT |
| 2 | 1.1 | **1.1 Project Setup and Governance** |  | 15d | 2026-05-01 | 2026-05-21 |  | Bosch BD/MIL |
| 3 | 1.1.1 | Appoint Falcon Programme Leads (BGSW and JV) |  | 5d | 2026-05-01 | 2026-05-07 |  | BGSW CIO; Bosch BD/MIL |
| 4 | 1.1.2 | Establish Falcon Steering Committee |  | 5d | 2026-05-05 | 2026-05-11 | 3 | BGSW; JV Senior Mgmt |
| 5 | 1.1.3 | Define RACI and Governance Model |  | 7d | 2026-05-05 | 2026-05-13 | 3 | Bosch BD/MIL |
| 6 | 1.1.4 | Set Up PMO Tools and Collaboration Site |  | 7d | 2026-05-11 | 2026-05-19 | 3 | PMO; Bosch BD/MIL |
| 7 | 1.2 | Signing - Frozen Zone Activated | milestone | 0d | 2026-05-11 | 2026-05-11 | 3 | BGSW; JV Executive |
| 8 | 1.3 | **1.2 BGSW AI IT Landscape Assessment (3 India Sites)** |  | 25d | 2026-05-18 | 2026-06-19 | 3 | BGSW IT; Bosch BD/MIL |
| 9 | 1.3.1 | AI IT Inventory Request (Apps / Infra / Devices) |  | 7d | 2026-05-18 | 2026-05-26 | 5 | BGSW IT PM |
| 10 | 1.3.2 | Location List - 3 India Sites |  | 7d | 2026-05-25 | 2026-06-02 | 9 | BGSW IT; Facilities |
| 11 | 1.3.3 | Legal Entity Identification - JV Registration India |  | 15d | 2026-05-25 | 2026-06-12 | 9 | Legal; Finance |
| 12 | 1.3.4 | Identify AI IT Dependencies on BGSW Shared Services |  | 15d | 2026-06-01 | 2026-06-19 | 10 | BGSW IT Architects |
| 13 | 1.4 | **1.3 Project Charter and Scope Definition** |  | 15d | 2026-06-08 | 2026-06-26 | 8 | Bosch BD/MIL |
| 14 | 1.4.1 | Draft Falcon Project Charter |  | 7d | 2026-06-08 | 2026-06-16 | 8 | Bosch BD/MIL; BGSW IT PM |
| 15 | 1.4.2 | Define Scope Boundaries - AI Business IT Only |  | 7d | 2026-06-08 | 2026-06-16 | 10 | Bosch BD/MIL; BGSW IT |
| 16 | 1.4.3 | JV Operating Framework Workshop |  | 3d | 2026-06-15 | 2026-06-17 | 14 | All WS Leads |
| 17 | 1.4.4 | JV IT Structure and Sponsorship Agreement |  | 5d | 2026-06-15 | 2026-06-19 | 14 | Legal; Finance; BGSW |
| 18 | 1.4.5 | Project Charter Approval | milestone | 0d | 2026-06-26 | 2026-06-26 | 14, 15, 16, 17 | Steering Committee |
| 19 | 1.5 | QG1 - Initialization Quality Gate | milestone | 0d | 2026-06-30 | 2026-06-30 | 18 | Steering Committee |
| 20 | 2 | **Phase 2 - Concept** |  | 45d | 2026-07-01 | 2026-08-28 | 19 | All Workstreams; Bosch BD/MIL |
| 21 | 2.1 | **2.1 Detailed As-Is Analysis** |  | 35d | 2026-07-01 | 2026-08-14 | 19 | BGSW IT; Bosch BD/MIL |
| 22 | 2.1.1 | Application Landscape Inventory (~20 AI Apps) |  | 20d | 2026-07-01 | 2026-07-28 | 19 | BGSW IT Architects; Bosch BD/MIL |
| 23 | 2.1.2 | IT Infrastructure As-Is Mapping - 3 India Sites |  | 15d | 2026-07-01 | 2026-07-21 | 19 | BGSW Infra Team |
| 24 | 2.1.3 | Data Ownership and Separation Rules |  | 15d | 2026-07-21 | 2026-08-10 | 22 | Bosch BD/MIL; Legal |
| 25 | 2.1.4 | Contract and Licence Inventory (~20 AI Apps) |  | 15d | 2026-07-01 | 2026-07-21 | 19 | BGSW Procurement; IT |
| 26 | 2.1.5 | HR IT Systems Mapping - AI Business Users |  | 10d | 2026-07-01 | 2026-07-14 | 19 | BGSW HR IT |

Notes:
- 1: Resources: Bosch BD/MIL + BGSW IT
- 2: Resources: Bosch BD/MIL
- 3: Resources: BGSW CIO + Bosch BD/MIL
- 4: Resources: BGSW + JV Senior Mgmt
- 5: Resources: Bosch BD/MIL
- 6: Resources: PMO + Bosch BD/MIL
- 7: Resources: BGSW + JV Executive / No AI IT production changes without SteerCo approval from this date
- 8: Resources: BGSW IT + Bosch BD/MIL / 3 India sites: Bangalore, Hyderabad, Pune
- 9: Resources: BGSW IT PM
- 10: Resources: BGSW IT + Facilities / Bangalore, Hyderabad, Pune
- 11: Resources: Legal + Finance / JV entity registration in India; MCA filing; 50/50 shareholding structure
- 12: Resources: BGSW IT Architects / Forms full TSA scope from BGSW shared services used by AI business
- 13: Resources: Bosch BD/MIL
- 14: Resources: Bosch BD/MIL + BGSW IT PM
- 15: Resources: Bosch BD/MIL + BGSW IT / <100 users; ~20 apps; No ERP; Combination JV model; 3 India sites
- 16: Resources: All WS Leads
- 17: Resources: Legal + Finance + BGSW / Confirm 50/50 JV IT ownership and BGSW-as-carver model
- 18: Resources: Steering Committee
- 19: Resources: Steering Committee / Charter approved; full inventory confirmed; governance accepted; proceed to Concept Phase
- 20: Resources: All Workstreams + Bosch BD/MIL
- 21: Resources: BGSW IT + Bosch BD/MIL
- 22: Resources: BGSW IT Architects + Bosch BD/MIL / AI-specific apps only; flag BGSW shared platform dependencies
- 23: Resources: BGSW Infra Team / Site surveys for Bangalore, Hyderabad, Pune
- 24: Resources: Bosch BD/MIL + Legal / Identify AI data vs BGSW corporate data; confirm separation approach
- 25: Resources: BGSW Procurement + IT / Change of control clause review for all ~20 AI applications
- 26: Resources: BGSW HR IT / India payroll and HR systems in scope for <100 AI users

| ID | WBS | Task | Type | Duration | Start | Finish | Predecessors | Resources |
| --- | --- | --- | --- | --- | --- | --- | --- | --- |
| 27 | 2.2 | **2.2 JV IT Architecture Design** |  | 30d | 2026-07-13 | 2026-08-21 | 22, 23 | BGSW IT Architects; Bosch BD/MIL |
| 28 | 2.2.1 | JV Architecture Concept Workshop (Combination Model) |  | 5d | 2026-07-13 | 2026-07-17 | 22 | BGSW; JV Architects |
| 29 | 2.2.2 | Network Architecture Design - 3 India JV Sites |  | 12d | 2026-07-20 | 2026-08-04 | 28 | BGSW Infra; Bosch BD/MIL |
| 30 | 2.2.3 | Active Directory Design - JV Forest |  | 12d | 2026-07-20 | 2026-08-04 | 28 | BGSW AD Team |
| 31 | 2.2.4 | M365 and Azure Tenant Design - JV Entity |  | 12d | 2026-07-20 | 2026-08-04 | 28 | BGSW Azure Team |
| 32 | 2.2.5 | Security Architecture Design - JV Entity |  | 12d | 2026-08-05 | 2026-08-20 | 29, 30 | BGSW CISO |
| 33 | 2.3 | **2.3 AI IT Migration Strategy** |  | 25d | 2026-07-28 | 2026-08-28 | 22 | Bosch BD/MIL; All WS Leads |
| 34 | 2.3.1 | Application Categorisation (~20 AI Apps) |  | 7d | 2026-07-28 | 2026-08-05 | 22 | Bosch BD/MIL; WS Leads |
| 35 | 2.3.2 | Data Separation Rules Finalised |  | 10d | 2026-08-11 | 2026-08-24 | 24 | Bosch BD/MIL; Legal |
| 36 | 2.3.3 | TSA Service Catalogue Definition |  | 15d | 2026-07-28 | 2026-08-17 | 28 | BGSW IT; JV IT |
| 37 | 2.3.4 | JV IT Operating Model (post-TSA) |  | 10d | 2026-08-12 | 2026-08-25 | 34 | BGSW IT Architects |
| 38 | 2.4 | **2.4 Planning and Baseline** |  | 12d | 2026-08-13 | 2026-08-28 | 27, 33 | Bosch BD/MIL; IT PM |
| 39 | 2.4.1 | Detailed Project Plan Development |  | 7d | 2026-08-13 | 2026-08-21 | 27, 33 | Bosch BD/MIL; IT PM |
| 40 | 2.4.2 | Risk Register Baseline |  | 7d | 2026-08-13 | 2026-08-21 | 33 | Bosch BD/MIL; All WS Leads |
| 41 | 2.4.3 | Resource Plan and Budget Baseline |  | 7d | 2026-08-18 | 2026-08-26 | 39 | Finance; IT PM |
| 42 | 2.5 | QG2 - Concept Quality Gate | milestone | 0d | 2026-08-28 | 2026-08-28 | 38, 37, 36 | Steering Committee |
| 43 | 3 | **Phase 3 - Development and Build** |  | 45d | 2026-09-01 | 2026-10-30 | 42 | All Workstreams |
| 44 | 3.1 | **3.1 JV IT Infrastructure Build** |  | 35d | 2026-09-01 | 2026-10-16 | 42 | BGSW Infra; Partners |
| 45 | 3.1.1 | Network Setup - 3 India JV Sites |  | 20d | 2026-09-01 | 2026-09-28 | 42 | BGSW Infra |
| 46 | 3.1.2 | Server Infrastructure Build - JV (Cloud-first) |  | 15d | 2026-09-01 | 2026-09-21 | 42 | BGSW Infra |
| 47 | 3.1.3 | Active Directory Build - JV Forest |  | 20d | 2026-09-14 | 2026-10-09 | 45 | BGSW AD Team |
| 48 | 3.1.4 | M365 Tenant Provisioning - JV (<100 Mailboxes) |  | 12d | 2026-09-01 | 2026-09-16 | 42 | BGSW Azure Team |
| 49 | 3.1.5 | Azure and Cloud Environment Setup - JV |  | 10d | 2026-09-17 | 2026-09-30 | 48 | BGSW Cloud Team |
| 50 | 3.1.6 | Security and IAM Platform Setup - JV |  | 15d | 2026-10-01 | 2026-10-21 | 47 | BGSW CISO |

Notes:
- 27: Resources: BGSW IT Architects + Bosch BD/MIL
- 28: Resources: BGSW + JV Architects / Confirm Combination model; define JV IT target state alongside BGSW carver setup
- 29: Resources: BGSW Infra + Bosch BD/MIL / JV LAN/WAN across India sites; domestic links sufficient; no international WAN required
- 30: Resources: BGSW AD Team / New AD forest for JV entity; fully separate from BGSW corporate AD
- 31: Resources: BGSW Azure Team / New M365 tenant for JV; <100 mailboxes; Teams and OneDrive in scope
- 32: Resources: BGSW CISO / JV security architecture independent of BGSW; ISO 27001 baseline
- 33: Resources: Bosch BD/MIL + All WS Leads
- 34: Resources: Bosch BD/MIL + WS Leads / All ~20 apps in single migration wave given small count
- 35: Resources: Bosch BD/MIL + Legal
- 36: Resources: BGSW IT + JV IT / Services BGSW provides to JV under TSA; define exit criteria per service
- 37: Resources: BGSW IT Architects / JV standalone operating model after TSA exit; India-centric model
- 38: Resources: Bosch BD/MIL + IT PM
- 39: Resources: Bosch BD/MIL + IT PM
- 40: Resources: Bosch BD/MIL + All WS Leads
- 41: Resources: Finance + IT PM
- 42: Resources: Steering Committee / Architecture approved; JV model agreed; TSA catalogue defined; migration strategy approved; proceed to Development
- 43: Resources: All Workstreams
- 44: Resources: BGSW Infra + Partners
- 45: Resources: BGSW Infra / JV LAN across Bangalore, Hyderabad, Pune; domestic India connectivity
- 46: Resources: BGSW Infra / Cloud-first approach; minimal on-premise footprint
- 47: Resources: BGSW AD Team / Foundation for all JV users and ~20 AI applications
- 48: Resources: BGSW Azure Team
- 49: Resources: BGSW Cloud Team
- 50: Resources: BGSW CISO

| ID | WBS | Task | Type | Duration | Start | Finish | Predecessors | Resources |
| --- | --- | --- | --- | --- | --- | --- | --- | --- |
| 51 | 3.2 | **3.2 Application Migration Preparation (~20 AI Apps)** |  | 35d | 2026-09-01 | 2026-10-16 | 42 | BGSW IT; Bosch BD/MIL |
| 52 | 3.2.1 | Application Reclassification and Assignment |  | 7d | 2026-09-01 | 2026-09-09 | 42 | Bosch BD/MIL; BGSW IT |
| 53 | 3.2.2 | Application Adaptation for JV Environment (~20 Apps) |  | 20d | 2026-09-10 | 2026-10-07 | 52 | Dev Teams |
| 54 | 3.2.3 | Data Migration Preparation - AI Business Data |  | 15d | 2026-09-14 | 2026-10-02 | 52 | BGSW IT; Bosch BD/MIL |
| 55 | 3.3 | **3.3 Client Device Migration (<100 Devices)** |  | 20d | 2026-09-21 | 2026-10-16 | 47 | BGSW CWP Team |
| 56 | 3.3.1 | Device Inventory and Assessment - AI Users (<100 devices) |  | 5d | 2026-09-21 | 2026-09-25 | 47 | BGSW IT; Asset Mgmt |
| 57 | 3.3.2 | Device Reimaging and Configuration - JV Standard Image |  | 15d | 2026-09-28 | 2026-10-16 | 56 | BGSW CWP |
| 58 | 3.4 | **3.4 TSA Framework Finalisation** |  | 35d | 2026-09-01 | 2026-10-16 | 42 | BGSW IT; Legal |
| 59 | 3.4.1 | TSA Service Descriptions Finalised - 3 India Sites |  | 15d | 2026-09-01 | 2026-09-21 | 42 | BGSW IT; JV IT |
| 60 | 3.4.2 | TSA SLA and KPI Framework |  | 12d | 2026-09-22 | 2026-10-07 | 59 | IT PM; Legal |
| 61 | 3.4.3 | TSA Contracts Legal Review and Finalisation |  | 15d | 2026-09-22 | 2026-10-12 | 60 | Legal |
| 62 | 3.5 | QG3 - Development Quality Gate | milestone | 0d | 2026-10-30 | 2026-10-30 | 44, 51, 55, 58 | Steering Committee |
| 63 | 4 | **Phase 4 - Testing and Cutover** |  | 25d | 2026-11-02 | 2026-12-04 | 62 | All Workstreams |
| 64 | 4.1 | **4.1 System Integration Testing** |  | 15d | 2026-11-02 | 2026-11-20 | 62 | BGSW IT; Bosch BD/MIL |
| 65 | 4.1.1 | Integration Testing - All ~20 AI Applications |  | 12d | 2026-11-02 | 2026-11-17 | 62 | App Teams; Test Team |
| 66 | 4.1.2 | User Acceptance Testing (UAT) |  | 10d | 2026-11-09 | 2026-11-20 | 65 | Business Key Users |
| 67 | 4.1.3 | Security and Penetration Testing |  | 7d | 2026-11-02 | 2026-11-10 | 62 | BGSW CISO |
| 68 | 4.1.4 | UAT Sign-Off | milestone | 0d | 2026-11-20 | 2026-11-20 | 66 | Business Leads; IT PM |
| 69 | 4.2 | **4.2 Cutover Preparation** |  | 12d | 2026-11-17 | 2026-12-02 | 64 | IT PM; All WS |
| 70 | 4.2.1 | Cutover Plan Finalisation |  | 7d | 2026-11-17 | 2026-11-25 | 64 | IT PM; WS Leads |
| 71 | 4.2.2 | End-User Communication - AI Business (<100 Users) |  | 7d | 2026-11-17 | 2026-11-25 | 70 | Comms; BGSW IT |
| 72 | 4.2.3 | Dress Rehearsal and Cutover Simulation |  | 3d | 2026-11-26 | 2026-11-30 | 70 | All WS Leads |
| 73 | 4.2.4 | Help Desk Activation and Training - JV |  | 5d | 2026-11-26 | 2026-12-02 | 70 | IT Ops |
| 74 | 4.2.5 | Go No-Go Readiness Assessment | milestone | 0d | 2026-11-30 | 2026-11-30 | 71, 72, 73 | Steering Committee |
| 75 | 4.3 | QG4 - Pre-Cutover Quality Gate | milestone | 0d | 2026-12-04 | 2026-12-04 | 74 | Steering Committee |

Notes:
- 51: Resources: BGSW IT + Bosch BD/MIL
- 52: Resources: Bosch BD/MIL + BGSW IT / Assign each of ~20 AI apps to JV or retain in BGSW carver
- 53: Resources: Dev Teams / Re-point app configurations from BGSW to JV domain / AD / M365
- 54: Resources: BGSW IT + Bosch BD/MIL
- 55: Resources: BGSW CWP Team
- 56: Resources: BGSW IT + Asset Mgmt
- 57: Resources: BGSW CWP / JV domain image for <100 devices across 3 India sites
- 58: Resources: BGSW IT + Legal
- 59: Resources: BGSW IT + JV IT / Each TSA service must have an exit date and acceptance criteria
- 60: Resources: IT PM + Legal
- 61: Resources: Legal
- 62: Resources: Steering Committee / JV infra ready; all ~20 apps packaged; <100 devices configured; TSA contracts signed; proceed to Cutover
- 63: Resources: All Workstreams
- 64: Resources: BGSW IT + Bosch BD/MIL
- 65: Resources: App Teams + Test Team
- 66: Resources: Business Key Users / JV IT and AI business users confirm Day 1 readiness
- 67: Resources: BGSW CISO / JV environment penetration test; India data residency confirmed
- 68: Resources: Business Leads + IT PM
- 69: Resources: IT PM + All WS
- 70: Resources: IT PM + WS Leads
- 71: Resources: Comms + BGSW IT / Communication to all AI users across 3 India sites
- 72: Resources: All WS Leads
- 73: Resources: IT Ops / India support coverage for JV AI users
- 74: Resources: Steering Committee
- 75: Resources: Steering Committee / UAT passed; <100 devices migrated; all AI apps live in JV; JV infra ready; cutover plan approved; Day 1 confirmed

| ID | WBS | Task | Type | Duration | Start | Finish | Predecessors | Resources |
| --- | --- | --- | --- | --- | --- | --- | --- | --- |
| 76 | 5 | **Phase 5 - GoLive and Programme Closure** |  | 40d | 2026-12-07 | 2027-01-29 | 75 | All Workstreams |
| 77 | 5.1 | **5.1 Day 1 GoLive Activities** |  | 3d | 2026-12-07 | 2026-12-09 | 75 | IT PM; Business |
| 78 | 5.1.1 | Day 1 - JV IT GoLive (Legal Separation Effective) | milestone | 0d | 2026-12-07 | 2026-12-07 | 75 | Executive Leadership |
| 79 | 5.1.2 | Network Domain Cutover to JV Active Directory |  | 2d | 2026-12-07 | 2026-12-08 | 78 | BGSW Infra |
| 80 | 5.1.3 | Application Day 1 Activation - All ~20 AI Apps |  | 1d | 2026-12-07 | 2026-12-07 | 78 | App Teams |
| 81 | 5.1.4 | BGSW TSA Residual Services Activated |  | 1d | 2026-12-07 | 2026-12-07 | 78 | BGSW IT; JV IT |
| 82 | 5.1.5 | User Go-Live Communication (AI Business <100 Users) |  | 1d | 2026-12-07 | 2026-12-07 | 78 | Comms; BGSW IT |
| 83 | 5.2 | **5.2 Hypercare - 30 Working Days** |  | 30d | 2026-12-07 | 2027-01-18 | 77 | All WS Leads; IT Ops |
| 84 | 5.2.1 | Daily Operations Review Meetings |  | 30d | 2026-12-07 | 2027-01-18 | 77 | IT PM; WS Leads |
| 85 | 5.2.2 | Incident Management and P1/P2 Issue Resolution |  | 30d | 2026-12-07 | 2027-01-18 | 77 | IT Ops; Help Desk |
| 86 | 5.2.3 | TSA SLA Compliance Monitoring |  | 30d | 2026-12-07 | 2027-01-18 | 77 | IT Ops |
| 87 | 5.2.4 | Hypercare Close - Formal Sign-Off | milestone | 0d | 2027-01-18 | 2027-01-18 | 84, 85, 86 | Steering Committee |
| 88 | 5.3 | **5.3 TSA Exit and BGSW Service Termination** |  | 25d | 2026-12-14 | 2027-01-16 | 77 | BGSW IT; JV IT |
| 89 | 5.3.1 | TSA Exit Planning per Service |  | 10d | 2026-12-14 | 2026-12-25 | 77 | IT PM; BGSW IT |
| 90 | 5.3.2 | TSA Service Exit - All 3 India Sites |  | 15d | 2027-01-05 | 2027-01-23 | 89 | BGSW IT; JV IT |
| 91 | 5.3.3 | TSA Exit Confirmation (All BGSW Services Terminated) | milestone | 0d | 2027-01-23 | 2027-01-23 | 90 | BGSW; JV Executive |
| 92 | 5.4 | **5.4 Programme Closure** |  | 10d | 2027-01-18 | 2027-01-29 | 87 | IT PM; Bosch BD/MIL |
| 93 | 5.4.1 | Lessons Learned Workshop |  | 3d | 2027-01-18 | 2027-01-20 | 87 | All WS Leads |
| 94 | 5.4.2 | Programme Closure Report |  | 7d | 2027-01-21 | 2027-01-29 | 93 | IT PM; Bosch BD/MIL |
| 95 | 5.4.3 | Final Programme Sign-Off | milestone | 0d | 2027-01-29 | 2027-01-29 | 94 | Executive Leadership |
| 96 | 5.5 | QG5 - Programme Closure Quality Gate | milestone | 0d | 2027-01-29 | 2027-01-29 | 87, 91, 95 | Steering Committee |

Notes:
- 76: Resources: All Workstreams
- 77: Resources: IT PM + Business
- 78: Resources: Executive Leadership / JV AI IT fully separated from BGSW; JV IT independent from this date
- 79: Resources: BGSW Infra
- 80: Resources: App Teams
- 81: Resources: BGSW IT + JV IT / TSA clock starts 07 Dec 2026; minimal scope BGSW-to-JV services; exit target Mar 2027
- 82: Resources: Comms + BGSW IT
- 83: Resources: All WS Leads + IT Ops
- 84: Resources: IT PM + WS Leads / India standup cadence; focus on JV AI systems stability
- 85: Resources: IT Ops + Help Desk
- 86: Resources: IT Ops / BGSW residual TSA tracked from Day 1; planned full exit by Mar 2027
- 87: Resources: Steering Committee
- 88: Resources: BGSW IT + JV IT
- 89: Resources: IT PM + BGSW IT / Define exit criteria and acceptance tests per remaining TSA service
- 90: Resources: BGSW IT + JV IT
- 91: Resources: BGSW + JV Executive
- 92: Resources: IT PM + Bosch BD/MIL
- 93: Resources: All WS Leads
- 94: Resources: IT PM + Bosch BD/MIL
- 95: Resources: Executive Leadership
- 96: Resources: Steering Committee / Hypercare stable; TSA fully exited; JV IT fully independent; Falcon programme formally closed
