# Project Hamburger

Schedule from MS Project XML, 2026-04-01 to 2027-05-28.

## Calendars

- Standard: Mon-Fri as the base calendar; Sat-Sun off.

## Resources

| Resource |
| --- |
| All WS |
| All WS Leads |
| All Workstreams |
| App Teams |
| Asset Mgmt |
| Bosch |
| Bosch AD Team |
| Bosch Azure Team |
| Bosch CIO |
| Bosch CISO |
| Bosch CWP Team |
| Bosch Cloud Team |
| Bosch ERP / SAP Team |
| Bosch HR IT |
| Bosch IT |
| Bosch IT Architects |
| Bosch Infra |
| Bosch Infra Team |
| Bosch Procurement |
| Business |
| Business Key Users |
| Business Leads |
| Buyer Executive |
| Buyer IT |
| Buyer IT Architects |
| Comms |
| Erik Ho (BD/MIL-ICC) |
| Executive Leadership |
| Facilities |
| Finance |
| Help Desk |
| IT |
| IT Ops |
| IT PM |
| Legal |
| Migration Partner |
| PMO |
| Partners |
| Solar Executive |
| Solar IT |
| Solar IT PM |
| Solar Senior Mgmt |
| Steering Committee |
| Test Team |
| WAN Provider |
| WS Leads |

## Schedule

| ID | WBS | Task | Type | Duration | Start | Finish | Predecessors | Constraint | Resources |
| --- | --- | --- | --- | --- | --- | --- | --- | --- | --- |
| 1 | 1 | **Phase 1 - Initialization** |  | 65d | 2026-04-01 | 2026-06-30 |  |  | Erik Ho (BD/MIL-ICC); Bosch IT |
| 2 | 1.1 | QG0 - Programme Kick-Off Gate | milestone | 0d | 2026-04-01 | 2026-04-01 |  | must start on 2026-04-01 | Steering Committee |
| 3 | 1.2 | **1.1 Project Setup and Governance** |  | 20d | 2026-04-01 | 2026-04-28 |  |  | Erik Ho (BD/MIL-ICC) |
| 4 | 1.2.1 | Appoint Programme Leads – Seller and Solar Business |  | 5d | 2026-04-01 | 2026-04-07 |  | must start on 2026-04-01 | Bosch CIO; Erik Ho (BD/MIL-ICC) |
| 5 | 1.2.2 | Establish Steering Committee and Governance Model |  | 7d | 2026-04-01 | 2026-04-09 | 4 | must start on 2026-04-01 | Bosch; Solar Senior Mgmt |
| 6 | 1.2.3 | Define RACI, Workstream Leads and Escalation Path |  | 7d | 2026-04-06 | 2026-04-14 | 4 | must start on 2026-04-06 | Erik Ho (BD/MIL-ICC) |
| 7 | 1.2.4 | Set Up PMO Tools, Collaboration Site and Reporting Cadence |  | 7d | 2026-04-09 | 2026-04-17 | 4 | must start on 2026-04-09 | PMO; Erik Ho (BD/MIL-ICC) |
| 8 | 1.3 | Signing - Frozen Zone Activated | milestone | 0d | 2026-04-09 | 2026-04-09 | 4 | must start on 2026-04-09 | Bosch; Solar Executive |
| 9 | 1.4 | **1.2 Solar IT Landscape Assessment (17 worldwide sites)** |  | 40d | 2026-04-14 | 2026-06-09 | 4 |  | Bosch IT; Erik Ho (BD/MIL-ICC) |
| 10 | 1.4.1 | Solar IT Inventory Request (Apps / Infra / Devices / Data) |  | 10d | 2026-04-14 | 2026-04-27 | 6 | must start on 2026-04-14 | Solar IT PM |
| 11 | 1.4.2 | Location List – 17 Worldwide Sites |  | 10d | 2026-04-27 | 2026-05-12 | 10 | must start on 2026-04-27 | Solar IT; Facilities |
| 12 | 1.4.3 | Legal Entity Identification – Buyer Entity Registration |  | 20d | 2026-04-27 | 2026-05-25 | 10 | must start on 2026-04-27 | Legal; Finance |
| 13 | 1.4.4 | Identify Solar IT Dependencies on Bosch Shared Services |  | 20d | 2026-05-11 | 2026-06-09 | 11 | must start on 2026-05-11 | Bosch IT Architects |
| 14 | 1.5 | **1.3 Project Charter and Scope Definition** |  | 20d | 2026-05-18 | 2026-06-12 | 9 |  | Erik Ho (BD/MIL-ICC) |
| 15 | 1.5.1 | Draft Hamburger Project Charter |  | 10d | 2026-05-18 | 2026-05-29 | 9 | must start on 2026-05-18 | Erik Ho (BD/MIL-ICC); Solar IT PM |
| 16 | 1.5.2 | Define Scope Boundaries – Solar IT Only, Stand Alone |  | 10d | 2026-05-18 | 2026-05-29 | 11 | must start on 2026-05-18 | Erik Ho (BD/MIL-ICC); Bosch IT |
| 17 | 1.5.3 | Global IT Workstream Kickoff Workshop |  | 3d | 2026-05-25 | 2026-05-27 | 15 | must start on 2026-05-25 | All WS Leads |
| 18 | 1.5.4 | Solar IT Standalone Operating Framework Agreement |  | 5d | 2026-06-01 | 2026-06-05 | 15 | must start on 2026-06-01 | Legal; Finance; Bosch IT |
| 19 | 1.5.5 | Project Charter Approval | milestone | 0d | 2026-06-12 | 2026-06-12 | 15, 16, 17, 18 | must start on 2026-06-12 | Steering Committee |
| 20 | 1.6 | QG1 - Initialization Quality Gate | milestone | 0d | 2026-06-30 | 2026-06-30 | 19 | must start on 2026-06-30 | Steering Committee |
| 21 | 2 | **Phase 2 - Concept** |  | 45d | 2026-07-01 | 2026-08-31 | 20 |  | All Workstreams; Erik Ho (BD/MIL-ICC) |
| 22 | 2.1 | **2.1 Detailed As-Is Analysis** |  | 35d | 2026-07-01 | 2026-08-17 | 20 |  | Bosch IT; Erik Ho (BD/MIL-ICC) |
| 23 | 2.1.1 | Application Landscape Inventory – Solar Business |  | 20d | 2026-07-01 | 2026-07-28 | 20 | must start on 2026-07-01 | Bosch IT Architects; Erik Ho (BD/MIL-ICC) |
| 24 | 2.1.2 | IT Infrastructure As-Is Mapping – 17 Global Sites |  | 20d | 2026-07-01 | 2026-07-28 | 20 | must start on 2026-07-01 | Bosch Infra Team |
| 25 | 2.1.3 | ERP / SAP Landscape Analysis – Solar Business Scope |  | 25d | 2026-07-01 | 2026-08-04 | 20 | must start on 2026-07-01 | Bosch ERP / SAP Team |
| 26 | 2.1.4 | Data Ownership and Separation Rules |  | 15d | 2026-07-21 | 2026-08-10 | 23 | must start on 2026-07-21 | Erik Ho (BD/MIL-ICC); Legal |
| 27 | 2.1.5 | Contract and Licence Inventory |  | 15d | 2026-07-01 | 2026-07-21 | 20 | must start on 2026-07-01 | Bosch Procurement; IT |
| 28 | 2.1.6 | HR IT Systems Mapping – Solar Business Users |  | 10d | 2026-07-01 | 2026-07-14 | 20 | must start on 2026-07-01 | Bosch HR IT |

Notes:
- 1: Resources: Erik Ho (BD/MIL-ICC) + Bosch IT
- 2: Resources: Steering Committee / Programme formally initiated; SteerCo constituted; all workstream leads confirmed; proceed to Phase 1
- 3: Resources: Erik Ho (BD/MIL-ICC)
- 4: Resources: Bosch CIO + Erik Ho (BD/MIL-ICC)
- 5: Resources: Bosch + Solar Senior Mgmt
- 6: Resources: Erik Ho (BD/MIL-ICC)
- 7: Resources: PMO + Erik Ho (BD/MIL-ICC)
- 8: Resources: Bosch + Solar Executive / No Solar IT production changes without SteerCo approval from this date
- 9: Resources: Bosch IT + Erik Ho (BD/MIL-ICC) / 17 sites across EMEA, Americas and APAC
- 10: Resources: Solar IT PM / 2600 users; global footprint
- 11: Resources: Solar IT + Facilities / Sites across EMEA, Americas and APAC to be confirmed per region
- 12: Resources: Legal + Finance / Buyer entity legal setup; change-of-control planning; undisclosed buyer engagement
- 13: Resources: Bosch IT Architects / Full TSA scope from Bosch shared services consumed by Solar business
- 14: Resources: Erik Ho (BD/MIL-ICC)
- 15: Resources: Erik Ho (BD/MIL-ICC) + Solar IT PM
- 16: Resources: Erik Ho (BD/MIL-ICC) + Bosch IT / 17 sites; 2600 users; Stand Alone model; no Merger Zone
- 17: Resources: All WS Leads
- 18: Resources: Legal + Finance + Bosch IT / Confirm Stand Alone model; no Merger Zone; direct Bosch IT hand-over to Buyer
- 19: Resources: Steering Committee
- 20: Resources: Steering Committee / Charter approved; full inventory confirmed; governance accepted; budget baseline submitted; proceed to Concept
- 21: Resources: All Workstreams + Erik Ho (BD/MIL-ICC)
- 22: Resources: Bosch IT + Erik Ho (BD/MIL-ICC)
- 23: Resources: Bosch IT Architects + Erik Ho (BD/MIL-ICC) / Full app inventory across all 17 sites; flag Bosch shared platform dependencies
- 24: Resources: Bosch Infra Team / Site surveys covering EMEA, Americas, APAC
- 25: Resources: Bosch ERP / SAP Team / Identify Solar-specific ERP instances and shared SAP mandants
- 26: Resources: Erik Ho (BD/MIL-ICC) + Legal / Identify Solar data vs Bosch corporate data; confirm separation approach
- 27: Resources: Bosch Procurement + IT / Change-of-control clause review for all Solar applications and licences
- 28: Resources: Bosch HR IT / Global payroll and HR systems for 2600 Solar users

| ID | WBS | Task | Type | Duration | Start | Finish | Predecessors | Constraint | Resources |
| --- | --- | --- | --- | --- | --- | --- | --- | --- | --- |
| 29 | 2.2 | **2.2 Standalone IT Architecture Design** |  | 30d | 2026-07-13 | 2026-08-21 | 23, 24 |  | Bosch IT Architects; Erik Ho (BD/MIL-ICC) |
| 30 | 2.2.1 | Architecture Concept Workshop – Stand Alone Model |  | 5d | 2026-07-13 | 2026-07-17 | 23 | must start on 2026-07-13 | Bosch; Buyer IT Architects |
| 31 | 2.2.2 | Network Architecture Design – 17 Global Sites |  | 15d | 2026-07-20 | 2026-08-07 | 30 | must start on 2026-07-20 | Bosch Infra; Erik Ho (BD/MIL-ICC) |
| 32 | 2.2.3 | Active Directory Design – Solar Standalone Forest |  | 12d | 2026-07-20 | 2026-08-04 | 30 | must start on 2026-07-20 | Bosch AD Team |
| 33 | 2.2.4 | M365 and Azure Tenant Design – Solar Entity |  | 12d | 2026-07-20 | 2026-08-04 | 30 | must start on 2026-07-20 | Bosch Azure Team |
| 34 | 2.2.5 | ERP / SAP Separation Design |  | 20d | 2026-07-20 | 2026-08-14 | 25, 30 | must start on 2026-07-20 | Bosch ERP / SAP Team |
| 35 | 2.2.6 | Security Architecture Design – Solar Standalone |  | 12d | 2026-08-10 | 2026-08-25 | 31, 32 | must start on 2026-08-10 | Bosch CISO |
| 36 | 2.3 | **2.3 Solar IT Migration Strategy** |  | 30d | 2026-07-28 | 2026-08-31 | 23 |  | Erik Ho (BD/MIL-ICC); All WS Leads |
| 37 | 2.3.1 | Application Categorisation and Wave Planning |  | 10d | 2026-07-28 | 2026-08-10 | 23 | must start on 2026-07-28 | Erik Ho (BD/MIL-ICC); WS Leads |
| 38 | 2.3.2 | Data Separation Rules Finalised |  | 10d | 2026-08-11 | 2026-08-24 | 26 | must start on 2026-08-11 | Erik Ho (BD/MIL-ICC); Legal |
| 39 | 2.3.3 | TSA Service Catalogue Definition |  | 15d | 2026-07-28 | 2026-08-17 | 30 | must start on 2026-07-28 | Bosch IT; Buyer IT |
| 40 | 2.3.4 | Solar IT Operating Model (post-TSA) |  | 10d | 2026-08-18 | 2026-08-31 | 37 | must start on 2026-08-18 | Bosch IT Architects |
| 41 | 2.4 | **2.4 Planning and Baseline** |  | 15d | 2026-08-13 | 2026-08-31 | 29, 36 |  | Erik Ho (BD/MIL-ICC); IT PM |
| 42 | 2.4.1 | Detailed Project Plan Development |  | 7d | 2026-08-13 | 2026-08-21 | 29, 36 | must start on 2026-08-13 | Erik Ho (BD/MIL-ICC); IT PM |
| 43 | 2.4.2 | Risk Register Baseline |  | 7d | 2026-08-13 | 2026-08-21 | 36 | must start on 2026-08-13 | Erik Ho (BD/MIL-ICC); All WS Leads |
| 44 | 2.4.3 | Resource Plan and Budget Baseline |  | 7d | 2026-08-20 | 2026-08-28 | 42 | must start on 2026-08-20 | Finance; IT PM |
| 45 | 2.5 | QG2 - Concept Quality Gate | milestone | 0d | 2026-08-31 | 2026-08-31 | 41, 40, 39 | must start on 2026-08-31 | Steering Committee |
| 46 | 3 | **Phase 3 - Development and Build** |  | 45d | 2026-09-01 | 2026-10-30 | 45 |  | All Workstreams |
| 47 | 3.1 | **3.1 Solar IT Infrastructure Build** |  | 40d | 2026-09-01 | 2026-10-27 | 45 |  | Bosch Infra; Partners |
| 48 | 3.1.1 | Network Setup – 17 Global Sites |  | 25d | 2026-09-01 | 2026-10-05 | 45 | must start on 2026-09-01 | Bosch Infra; WAN Provider |
| 49 | 3.1.2 | Data Centre and Server Infrastructure Build – Solar |  | 20d | 2026-09-01 | 2026-09-28 | 45 | must start on 2026-09-01 | Bosch Infra |
| 50 | 3.1.3 | Active Directory Build – Solar Standalone Forest |  | 20d | 2026-09-28 | 2026-10-27 | 48 | must start on 2026-09-28 | Bosch AD Team |
| 51 | 3.1.4 | M365 Tenant Provisioning – Solar (2600 Mailboxes) |  | 15d | 2026-09-01 | 2026-09-21 | 45 | must start on 2026-09-01 | Bosch Azure Team |
| 52 | 3.1.5 | Azure and Cloud Environment Setup – Solar |  | 12d | 2026-09-22 | 2026-10-07 | 51 | must start on 2026-09-22 | Bosch Cloud Team |
| 53 | 3.1.6 | Security and IAM Platform Setup – Solar Standalone |  | 15d | 2026-10-08 | 2026-10-28 | 50 | must start on 2026-10-08 | Bosch CISO |

Notes:
- 29: Resources: Bosch IT Architects + Erik Ho (BD/MIL-ICC)
- 30: Resources: Bosch + Buyer IT Architects / Confirm Stand Alone model; define Solar IT target state; no Merger Zone
- 31: Resources: Bosch Infra + Erik Ho (BD/MIL-ICC) / Solar LAN/WAN across EMEA, Americas, APAC; international links required
- 32: Resources: Bosch AD Team / New AD forest for Solar; fully separate from Bosch corporate AD
- 33: Resources: Bosch Azure Team / New M365 tenant for Solar; 2600 mailboxes; Teams, SharePoint, OneDrive in scope
- 34: Resources: Bosch ERP / SAP Team / SAP client copy or greenfield decision; data migration scope for ERP
- 35: Resources: Bosch CISO / Solar security architecture independent of Bosch; ISO 27001 baseline
- 36: Resources: Erik Ho (BD/MIL-ICC) + All WS Leads
- 37: Resources: Erik Ho (BD/MIL-ICC) + WS Leads / Multi-wave migration required given 17 sites and global scope
- 38: Resources: Erik Ho (BD/MIL-ICC) + Legal
- 39: Resources: Bosch IT + Buyer IT / Services Bosch provides to Solar/Buyer under TSA; define exit criteria per service
- 40: Resources: Bosch IT Architects / Solar standalone operating model after TSA exit; global IT model
- 41: Resources: Erik Ho (BD/MIL-ICC) + IT PM
- 42: Resources: Erik Ho (BD/MIL-ICC) + IT PM
- 43: Resources: Erik Ho (BD/MIL-ICC) + All WS Leads
- 44: Resources: Finance + IT PM
- 45: Resources: Steering Committee / Architecture approved; Stand Alone model agreed; TSA catalogue defined; ERP strategy decided; proceed to Development
- 46: Resources: All Workstreams
- 47: Resources: Bosch Infra + Partners
- 48: Resources: Bosch Infra + WAN Provider / Solar LAN/WAN across all 17 sites; MPLS or SD-WAN; international connectivity
- 49: Resources: Bosch Infra / Primary and DR DC for Solar; cloud or co-lo per region
- 50: Resources: Bosch AD Team / Foundation for all 2600 Solar users and applications
- 51: Resources: Bosch Azure Team
- 52: Resources: Bosch Cloud Team
- 53: Resources: Bosch CISO

| ID | WBS | Task | Type | Duration | Start | Finish | Predecessors | Constraint | Resources |
| --- | --- | --- | --- | --- | --- | --- | --- | --- | --- |
| 54 | 3.2 | **3.2 ERP / SAP Separation and Build** |  | 40d | 2026-09-01 | 2026-10-27 | 45 |  | Bosch ERP / SAP Team; Migration Partner |
| 55 | 3.2.1 | SAP System Separation – Solar Mandant Copy or Greenfield |  | 25d | 2026-09-01 | 2026-10-05 | 45 | must start on 2026-09-01 | Bosch ERP / SAP Team |
| 56 | 3.2.2 | ERP Data Cleansing and Validation |  | 15d | 2026-09-14 | 2026-10-02 | 55 | must start on 2026-09-14 | Bosch ERP / SAP Team; Migration Partner |
| 57 | 3.2.3 | ERP Integration Testing – Solar Standalone |  | 15d | 2026-10-05 | 2026-10-23 | 56 | must start on 2026-10-05 | Bosch ERP / SAP Team |
| 58 | 3.3 | **3.3 Application Migration Preparation** |  | 35d | 2026-09-01 | 2026-10-16 | 45 |  | Bosch IT; Erik Ho (BD/MIL-ICC) |
| 59 | 3.3.1 | Application Reclassification and Assignment |  | 7d | 2026-09-01 | 2026-09-09 | 45 | must start on 2026-09-01 | Erik Ho (BD/MIL-ICC); Bosch IT |
| 60 | 3.3.2 | Application Adaptation for Solar Standalone Environment |  | 20d | 2026-09-10 | 2026-10-07 | 59 | must start on 2026-09-10 | App Teams |
| 61 | 3.3.3 | Data Migration Preparation – Solar Business Data |  | 15d | 2026-09-14 | 2026-10-02 | 59 | must start on 2026-09-14 | Bosch IT; Erik Ho (BD/MIL-ICC) |
| 62 | 3.4 | **3.4 Client Device Migration (2600 Devices)** |  | 25d | 2026-09-28 | 2026-10-30 | 50 |  | Bosch CWP Team |
| 63 | 3.4.1 | Device Inventory and Assessment – 2600 Solar Users |  | 7d | 2026-09-28 | 2026-10-07 | 50 | must start on 2026-09-28 | Bosch IT; Asset Mgmt |
| 64 | 3.4.2 | Device Reimaging and Configuration – Solar Standard Image |  | 18d | 2026-10-08 | 2026-10-30 | 63 | must start on 2026-10-08 | Bosch CWP Team |
| 65 | 3.5 | **3.5 TSA Framework Finalisation** |  | 35d | 2026-09-01 | 2026-10-16 | 45 |  | Bosch IT; Legal |
| 66 | 3.5.1 | TSA Service Descriptions Finalised – Global Scope |  | 15d | 2026-09-01 | 2026-09-21 | 45 | must start on 2026-09-01 | Bosch IT; Buyer IT |
| 67 | 3.5.2 | TSA SLA and KPI Framework |  | 12d | 2026-09-22 | 2026-10-07 | 66 | must start on 2026-09-22 | IT PM; Legal |
| 68 | 3.5.3 | TSA Contracts Legal Review and Finalisation |  | 15d | 2026-09-22 | 2026-10-12 | 67 | must start on 2026-09-22 | Legal |
| 69 | 3.6 | QG3 - Development Quality Gate | milestone | 0d | 2026-10-30 | 2026-10-30 | 47, 54, 58, 62, 65 | must start on 2026-10-30 | Steering Committee |
| 70 | 4 | **Phase 4 - Testing and Cutover** |  | 22d | 2026-11-02 | 2026-11-30 | 69 |  | All Workstreams |
| 71 | 4.1 | **4.1 System Integration Testing** |  | 15d | 2026-11-02 | 2026-11-20 | 69 |  | Bosch IT; Erik Ho (BD/MIL-ICC) |
| 72 | 4.1.1 | Integration Testing – All Solar Applications |  | 12d | 2026-11-02 | 2026-11-17 | 69 | must start on 2026-11-02 | App Teams; Test Team |
| 73 | 4.1.2 | ERP / SAP End-to-End Regression Testing |  | 12d | 2026-11-02 | 2026-11-17 | 69 | must start on 2026-11-02 | Bosch ERP / SAP Team |
| 74 | 4.1.3 | User Acceptance Testing (UAT) – Global |  | 10d | 2026-11-09 | 2026-11-20 | 72, 73 | must start on 2026-11-09 | Business Key Users |
| 75 | 4.1.4 | Security and Penetration Testing |  | 7d | 2026-11-02 | 2026-11-10 | 69 | must start on 2026-11-02 | Bosch CISO |
| 76 | 4.1.5 | UAT Sign-Off | milestone | 0d | 2026-11-20 | 2026-11-20 | 74 | must start on 2026-11-20 | Business Leads; IT PM |
| 77 | 4.2 | **4.2 Cutover Preparation** |  | 15d | 2026-11-13 | 2026-12-01 | 71 |  | IT PM; All WS |
| 78 | 4.2.1 | Cutover Plan Finalisation |  | 7d | 2026-11-13 | 2026-11-21 | 71 | must start on 2026-11-13 | IT PM; WS Leads |
| 79 | 4.2.2 | End-User Communication – Solar Business (2600 Users) |  | 7d | 2026-11-16 | 2026-11-24 | 78 | must start on 2026-11-16 | Comms; Bosch IT |
| 80 | 4.2.3 | Dress Rehearsal and Cutover Simulation |  | 3d | 2026-11-23 | 2026-11-25 | 78 | must start on 2026-11-23 | All WS Leads |
| 81 | 4.2.4 | Help Desk Activation and Training – Solar Global |  | 5d | 2026-11-24 | 2026-11-30 | 78 | must start on 2026-11-24 | IT Ops |
| 82 | 4.2.5 | Go No-Go Readiness Assessment | milestone | 0d | 2026-11-27 | 2026-11-27 | 79, 80, 81 | must start on 2026-11-27 | Steering Committee |
| 83 | 4.3 | QG4 - Pre-GoLive Quality Gate | milestone | 0d | 2026-11-30 | 2026-11-30 | 82 | must start on 2026-11-30 | Steering Committee |

Notes:
- 54: Resources: Bosch ERP / SAP Team + Migration Partner
- 55: Resources: Bosch ERP / SAP Team / Critical path: SAP separation drives application migration dependencies
- 56: Resources: Bosch ERP / SAP Team + Migration Partner
- 57: Resources: Bosch ERP / SAP Team
- 58: Resources: Bosch IT + Erik Ho (BD/MIL-ICC)
- 59: Resources: Erik Ho (BD/MIL-ICC) + Bosch IT / Assign each Solar app to Standalone or retain in Bosch
- 60: Resources: App Teams / Re-point app configurations from Bosch to Solar domain / AD / M365
- 61: Resources: Bosch IT + Erik Ho (BD/MIL-ICC)
- 62: Resources: Bosch CWP Team
- 63: Resources: Bosch IT + Asset Mgmt / Global device inventory across 17 sites
- 64: Resources: Bosch CWP Team / Solar domain image for 2600 devices; staged rollout across sites
- 65: Resources: Bosch IT + Legal
- 66: Resources: Bosch IT + Buyer IT / Each TSA service must have an exit date and acceptance criteria
- 67: Resources: IT PM + Legal
- 68: Resources: Legal
- 69: Resources: Steering Committee / Solar infra ready; all apps packaged; 2600 devices configured; ERP separated; TSA contracts signed; proceed to Testing
- 70: Resources: All Workstreams
- 71: Resources: Bosch IT + Erik Ho (BD/MIL-ICC)
- 72: Resources: App Teams + Test Team
- 73: Resources: Bosch ERP / SAP Team
- 74: Resources: Business Key Users / Solar IT and business users confirm Day 1 / GoLive readiness across all 17 sites
- 75: Resources: Bosch CISO / Solar standalone environment penetration test; data residency confirmed per region
- 76: Resources: Business Leads + IT PM
- 77: Resources: IT PM + All WS
- 78: Resources: IT PM + WS Leads
- 79: Resources: Comms + Bosch IT / Communication to all Solar users across 17 global sites
- 80: Resources: All WS Leads
- 81: Resources: IT Ops / Global support coverage for Solar users across 17 sites
- 82: Resources: Steering Committee
- 83: Resources: Steering Committee / UAT passed; all systems ready; cutover plan approved; Day 1 / GoLive confirmed for 01 Dec 2026

| ID | WBS | Task | Type | Duration | Start | Finish | Predecessors | Constraint | Resources |
| --- | --- | --- | --- | --- | --- | --- | --- | --- | --- |
| 84 | 5 | **Phase 5 - GoLive and Stabilisation** |  | 65d | 2026-12-01 | 2027-03-01 | 83 |  | All Workstreams |
| 85 | 5.1 | **5.1 Day 1 GoLive Activities** |  | 3d | 2026-12-01 | 2026-12-03 | 83 |  | IT PM; Business |
| 86 | 5.1.1 | Day 1 / GoLive – Solar IT Separation Effective (D1) | milestone | 0d | 2026-12-01 | 2026-12-01 | 83 | must start on 2026-12-01 | Executive Leadership |
| 87 | 5.1.2 | Network Domain Cutover to Solar Active Directory |  | 2d | 2026-12-01 | 2026-12-02 | 86 | must start on 2026-12-01 | Bosch Infra |
| 88 | 5.1.3 | Application Day 1 / GoLive Activation – All Solar Apps |  | 1d | 2026-12-01 | 2026-12-01 | 86 | must start on 2026-12-01 | App Teams |
| 89 | 5.1.4 | Bosch TSA Residual Services Activated |  | 1d | 2026-12-01 | 2026-12-01 | 86 | must start on 2026-12-01 | Bosch IT; Buyer IT |
| 90 | 5.1.5 | User Go-Live Communication (Solar Business 2600 Users) |  | 1d | 2026-12-01 | 2026-12-01 | 86 | must start on 2026-12-01 | Comms; Bosch IT |
| 91 | 5.2 | **5.2 Hypercare – 90 Calendar Days (3 Months)** |  | 65d | 2026-12-01 | 2027-03-01 | 85 |  | All WS Leads; IT Ops |
| 92 | 5.2.1 | Daily Operations Review Meetings |  | 65d | 2026-12-01 | 2027-03-01 | 85 | must start on 2026-12-01 | IT PM; WS Leads |
| 93 | 5.2.2 | Incident Management and P1/P2 Issue Resolution |  | 65d | 2026-12-01 | 2027-03-01 | 85 | must start on 2026-12-01 | IT Ops; Help Desk |
| 94 | 5.2.3 | TSA SLA Compliance Monitoring |  | 65d | 2026-12-01 | 2027-03-01 | 85 | must start on 2026-12-01 | IT Ops |
| 95 | 5.2.4 | Hypercare Close – Formal Sign-Off (90 days from Day 1) | milestone | 0d | 2027-03-01 | 2027-03-01 | 92, 93, 94 | must start on 2027-03-01 | Steering Committee |
| 96 | 5.3 | **5.3 TSA Exit and Bosch Service Termination** |  | 40d | 2026-12-14 | 2027-02-05 | 85 |  | Bosch IT; Buyer IT |
| 97 | 5.3.1 | TSA Exit Planning per Service |  | 10d | 2026-12-14 | 2026-12-25 | 85 | must start on 2026-12-14 | IT PM; Bosch IT |
| 98 | 5.3.2 | TSA Service Exit – All 17 Sites |  | 20d | 2027-01-05 | 2027-02-01 | 97 | must start on 2027-01-05 | Bosch IT; Buyer IT |
| 99 | 5.3.3 | TSA Exit Confirmation (All Bosch Services Terminated) | milestone | 0d | 2027-02-05 | 2027-02-05 | 98 | must start on 2027-02-05 | Bosch; Buyer Executive |
| 100 | 6 | **Phase 6 - Programme Closure** |  | 61d | 2027-03-01 | 2027-05-28 | 95, 99 |  | IT PM; Erik Ho (BD/MIL-ICC) |
| 101 | 6.1 | Stabilisation Milestone – Hypercare and TSA Complete | milestone | 0d | 2027-03-01 | 2027-03-01 | 95, 99 | must start on 2027-03-01 | Steering Committee |
| 102 | 6.2 | **6.1 Closure Activities** |  | 60d | 2027-03-01 | 2027-05-26 | 101 |  | IT PM; All WS Leads |
| 103 | 6.2.1 | Lessons Learned Workshop |  | 3d | 2027-03-01 | 2027-03-03 | 101 | must start on 2027-03-01 | All WS Leads |
| 104 | 6.2.2 | Knowledge Transfer to Buyer IT Organisation |  | 20d | 2027-03-04 | 2027-03-31 | 103 | must start on 2027-03-04 | Bosch IT; Buyer IT |
| 105 | 6.2.3 | IT Contract and Asset Transfer Documentation |  | 20d | 2027-03-04 | 2027-03-31 | 103 | must start on 2027-03-04 | Legal; Finance; IT PM |
| 106 | 6.2.4 | Document Archiving – All Programme Records |  | 10d | 2027-04-07 | 2027-04-20 | 104, 105 | must start on 2027-04-07 | IT PM; Legal |
| 107 | 6.2.5 | Programme Closure Report |  | 10d | 2027-04-21 | 2027-05-02 | 106 | must start on 2027-04-21 | IT PM; Erik Ho (BD/MIL-ICC) |
| 108 | 6.2.6 | Final Programme Sign-Off | milestone | 0d | 2027-05-02 | 2027-05-02 | 107 | must start on 2027-05-02 | Executive Leadership |
| 109 | 6.3 | QG5 - Programme Closure Quality Gate | milestone | 0d | 2027-05-28 | 2027-05-28 | 102, 108 | must start on 2027-05-28 | Steering Committee |

Notes:
- 84: Resources: All Workstreams / Phase 5 spans Day 1 (GoLive) through 90-day hypercare to 01 Mar 2027
- 85: Resources: IT PM + Business
- 86: Resources: Executive Leadership / Day 1 = GoLive (same event). Solar IT fully separated from Bosch; legal separation effective
- 87: Resources: Bosch Infra
- 88: Resources: App Teams
- 89: Resources: Bosch IT + Buyer IT / TSA clock starts Day 1 (01 Dec 2026); Bosch-to-Solar residual services; TSA exit target May 2027
- 90: Resources: Comms + Bosch IT
- 91: Resources: All WS Leads + IT Ops / Hypercare period: Day 1 (01 Dec 2026) to 01 Mar 2027 = 90 calendar days
- 92: Resources: IT PM + WS Leads / Global standup cadence; focus on Solar systems stability during 90-day hypercare
- 93: Resources: IT Ops + Help Desk
- 94: Resources: IT Ops / Bosch residual TSA monitored throughout hypercare; full exit by QG5 (May 2027)
- 95: Resources: Steering Committee / Hypercare complete; 90 calendar days from GoLive / Day 1 (01 Dec 2026)
- 96: Resources: Bosch IT + Buyer IT
- 97: Resources: IT PM + Bosch IT / Define exit criteria and acceptance tests per remaining TSA service
- 98: Resources: Bosch IT + Buyer IT
- 99: Resources: Bosch + Buyer Executive
- 100: Resources: IT PM + Erik Ho (BD/MIL-ICC)
- 101: Resources: Steering Committee / Hypercare 90 days complete; TSA fully exited; Solar IT fully independent; proceed to programme closure
- 102: Resources: IT PM + All WS Leads
- 103: Resources: All WS Leads
- 104: Resources: Bosch IT + Buyer IT / Formal knowledge transfer for all Solar IT domains
- 105: Resources: Legal + Finance + IT PM
- 106: Resources: IT PM + Legal / All programme documents archived per Bosch standards; required before QG5 closure gate
- 107: Resources: IT PM + Erik Ho (BD/MIL-ICC)
- 108: Resources: Executive Leadership
- 109: Resources: Steering Committee / QG5 = completion gate. All docs archived; KT complete; contracts transferred; Solar IT handed over; Hamburger closed
