# Project Trinity

Schedule from MS Project XML, 2026-07-01 to 2029-12-31.

## Calendars

- Standard: Mon-Fri as the base calendar; Sat-Sun off.

## Resources

| Resource |
| --- |
| AM IT Team |
| AP IT Team |
| All WS |
| All WS Leads |
| All Workstreams |
| App Owners |
| App Teams |
| Asset Mgmt |
| Bosch |
| Bosch AD Team |
| Bosch Azure Team |
| Bosch BW Team |
| Bosch CIO |
| Bosch CISO |
| Bosch CWP |
| Bosch CWP Team |
| Bosch Cloud Team |
| Bosch Executive |
| Bosch HR |
| Bosch IAM |
| Bosch IAM Team |
| Bosch IT |
| Bosch IT Architects |
| Bosch IT Ops |
| Bosch IT Org Team |
| Bosch IT PM |
| Bosch ITSM |
| Bosch ITSM Team |
| Bosch Infra |
| Bosch Procurement |
| Bosch SAP |
| Bosch SAP Security |
| Bosch Telecom |
| Business |
| Business Key Users |
| Business Leads |
| CWP Team |
| Comms |
| Dev Teams |
| EMEA IT Team |
| ERP Architects |
| ERP Team |
| Executive Leadership |
| Facilities |
| Finance |
| Help Desk |
| IAM Team |
| IT |
| IT Ops |
| IT PM |
| Integration Team |
| JCI |
| JCI Architects |
| JCI CIO |
| JCI ERP Team |
| JCI HR IT |
| JCI IT |
| JCI IT Architects |
| JCI IT PM |
| JCI Infra |
| JCI Infra Team |
| JCI Management |
| JCI OT |
| JCI Procurement |
| JCI Senior Mgmt |
| JCI TSA Team |
| KPMG |
| Legal |
| Migration Partner |
| OT Security Team |
| PMO |
| Partners |
| Procurement |
| Production IT |
| Regional IT |
| Regional IT Leads |
| Regional WS Leads |
| SWS3 |
| Steering Committee |
| Test Manager |
| Test Team |
| WAN Provider |
| WAN Team |
| WS Leads |

## Schedule

| ID | WBS | Task | Type | Duration | Start | Finish | Predecessors | Resources |
| --- | --- | --- | --- | --- | --- | --- | --- | --- |
| 1 | 1 | **Phase 1 - Initialization** |  | 65d | 2026-07-01 | 2026-09-30 |  | Bosch IT; JCI IT; KPMG |
| 2 | 1.1 | **1.1 Project Setup and Governance** |  | 20d | 2026-07-01 | 2026-07-28 |  | Bosch IT PM; JCI IT PM |
| 3 | 1.1.1 | Appoint IT Project Leads (Bosch and JCI) |  | 10d | 2026-07-01 | 2026-07-14 |  | Bosch CIO; JCI CIO |
| 4 | 1.1.2 | Establish Steering Committee |  | 10d | 2026-07-07 | 2026-07-20 | 3 | Bosch; JCI Senior Mgmt |
| 5 | 1.1.3 | Define RACI and Governance Model |  | 10d | 2026-07-07 | 2026-07-20 | 3 | KPMG; IT PM |
| 6 | 1.1.4 | Set Up PMO Tools and SharePoint Collaboration Site |  | 15d | 2026-07-14 | 2026-08-03 | 3 | PMO; KPMG |
| 7 | 1.1.5 | Onboard External Consulting Partner |  | 20d | 2026-07-14 | 2026-08-10 | 3 | Procurement |
| 8 | 1.2 | **1.2 Initial IT Landscape Assessment** |  | 35d | 2026-07-21 | 2026-09-08 | 3 | JCI IT; Bosch IT |
| 9 | 1.2.1 | High-Level IT Inventory Request to JCI |  | 10d | 2026-07-21 | 2026-08-03 | 5 | Bosch IT PM |
| 10 | 1.2.2 | Location List - 180 Sites (AP / AM / EMEA) |  | 20d | 2026-07-28 | 2026-08-24 | 9 | JCI IT; Facilities |
| 11 | 1.2.3 | Legal Entity Identification (All Regions) |  | 20d | 2026-08-03 | 2026-08-28 | 9 | Legal; Finance |
| 12 | 1.2.4 | Identify Key IT Dependencies and JCI Shared Services |  | 25d | 2026-08-10 | 2026-09-11 | 10 | JCI IT Architects |
| 13 | 1.3 | **1.3 Project Charter and Scope Definition** |  | 25d | 2026-08-17 | 2026-09-18 | 8 | Bosch IT PM; KPMG |
| 14 | 1.3.1 | Draft Project Charter |  | 15d | 2026-08-17 | 2026-09-04 | 8 | KPMG; Bosch IT PM |
| 15 | 1.3.2 | Define Initial Scope Boundaries |  | 15d | 2026-08-24 | 2026-09-11 | 10 | KPMG; JCI IT |
| 16 | 1.3.3 | Guiding Principles Workshop (Bosch and JCI) |  | 5d | 2026-09-01 | 2026-09-05 | 14 | All WS Leads |
| 17 | 1.3.4 | TSA Framework Preliminary Definition (18-Month TSA) |  | 10d | 2026-09-01 | 2026-09-12 | 14 | Legal; IT PM |
| 18 | 1.3.5 | Project Charter Approval | milestone | 5d | 2026-09-15 | 2026-09-19 | 14, 15, 16, 17 | Steering Committee |
| 19 | 1.4 | QG1 - Initialization Quality Gate | milestone | 0d | 2026-09-30 | 2026-09-30 | 18 | Steering Committee |
| 20 | 2 | **Phase 2 - Concept** |  | 130d | 2026-10-01 | 2027-03-31 | 19 | All Workstreams; KPMG |
| 21 | 2.1 | **2.1 Detailed As-Is Analysis** |  | 60d | 2026-10-01 | 2026-12-23 | 19 | JCI IT; KPMG |
| 22 | 2.1.1 | Application Landscape Inventory (LeanIX / CMDB) ~500 Apps |  | 40d | 2026-10-01 | 2026-11-26 | 19 | JCI IT Architects; KPMG |
| 23 | 2.1.2 | IT Infrastructure As-Is Mapping (180 Sites) |  | 40d | 2026-10-01 | 2026-11-26 | 19 | JCI Infra Team |
| 24 | 2.1.3 | ERP Landscape Analysis (SAP and Non-SAP) |  | 40d | 2026-10-01 | 2026-11-26 | 19 | JCI ERP Team; KPMG |
| 25 | 2.1.4 | Data Ownership and Separation Rules |  | 30d | 2026-11-02 | 2026-12-11 | 22, 24 | KPMG; Legal |
| 26 | 2.1.5 | Contract and License Inventory |  | 40d | 2026-10-01 | 2026-11-26 | 19 | JCI Procurement; IT |
| 27 | 2.1.6 | HR IT Systems Mapping (8000 Employees) |  | 30d | 2026-10-01 | 2026-11-11 | 19 | JCI HR IT |
| 28 | 2.1.7 | OT and Production IT Assessment |  | 30d | 2026-10-15 | 2026-11-25 | 19 | JCI OT; Production IT |
| 29 | 2.1.8 | Country-Specific IT Requirements (Brazil China India Mexico) |  | 25d | 2026-10-19 | 2026-11-20 | 19 | Regional IT Leads |

Notes:
- 1: Resources: Bosch IT + JCI IT + KPMG
- 2: Resources: Bosch IT PM + JCI IT PM
- 3: Resources: Bosch CIO + JCI CIO
- 4: Resources: Bosch + JCI Senior Mgmt
- 5: Resources: KPMG + IT PM
- 6: Resources: PMO + KPMG
- 7: Resources: Procurement
- 8: Resources: JCI IT + Bosch IT / 180 sites across AP/AM/EMEA; AP and AM are the largest regions
- 9: Resources: Bosch IT PM
- 10: Resources: JCI IT + Facilities / AP and AM sites prioritised; collect full addresses and site types
- 11: Resources: Legal + Finance
- 12: Resources: JCI IT Architects
- 13: Resources: Bosch IT PM + KPMG
- 14: Resources: KPMG + Bosch IT PM
- 15: Resources: KPMG + JCI IT / ~8000 employees; ~6000 IT client devices; FRAME-comparable IT/ERP landscape
- 16: Resources: All WS Leads
- 17: Resources: Legal + IT PM / JCI operates all IT for Bosch during 18-month TSA period
- 18: Resources: Steering Committee
- 19: Resources: Steering Committee / All deliverables signed off; project charter approved; proceed to Concept
- 20: Resources: All Workstreams + KPMG
- 21: Resources: JCI IT + KPMG
- 22: Resources: JCI IT Architects + KPMG / Comparable to FRAME; use LeanIX as master landscape tool
- 23: Resources: JCI Infra Team / Site visits for top 20 locations; AP and AM hubs prioritised
- 24: Resources: JCI ERP Team + KPMG / FRAME-comparable SAP landscape
- 25: Resources: KPMG + Legal / Non-selective migration approach preferred (ref. FRAME)
- 26: Resources: JCI Procurement + IT / Change of control clauses; ~6000 device licenses
- 27: Resources: JCI HR IT / Country-by-country HR rules required
- 28: Resources: JCI OT + Production IT
- 29: Resources: Regional IT Leads / Brazil ERP tax complexity; China local FTS; India RBIN

| ID | WBS | Task | Type | Duration | Start | Finish | Predecessors | Resources |
| --- | --- | --- | --- | --- | --- | --- | --- | --- |
| 30 | 2.2 | **2.2 Merger Zone Architecture Design** |  | 60d | 2026-12-01 | 2027-02-19 | 22, 23 | Bosch IT Architects; KPMG |
| 31 | 2.2.1 | Merger Zone Concept and Design Workshop |  | 10d | 2026-12-01 | 2026-12-14 | 22 | Bosch; JCI Architects |
| 32 | 2.2.2 | WAN and LAN Architecture Design (180 Sites) |  | 20d | 2026-12-14 | 2027-01-11 | 31 | Bosch Infra; KPMG |
| 33 | 2.2.3 | Active Directory Design (Merger Zone) |  | 20d | 2026-12-14 | 2027-01-11 | 31 | Bosch AD Team |
| 34 | 2.2.4 | M365 and Azure Tenant Design |  | 20d | 2026-12-14 | 2027-01-11 | 31 | Bosch Azure Team |
| 35 | 2.2.5 | Co-Locator and Data Center Selection (per Region) |  | 30d | 2026-12-01 | 2027-01-13 | 22 | Bosch Procurement; IT |
| 36 | 2.2.6 | Security Architecture Design |  | 25d | 2027-01-11 | 2027-02-13 | 32, 33 | Bosch CISO |
| 37 | 2.2.7 | IAM and IdM Architecture Design |  | 20d | 2027-01-11 | 2027-02-05 | 33 | Bosch IAM Team |
| 38 | 2.3 | **2.3 Migration Strategy** |  | 45d | 2026-12-14 | 2027-02-12 | 22, 24 | KPMG; All WS Leads |
| 39 | 2.3.1 | Carve-Out Model Selection (Stand Alone) |  | 10d | 2026-12-14 | 2026-12-25 | 22 | Bosch; JCI Management |
| 40 | 2.3.2 | ERP Migration Strategy (Relocation vs Split vs Greenfield) |  | 20d | 2026-12-28 | 2027-01-22 | 39 | ERP Architects; KPMG |
| 41 | 2.3.3 | Application Categorization and Wave Planning (~500 Apps) |  | 25d | 2027-01-04 | 2027-02-05 | 22, 39 | KPMG; WS Leads |
| 42 | 2.3.4 | Data Separation Rules Finalized |  | 15d | 2027-01-11 | 2027-01-29 | 25 | KPMG; Legal |
| 43 | 2.3.5 | TSA Service Catalog Definition (18-Month JCI Services) |  | 25d | 2027-01-11 | 2027-02-12 | 39 | JCI IT; Bosch IT |
| 44 | 2.3.6 | Merger Zone to Bosch Migration Strategy |  | 20d | 2027-01-25 | 2027-02-19 | 40, 41 | Bosch IT Architects |
| 45 | 2.4 | **2.4 Client Device and Workplace Strategy** |  | 20d | 2027-01-11 | 2027-02-05 | 22 | Bosch CWP Team |
| 46 | 2.4.1 | Client Device Inventory (~6000 Devices) |  | 10d | 2027-01-11 | 2027-01-22 | 22 | JCI IT; Asset Mgmt |
| 47 | 2.4.2 | Client Migration Approach (Reimaging vs In-Place) |  | 10d | 2027-01-23 | 2027-02-05 | 46 | Bosch CWP Team |
| 48 | 2.5 | **2.5 Planning and Baseline** |  | 25d | 2027-02-22 | 2027-03-26 | 38, 30 | KPMG; IT PM |
| 49 | 2.5.1 | Detailed Project Plan Development |  | 20d | 2027-02-22 | 2027-03-19 | 38, 30 | KPMG; IT PM |
| 50 | 2.5.2 | Risk Register Baseline |  | 15d | 2027-02-22 | 2027-03-12 | 38 | KPMG; All WS Leads |
| 51 | 2.5.3 | OPL Establishment |  | 10d | 2027-03-01 | 2027-03-12 | 49 | PMO |
| 52 | 2.5.4 | Resource Plan and Budget |  | 15d | 2027-03-02 | 2027-03-20 | 49 | Finance; IT PM |
| 53 | 2.6 | QG2 - Concept Quality Gate | milestone | 0d | 2027-03-31 | 2027-03-31 | 48, 44, 43 | Steering Committee |

Notes:
- 30: Resources: Bosch IT Architects + KPMG
- 31: Resources: Bosch + JCI Architects / Temporary environment to receive all JCI IT services and applications
- 32: Resources: Bosch Infra + KPMG / Regional hub model: AP hub + AM hub + EMEA hub
- 33: Resources: Bosch AD Team
- 34: Resources: Bosch Azure Team / 6000+ mailboxes and OneDrive migration scope
- 35: Resources: Bosch Procurement + IT / Recommend 3 regional co-locators: AP / AM / EMEA
- 36: Resources: Bosch CISO
- 37: Resources: Bosch IAM Team
- 38: Resources: KPMG + All WS Leads
- 39: Resources: Bosch + JCI Management / JCI full carve-out; Merger Zone as interim state before Bosch integration
- 40: Resources: ERP Architects + KPMG
- 41: Resources: KPMG + WS Leads / Sort: keep/replace/no-action; assign to migration waves
- 42: Resources: KPMG + Legal
- 43: Resources: JCI IT + Bosch IT / Catalog all JCI services; define exit criteria per service
- 44: Resources: Bosch IT Architects / Post-TSA migration roadmap
- 45: Resources: Bosch CWP Team
- 46: Resources: JCI IT + Asset Mgmt / Identify device age; out-of-support hardware replacement plan
- 47: Resources: Bosch CWP Team / ~6000 clients across 180 sites; wave-based by region
- 48: Resources: KPMG + IT PM
- 49: Resources: KPMG + IT PM
- 50: Resources: KPMG + All WS Leads
- 51: Resources: PMO
- 52: Resources: Finance + IT PM
- 53: Resources: Steering Committee / Architecture approved; migration strategy confirmed; TSA catalog accepted; proceed to Development

| ID | WBS | Task | Duration | Start | Finish | Predecessors | Resources |
| --- | --- | --- | --- | --- | --- | --- | --- |
| 54 | 3 | **Phase 3 - Development** | 175d | 2027-04-01 | 2027-11-28 | 53 | All Workstreams |
| 55 | 3.1 | **3.1 Merger Zone Infrastructure Build** | 120d | 2027-04-01 | 2027-09-16 | 53 | Bosch Infra; Partners |
| 56 | 3.1.1 | WAN Provider Selection and Ordering (180 Sites) | 20d | 2027-04-01 | 2027-04-28 | 53 | Bosch Procurement |
| 57 | 3.1.2 | Co-Locator Data Center Procurement (3 Regions) | 40d | 2027-04-01 | 2027-05-28 | 53 | Bosch Infra |
| 58 | 3.1.3 | Active Directory Build (Merger Zone) | 30d | 2027-04-29 | 2027-06-10 | 56 | Bosch AD Team |
| 59 | 3.1.4 | WAN Implementation - EMEA Sites | 40d | 2027-05-17 | 2027-07-09 | 56 | WAN Provider; Bosch Infra |
| 60 | 3.1.5 | WAN Implementation - AP Sites | 50d | 2027-05-17 | 2027-07-23 | 56 | WAN Provider; Bosch Infra |
| 61 | 3.1.6 | WAN Implementation - AM Sites | 50d | 2027-05-17 | 2027-07-23 | 56 | WAN Provider; Bosch Infra |
| 62 | 3.1.7 | LAN and WiFi Setup (Top 30 Sites) | 40d | 2027-06-14 | 2027-08-06 | 58 | Bosch Infra |
| 63 | 3.1.8 | Server Infrastructure Build (Merger Zone - 3 Regional DCs) | 40d | 2027-05-17 | 2027-07-09 | 57 | Bosch Infra |
| 64 | 3.1.9 | M365 Tenant Provisioning (6000+ Mailboxes) | 30d | 2027-05-17 | 2027-06-27 | 53 | Bosch Azure Team |
| 65 | 3.1.10 | Azure and Cloud Environment Setup | 30d | 2027-06-28 | 2027-08-08 | 64 | Bosch Cloud Team |
| 66 | 3.1.11 | Telephony Setup Merger Zone (180 Sites) | 20d | 2027-06-14 | 2027-07-10 | 59, 60, 61 | Bosch Telecom |
| 67 | 3.1.12 | File Share Infrastructure (NAS / Cloud) | 20d | 2027-06-14 | 2027-07-10 | 63 | Bosch Infra |
| 68 | 3.1.13 | Backup and Archiving Setup | 15d | 2027-07-12 | 2027-07-30 | 63 | Bosch Infra |
| 69 | 3.2 | **3.2 ERP and SAP Development** | 110d | 2027-04-01 | 2027-09-02 | 53 | ERP Team; Migration Partner |
| 70 | 3.2.1 | SAP System Landscape Analysis | 20d | 2027-04-01 | 2027-04-28 | 53 | ERP Architects |
| 71 | 3.2.2 | SAP Shell Copy Preparation (Merger Zone) | 40d | 2027-04-29 | 2027-06-25 | 70 | Migration Partner; Bosch SAP |
| 72 | 3.2.3 | SAP Interface Identification and Adaptation Plan | 30d | 2027-04-29 | 2027-06-11 | 70 | ERP Team |
| 73 | 3.2.4 | SAP Authorization Concept (Disconnect from JCI IdM) | 25d | 2027-06-12 | 2027-07-16 | 71 | Bosch SAP Security |
| 74 | 3.2.5 | BW and Reporting Setup | 30d | 2027-06-26 | 2027-08-07 | 71 | Bosch BW Team |
| 75 | 3.2.6 | EDI and Integration Setup | 30d | 2027-06-26 | 2027-08-07 | 72 | Integration Team |
| 76 | 3.2.7 | ERP Test Environment Setup (SIT and UAT) | 20d | 2027-07-17 | 2027-08-13 | 71 | Migration Partner; Bosch SAP |
| 77 | 3.3 | **3.3 Application Migration Preparation (~500 Apps)** | 90d | 2027-04-01 | 2027-08-06 | 53 | SWS3; KPMG |
| 78 | 3.3.1 | Application Inventory Finalization | 20d | 2027-04-01 | 2027-04-28 | 53 | KPMG; JCI IT |
| 79 | 3.3.2 | Application Grouping into Migration Waves | 15d | 2027-04-29 | 2027-05-19 | 78 | KPMG; WS Leads |
| 80 | 3.3.3 | Migration Package Development per Wave | 40d | 2027-05-20 | 2027-07-14 | 79 | SWS3; App Owners |
| 81 | 3.3.4 | Custom Application Adaptation for Merger Zone | 30d | 2027-06-14 | 2027-07-25 | 79 | Dev Teams |
| 82 | 3.3.5 | Integration Development (APIs and Interfaces) | 30d | 2027-06-14 | 2027-07-25 | 79 | Integration Team |

Notes:
- 54: Resources: All Workstreams
- 55: Resources: Bosch Infra + Partners
- 56: Resources: Bosch Procurement / Order immediately after QG2 - 4-6 month lead time for all sites
- 57: Resources: Bosch Infra / AP + AM + EMEA co-locators
- 58: Resources: Bosch AD Team / Foundation for 6000+ client and application migrations
- 59: Resources: WAN Provider + Bosch Infra
- 60: Resources: WAN Provider + Bosch Infra / Largest region; stagger by country
- 61: Resources: WAN Provider + Bosch Infra / Largest region; US hubs first
- 62: Resources: Bosch Infra / Remaining 150 sites use existing JCI LAN under TSA
- 63: Resources: Bosch Infra
- 64: Resources: Bosch Azure Team
- 65: Resources: Bosch Cloud Team
- 66: Resources: Bosch Telecom / Phone number porting 4-8 weeks per site per operator
- 67: Resources: Bosch Infra / User documents for ~8000 employees
- 68: Resources: Bosch Infra
- 69: Resources: ERP Team + Migration Partner
- 70: Resources: ERP Architects
- 71: Resources: Migration Partner + Bosch SAP
- 72: Resources: ERP Team
- 73: Resources: Bosch SAP Security
- 74: Resources: Bosch BW Team
- 75: Resources: Integration Team
- 76: Resources: Migration Partner + Bosch SAP
- 77: Resources: SWS3 + KPMG
- 78: Resources: KPMG + JCI IT / Validate LeanIX entries; add local/regional apps
- 79: Resources: KPMG + WS Leads / Wave 1: critical; Wave 2: standard; Wave 3: remaining
- 80: Resources: SWS3 + App Owners
- 81: Resources: Dev Teams
- 82: Resources: Integration Team

| ID | WBS | Task | Type | Duration | Start | Finish | Predecessors | Resources |
| --- | --- | --- | --- | --- | --- | --- | --- | --- |
| 83 | 3.4 | **3.4 Client Workplace - 6000 Device Migration Prep** |  | 60d | 2027-04-01 | 2027-06-25 | 53 | Bosch CWP Team |
| 84 | 3.4.1 | Client Software Management Setup (SCCM / Intune) |  | 20d | 2027-04-01 | 2027-04-28 | 53 | Bosch CWP |
| 85 | 3.4.2 | Device Reimaging Standard and Packaging (~6000 Devices) |  | 30d | 2027-04-29 | 2027-06-11 | 84 | Bosch CWP |
| 86 | 3.4.3 | Regional Wave Plan - Client Migration (AP AM EMEA) |  | 15d | 2027-05-01 | 2027-05-21 | 84 | Bosch CWP; IT PM |
| 87 | 3.4.4 | User Profile and OneDrive Migration Tooling Setup |  | 20d | 2027-05-22 | 2027-06-18 | 85 | Bosch Azure Team |
| 88 | 3.5 | **3.5 Security and IAM** |  | 80d | 2027-04-01 | 2027-07-19 | 53 | Bosch CISO; IAM Team |
| 89 | 3.5.1 | IAM Solution Deployment (Identity Provider) |  | 40d | 2027-04-01 | 2027-05-28 | 53 | Bosch IAM |
| 90 | 3.5.2 | IT Security Concept Finalization (incl. External Assessment) |  | 20d | 2027-05-29 | 2027-06-25 | 89 | Bosch CISO |
| 91 | 3.5.3 | OT Security Assessment and Remediation |  | 30d | 2027-05-01 | 2027-06-11 | 53 | OT Security Team |
| 92 | 3.5.4 | CMDB Setup (ServiceNow) - 6000 Assets |  | 30d | 2027-05-29 | 2027-07-09 | 89 | Bosch ITSM Team |
| 93 | 3.6 | **3.6 IT Organization and Operations Setup** |  | 80d | 2027-04-01 | 2027-07-19 | 53 | Bosch IT Org Team |
| 94 | 3.6.1 | Bosch IT Org Structure (8000 Employees / 180 Sites) |  | 20d | 2027-04-01 | 2027-04-28 | 53 | Bosch HR; IT |
| 95 | 3.6.2 | MSP and ITO Contracting (Field Support 180 Sites) |  | 40d | 2027-04-29 | 2027-06-25 | 94 | Bosch Procurement |
| 96 | 3.6.3 | ITSM and ServiceNow Configuration |  | 30d | 2027-05-29 | 2027-07-09 | 92 | Bosch ITSM |
| 97 | 3.6.4 | Help Desk Setup and Staffing (Multi-Region 24x5) |  | 20d | 2027-06-26 | 2027-07-23 | 95 | Bosch IT Ops |
| 98 | 3.7 | **3.7 TSA Framework Finalization** |  | 60d | 2027-04-01 | 2027-06-25 | 53 | JCI IT; Legal |
| 99 | 3.7.1 | TSA Service Descriptions Finalized (All 180 Sites) |  | 30d | 2027-04-01 | 2027-05-13 | 53 | JCI IT; Bosch IT |
| 100 | 3.7.2 | TSA SLA and KPI Framework |  | 20d | 2027-05-14 | 2027-06-10 | 99 | IT PM; Legal |
| 101 | 3.7.3 | TSA Governance Model (Monthly Reviews and Reporting) |  | 15d | 2027-06-11 | 2027-07-01 | 100 | IT PM |
| 102 | 3.7.4 | TSA Contracts Legal Review and Finalization |  | 20d | 2027-06-11 | 2027-07-08 | 100 | Legal |
| 103 | 3.8 | QG3 - Development Quality Gate | milestone | 0d | 2027-11-28 | 2027-11-28 | 55, 69, 77, 83, 88, 93, 98 | Steering Committee |
| 104 | 4 | **Phase 4 - Implementation** |  | 152d | 2027-12-01 | 2028-06-30 | 103 | All Workstreams |
| 105 | 4.1 | **4.1 Infrastructure Migration to Merger Zone (180 Sites)** |  | 90d | 2027-12-01 | 2028-04-04 | 103 | Bosch Infra; Partners |
| 106 | 4.1.1 | WAN Cutover - EMEA Sites Batch 1 |  | 20d | 2027-12-01 | 2027-12-28 | 103 | WAN Team; JCI Infra |
| 107 | 4.1.2 | WAN Cutover - AP Sites Batch 1 (Major Hubs) |  | 20d | 2027-12-01 | 2027-12-28 | 103 | WAN Team; JCI Infra |
| 108 | 4.1.3 | WAN Cutover - AM Sites Batch 1 (Major Hubs) |  | 20d | 2027-12-01 | 2027-12-28 | 103 | WAN Team; JCI Infra |
| 109 | 4.1.4 | WAN Cutover - AP Sites Batch 2 (Remaining) |  | 20d | 2028-01-04 | 2028-01-31 | 107 | WAN Team; JCI Infra |
| 110 | 4.1.5 | WAN Cutover - AM Sites Batch 2 (Remaining) |  | 20d | 2028-01-04 | 2028-01-31 | 108 | WAN Team; JCI Infra |
| 111 | 4.1.6 | WAN Cutover - EMEA Sites Batch 2 (Remaining) |  | 20d | 2028-01-04 | 2028-01-31 | 106 | WAN Team; JCI Infra |
| 112 | 4.1.7 | File Share Migration to Merger Zone (~8000 Users) |  | 30d | 2028-01-04 | 2028-02-14 | 106 | Bosch Infra |
| 113 | 4.1.8 | Telephony Cutover to Merger Zone (180 Sites) |  | 40d | 2028-01-18 | 2028-03-14 | 109, 110, 111 | Bosch Telecom |

Notes:
- 83: Resources: Bosch CWP Team
- 84: Resources: Bosch CWP
- 85: Resources: Bosch CWP
- 86: Resources: Bosch CWP + IT PM / AP Wave A+B; AM Wave A+B; EMEA Wave A
- 87: Resources: Bosch Azure Team
- 88: Resources: Bosch CISO + IAM Team
- 89: Resources: Bosch IAM
- 90: Resources: Bosch CISO
- 91: Resources: OT Security Team
- 92: Resources: Bosch ITSM Team
- 93: Resources: Bosch IT Org Team
- 94: Resources: Bosch HR + IT / Regional IT leads for AP / AM / EMEA
- 95: Resources: Bosch Procurement / On-site support for AP and AM sites
- 96: Resources: Bosch ITSM
- 97: Resources: Bosch IT Ops / Multilingual support for AP / AM / EMEA time zones
- 98: Resources: JCI IT + Legal
- 99: Resources: JCI IT + Bosch IT
- 100: Resources: IT PM + Legal
- 101: Resources: IT PM
- 102: Resources: Legal
- 103: Resources: Steering Committee / Merger Zone ready; ERP built; app packages ready; 6000 devices packaged; TSA contracts signed
- 104: Resources: All Workstreams
- 105: Resources: Bosch Infra + Partners
- 106: Resources: WAN Team + JCI Infra
- 107: Resources: WAN Team + JCI Infra / AP largest region; hub-first approach
- 108: Resources: WAN Team + JCI Infra
- 109: Resources: WAN Team + JCI Infra
- 110: Resources: WAN Team + JCI Infra
- 111: Resources: WAN Team + JCI Infra
- 112: Resources: Bosch Infra / User documents and shared drives
- 113: Resources: Bosch Telecom / Staggered by site; 4-8 weeks per operator

| ID | WBS | Task | Type | Duration | Start | Finish | Predecessors | Resources |
| --- | --- | --- | --- | --- | --- | --- | --- | --- |
| 114 | 4.2 | **4.2 Client Device Migration - 6000 Devices** |  | 100d | 2027-12-01 | 2028-04-19 | 103 | Bosch CWP; Regional IT |
| 115 | 4.2.1 | Client Migration Wave 1 - AP Region Hub Sites |  | 30d | 2027-12-01 | 2028-01-12 | 103 | AP IT Team |
| 116 | 4.2.2 | Client Migration Wave 2 - AM Region Hub Sites |  | 30d | 2027-12-01 | 2028-01-12 | 103 | AM IT Team |
| 117 | 4.2.3 | Client Migration Wave 3 - EMEA Sites |  | 25d | 2028-01-13 | 2028-02-16 | 115 | EMEA IT Team |
| 118 | 4.2.4 | Client Migration Wave 4 - AP Region Remaining Sites |  | 30d | 2028-01-13 | 2028-02-23 | 115 | AP IT Team |
| 119 | 4.2.5 | Client Migration Wave 5 - AM Region Remaining Sites |  | 30d | 2028-01-13 | 2028-02-23 | 116 | AM IT Team |
| 120 | 4.2.6 | Client Migration Wave 6 - Stragglers and Exceptions |  | 20d | 2028-02-26 | 2028-03-22 | 117, 118, 119 | CWP Team |
| 121 | 4.2.7 | Email and M365 Mailbox Migration (6000+ Mailboxes) |  | 45d | 2027-12-29 | 2028-02-29 | 106 | Bosch Azure Team |
| 122 | 4.2.8 | OneDrive and User Document Migration |  | 30d | 2028-01-18 | 2028-02-29 | 121 | Bosch Azure Team |
| 123 | 4.3 | **4.3 ERP Migration to Merger Zone** |  | 90d | 2027-12-01 | 2028-04-04 | 103 | ERP Team; Migration Partner |
| 124 | 4.3.1 | SAP Shell Copy Execution - Test Run |  | 20d | 2027-12-01 | 2027-12-28 | 103 | Migration Partner; Bosch SAP |
| 125 | 4.3.2 | SAP System Integration Test 1 (SIT1) |  | 25d | 2028-01-04 | 2028-02-07 | 124 | ERP Team; Business |
| 126 | 4.3.3 | SAP Shell Copy Execution - Production Prep |  | 15d | 2028-02-08 | 2028-02-28 | 125 | Migration Partner; Bosch SAP |
| 127 | 4.3.4 | SAP System Integration Test 2 (SIT2) |  | 25d | 2028-03-01 | 2028-04-04 | 126 | ERP Team; Business |
| 128 | 4.3.5 | Business User Acceptance Testing (UAT) |  | 20d | 2028-03-11 | 2028-04-05 | 127 | Business Key Users |
| 129 | 4.3.6 | UAT Sign-Off | milestone | 0d | 2028-04-05 | 2028-04-05 | 128 | Business Leads; IT PM |
| 130 | 4.4 | **4.4 Application Migration to Merger Zone** |  | 90d | 2027-12-01 | 2028-04-04 | 103 | SWS3; App Teams |
| 131 | 4.4.1 | Wave 1 Application Migration - Critical Business Apps |  | 25d | 2027-12-01 | 2028-01-05 | 103 | App Teams; KPMG |
| 132 | 4.4.2 | Wave 2 Application Migration - Standard Apps |  | 30d | 2028-01-08 | 2028-02-16 | 131 | App Teams |
| 133 | 4.4.3 | Wave 3 Application Migration - Remaining and Local Apps |  | 30d | 2028-02-19 | 2028-03-29 | 132 | App Teams |
| 134 | 4.4.4 | End-to-End Integration Testing |  | 20d | 2028-03-01 | 2028-03-28 | 132 | Test Team; Business |
| 135 | 4.4.5 | Regression Testing Sign-Off | milestone | 0d | 2028-04-04 | 2028-04-04 | 133, 134 | Test Manager |
| 136 | 4.5 | **4.5 Signing and Legal Closeout** |  | 50d | 2028-02-12 | 2028-04-19 | 105 | Legal; Finance |
| 137 | 4.5.1 | Legal Entity Structure Finalization (All Regions) |  | 20d | 2028-02-12 | 2028-03-11 | 105 | Legal |
| 138 | 4.5.2 | TSA Contracts Finalized and Signed |  | 15d | 2028-03-12 | 2028-04-01 | 137 | Legal; JCI |
| 139 | 4.5.3 | License Transfer Agreements Executed (~6000 Devices) |  | 15d | 2028-03-12 | 2028-04-01 | 137 | Procurement; Legal |
| 140 | 4.5.4 | Change of Control Notifications to Vendors |  | 10d | 2028-04-02 | 2028-04-15 | 139 | Procurement |
| 141 | 4.5.5 | Signing - SPA and APA Execution | milestone | 0d | 2028-04-19 | 2028-04-19 | 138, 140 | Executive Leadership |
| 142 | 4.5.6 | Frozen Zone Begins (Minimize Production Changes) | milestone | 0d | 2028-04-19 | 2028-04-19 | 141 | IT PM |

Notes:
- 114: Resources: Bosch CWP + Regional IT
- 115: Resources: AP IT Team / ~900 devices (AP hubs)
- 116: Resources: AM IT Team / ~900 devices (AM hubs)
- 117: Resources: EMEA IT Team / ~700 devices
- 118: Resources: AP IT Team / ~1500 devices
- 119: Resources: AM IT Team / ~1500 devices
- 120: Resources: CWP Team / ~500 devices; special handling
- 121: Resources: Bosch Azure Team / Migrate in batches aligned with client waves
- 122: Resources: Bosch Azure Team
- 123: Resources: ERP Team + Migration Partner
- 124: Resources: Migration Partner + Bosch SAP
- 125: Resources: ERP Team + Business
- 126: Resources: Migration Partner + Bosch SAP
- 127: Resources: ERP Team + Business
- 128: Resources: Business Key Users
- 129: Resources: Business Leads + IT PM
- 130: Resources: SWS3 + App Teams
- 131: Resources: App Teams + KPMG
- 132: Resources: App Teams
- 133: Resources: App Teams / Regional apps (AP / AM / EMEA) included
- 134: Resources: Test Team + Business
- 135: Resources: Test Manager
- 136: Resources: Legal + Finance
- 137: Resources: Legal
- 138: Resources: Legal + JCI
- 139: Resources: Procurement + Legal
- 140: Resources: Procurement
- 141: Resources: Executive Leadership
- 142: Resources: IT PM / No production changes without SteerCo approval from this point

| ID | WBS | Task | Type | Duration | Start | Finish | Predecessors | Resources |
| --- | --- | --- | --- | --- | --- | --- | --- | --- |
| 143 | 4.6 | **4.6 Day 1 Cutover Preparation** |  | 40d | 2028-04-22 | 2028-06-14 | 129, 135, 141 | IT PM; All WS |
| 144 | 4.6.1 | Cutover Plan Finalization |  | 15d | 2028-04-22 | 2028-05-10 | 142 | IT PM; WS Leads |
| 145 | 4.6.2 | End-User Communication Plan (8000 Users / 180 Sites) |  | 20d | 2028-05-13 | 2028-06-07 | 144 | Comms; Regional IT |
| 146 | 4.6.3 | Dress Rehearsal and Cutover Simulation |  | 5d | 2028-06-03 | 2028-06-07 | 144 | All WS Leads |
| 147 | 4.6.4 | Help Desk 24x7 Activation and Training |  | 10d | 2028-06-03 | 2028-06-14 | 144 | IT Ops |
| 148 | 4.6.5 | Go No-Go Readiness Assessment | milestone | 0d | 2028-06-14 | 2028-06-14 | 145, 146, 147 | Steering Committee |
| 149 | 4.7 | QG4 - Implementation Quality Gate | milestone | 0d | 2028-06-28 | 2028-06-28 | 123, 130, 143 | Steering Committee |
| 150 | 5 | **Phase 5 - GoLive and Hypercare (90 Days)** |  | 65d | 2028-07-01 | 2028-09-30 | 149 | All Workstreams |
| 151 | 5.1 | **5.1 Day 1 Closing Activities** |  | 5d | 2028-07-01 | 2028-07-05 | 149 | IT PM; Business |
| 152 | 5.1.1 | Day 1 - Closing (Legal Transfer of JCI Business to Bosch) | milestone | 0d | 2028-07-01 | 2028-07-01 | 149 | Executive Leadership |
| 153 | 5.1.2 | Network Domain Cutover to Merger Zone |  | 2d | 2028-07-01 | 2028-07-02 | 152 | Bosch Infra |
| 154 | 5.1.3 | ERP Day 1 Go-Live Activation |  | 2d | 2028-07-01 | 2028-07-02 | 152 | ERP Team |
| 155 | 5.1.4 | Application Day 1 Activation (All Regions) |  | 2d | 2028-07-01 | 2028-07-02 | 152 | App Teams |
| 156 | 5.1.5 | TSA Services Activation - JCI Begins Operating IT for Bosch |  | 1d | 2028-07-01 | 2028-07-01 | 152 | JCI IT; Bosch IT |
| 157 | 5.1.6 | User Announcement and Go-Live Communication (8000 Users) |  | 1d | 2028-07-01 | 2028-07-01 | 152 | Comms; Regional IT |
| 158 | 5.1.7 | Help Desk 24x7 Live (Multi-Region) |  | 1d | 2028-07-01 | 2028-07-01 | 152 | IT Ops |
| 159 | 5.2 | **5.2 Hypercare - 90 Calendar Days** |  | 65d | 2028-07-01 | 2028-09-30 | 151 | All WS Leads; IT Ops |
| 160 | 5.2.1 | Daily Operations Review Meetings (Regional Standups) |  | 65d | 2028-07-01 | 2028-09-30 | 151 | IT PM; Regional WS Leads |
| 161 | 5.2.2 | Incident Management and P1/P2 Issue Resolution |  | 65d | 2028-07-01 | 2028-09-30 | 151 | IT Ops; Help Desk |
| 162 | 5.2.3 | Performance Monitoring and TSA SLA Tracking |  | 65d | 2028-07-01 | 2028-09-30 | 151 | IT Ops |
| 163 | 5.2.4 | Issue Backlog Management and Prioritization |  | 65d | 2028-07-01 | 2028-09-30 | 151 | IT PM |
| 164 | 5.2.5 | Hypercare Close - Formal Sign-Off | milestone | 0d | 2028-09-30 | 2028-09-30 | 160, 161, 162, 163 | Steering Committee |
| 165 | 5.3 | QG5 - GoLive Quality Gate | milestone | 0d | 2028-09-30 | 2028-09-30 | 164 | Steering Committee |
| 166 | 6 | **Phase 6 - Stabilization and TSA Exit** |  | 330d | 2028-10-01 | 2029-12-31 | 165 | All Workstreams; JCI |
| 167 | 6.1 | **6.1 Stabilization and Knowledge Transfer** |  | 130d | 2028-10-01 | 2029-03-28 | 165 | IT PM; JCI TSA Team |
| 168 | 6.1.1 | TSA Governance - Monthly Service Reviews (JCI) |  | 130d | 2028-10-01 | 2029-03-28 | 165 | IT PM; JCI IT |
| 169 | 6.1.2 | Performance Optimization (Merger Zone Operations) |  | 60d | 2028-10-01 | 2028-12-24 | 165 | IT Ops |
| 170 | 6.1.3 | Knowledge Transfer - JCI to Bosch (Runbooks Processes Docs) |  | 90d | 2028-10-01 | 2029-02-07 | 165 | JCI IT; Bosch IT |
| 171 | 6.1.4 | Bosch IT Environment Preparation for Integration |  | 60d | 2028-10-01 | 2028-12-24 | 165 | Bosch IT Architects |
| 172 | 6.1.5 | Bosch Network Integration Planning (180 Sites) |  | 30d | 2028-12-02 | 2029-01-14 | 171 | Bosch Infra |

Notes:
- 143: Resources: IT PM + All WS
- 144: Resources: IT PM + WS Leads
- 145: Resources: Comms + Regional IT / Multi-language; AP + AM + EMEA
- 146: Resources: All WS Leads
- 147: Resources: IT Ops / Multi-region time zone coverage
- 148: Resources: Steering Committee
- 149: Resources: Steering Committee / 6000 clients migrated; ERP live in MZ; apps live in MZ; UAT passed; cutover plan approved
- 150: Resources: All Workstreams
- 151: Resources: IT PM + Business
- 152: Resources: Executive Leadership
- 153: Resources: Bosch Infra
- 154: Resources: ERP Team
- 155: Resources: App Teams
- 156: Resources: JCI IT + Bosch IT / 18-month TSA clock starts 01 Jul 2028; expires 31 Dec 2029
- 157: Resources: Comms + Regional IT
- 158: Resources: IT Ops
- 159: Resources: All WS Leads + IT Ops
- 160: Resources: IT PM + Regional WS Leads / AP + AM + EMEA standup cadence
- 161: Resources: IT Ops + Help Desk
- 162: Resources: IT Ops / JCI SLA compliance tracked from Day 1
- 163: Resources: IT PM
- 164: Resources: Steering Committee
- 165: Resources: Steering Committee / Hypercare complete; P1/P2 resolved; SLA baseline established; stabilization can begin
- 166: Resources: All Workstreams + JCI / JCI TSA expires 31 Dec 2029 (18 months from Day 1 on 01 Jul 2028)
- 167: Resources: IT PM + JCI TSA Team
- 168: Resources: IT PM + JCI IT / Monthly reviews; track against SLA and service exit criteria
- 169: Resources: IT Ops
- 170: Resources: JCI IT + Bosch IT / All 180 sites; AP and AM priority
- 171: Resources: Bosch IT Architects
- 172: Resources: Bosch Infra

| ID | WBS | Task | Type | Duration | Start | Finish | Predecessors | Resources |
| --- | --- | --- | --- | --- | --- | --- | --- | --- |
| 173 | 6.2 | **6.2 Migration - Merger Zone to Bosch Environment** |  | 150d | 2029-01-15 | 2029-08-14 | 167, 172 | Bosch IT; App Teams |
| 174 | 6.2.1 | Bosch AD Integration and Identity Federation |  | 30d | 2029-01-15 | 2029-02-25 | 172 | Bosch IAM |
| 175 | 6.2.2 | ERP Integration with Bosch Systems |  | 40d | 2029-02-26 | 2029-04-22 | 174 | ERP Team |
| 176 | 6.2.3 | Client Re-Migration to Bosch Domain (6000 Devices) |  | 45d | 2029-02-26 | 2029-04-29 | 174 | Bosch CWP |
| 177 | 6.2.4 | Application Migration Wave 1 - Merger Zone to Bosch |  | 30d | 2029-02-26 | 2029-04-08 | 174 | App Teams |
| 178 | 6.2.5 | Application Migration Wave 2 - Merger Zone to Bosch |  | 30d | 2029-04-09 | 2029-05-20 | 177 | App Teams |
| 179 | 6.2.6 | Application Migration Wave 3 - Merger Zone to Bosch |  | 30d | 2029-05-21 | 2029-07-01 | 178 | App Teams |
| 180 | 6.2.7 | M365 Tenant Migration to Bosch M365 (6000 Mailboxes) |  | 30d | 2029-04-09 | 2029-05-20 | 174 | Bosch Azure Team |
| 181 | 6.2.8 | Network Integration to Bosch Backbone (180 Sites) |  | 30d | 2029-06-02 | 2029-07-11 | 178 | Bosch Infra |
| 182 | 6.3 | **6.3 TSA Exit - Wave-Based Service Termination** |  | 100d | 2029-07-02 | 2029-11-14 | 173, 181 | JCI IT; Bosch IT |
| 183 | 6.3.1 | TSA Exit Planning per Service (All JCI Services) |  | 15d | 2029-07-02 | 2029-07-22 | 181 | IT PM; JCI |
| 184 | 6.3.2 | TSA Service Exit Wave 1 - Infrastructure Services |  | 25d | 2029-07-23 | 2029-08-26 | 183 | JCI IT; Bosch IT |
| 185 | 6.3.3 | TSA Service Exit Wave 2 - Application Services |  | 25d | 2029-08-27 | 2029-09-30 | 184 | JCI IT; Bosch IT |
| 186 | 6.3.4 | TSA Service Exit Wave 3 - Final Remaining Services |  | 25d | 2029-10-01 | 2029-11-04 | 185 | JCI IT; Bosch IT |
| 187 | 6.3.5 | TSA Exit Confirmation (All JCI Services Terminated) | milestone | 0d | 2029-11-14 | 2029-11-14 | 186 | JCI; Bosch Executive |
| 188 | 6.4 | **6.4 Project Closure** |  | 30d | 2029-11-17 | 2029-12-29 | 187 | IT PM; KPMG |
| 189 | 6.4.1 | Lessons Learned Workshop (All Regions) |  | 5d | 2029-11-17 | 2029-11-21 | 187 | All WS Leads |
| 190 | 6.4.2 | Project Closure Report |  | 15d | 2029-11-24 | 2029-12-12 | 189 | IT PM; KPMG |
| 191 | 6.4.3 | Final Project Sign-Off | milestone | 0d | 2029-12-29 | 2029-12-29 | 190 | Executive Leadership |
| 192 | 6.5 | QG6 - Stabilization Quality Gate | milestone | 0d | 2029-12-31 | 2029-12-31 | 191 | Steering Committee |

Notes:
- 173: Resources: Bosch IT + App Teams
- 174: Resources: Bosch IAM / Merge Merger Zone AD into Bosch AD
- 175: Resources: ERP Team
- 176: Resources: Bosch CWP / Wave-based by region; AP + AM largest effort
- 177: Resources: App Teams
- 178: Resources: App Teams
- 179: Resources: App Teams
- 180: Resources: Bosch Azure Team
- 181: Resources: Bosch Infra
- 182: Resources: JCI IT + Bosch IT
- 183: Resources: IT PM + JCI / Define exit criteria and acceptance tests per service
- 184: Resources: JCI IT + Bosch IT
- 185: Resources: JCI IT + Bosch IT
- 186: Resources: JCI IT + Bosch IT
- 187: Resources: JCI + Bosch Executive
- 188: Resources: IT PM + KPMG
- 189: Resources: All WS Leads
- 190: Resources: IT PM + KPMG
- 191: Resources: Executive Leadership
- 192: Resources: Steering Committee / TSA fully exited; all 180 sites on Bosch environment; project formally closed
