# Eagle

Schedule from MS Project XML, 2026-06-01 to 2027-04-08.

## Calendars

- Standard: Mon-Fri as the base calendar; Sat-Sun off.

## Resources

| Resource |
| --- |
| App Dev Team |
| App Lead |
| Business |
| Business Analyst |
| Business Owner |
| Business Testers |
| Change Lead |
| Client Architect |
| Cutover Lead |
| DBA |
| Data Architect |
| Data Privacy |
| Deployment Team |
| Dev |
| ERP Consultant |
| ERP Lead |
| ERP Team |
| Engineers |
| Finance |
| Finance Lead |
| Ho Keng Hua |
| IT Lead |
| IT Manager |
| Imaging & Deployment |
| Imaging Lead |
| Infrastructure |
| Infrastructure Architect |
| Infrastructure Lead |
| Infrastructure Team |
| Integration Architect |
| L3 Support |
| Legal |
| Ops Lead |
| Ops Team |
| PMO |
| Performance Engineer |
| Procurement |
| Program Manager |
| QA |
| QA Lead |
| QA Team |
| SMEs |
| Security Architect |
| Steering |
| Support Lead |
| Support Team |
| Team |
| Tech Leads |
| Training Team |
| Users |

## Schedule

| ID | WBS | Task | Type | Duration | Start | Finish | Predecessors | Constraint | Resources |
| --- | --- | --- | --- | --- | --- | --- | --- | --- | --- |
| 1 | 1 | Eagle |  | 222d | 2026-06-01 | 2027-04-08 |  |  |  |
| 2 | 2 | **Eagle - Security Camera Business Carve-out** |  | 310d | 2026-06-01 | 2027-04-07 |  |  |  |
| 3 | 2.1 | **0. INITIATION & QG0** |  | 25d | 2026-06-01 | 2026-06-26 |  |  |  |
| 4 | 2.1.1 | **0.1 Project Kickoff & Governance** |  | 5d | 2026-06-01 | 2026-06-06 |  |  | Ho Keng Hua; PMO |
| 5 | 2.1.1.1 | 0.1.1 Establish PMO & workstreams |  | 3d | 2026-06-01 | 2026-06-04 |  | must start on 2026-06-01 | Ho Keng Hua |
| 6 | 2.1.1.2 | 0.1.2 Define governance & forums |  | 2d | 2026-06-04 | 2026-06-06 | 5 | must start on 2026-06-04 | PMO; Legal |
| 7 | 2.1.2 | **0.2 Business & IT Scope Definition** |  | 12d | 2026-06-06 | 2026-06-18 |  |  | Business Analyst; IT Lead |
| 8 | 2.1.2.1 | 0.2.1 Document business processes |  | 4d | 2026-06-06 | 2026-06-10 |  | must start on 2026-06-06 | Business Analyst |
| 9 | 2.1.2.2 | 0.2.2 Inventory IT systems & data |  | 4d | 2026-06-06 | 2026-06-10 |  | must start on 2026-06-06 | IT Lead |
| 10 | 2.1.2.3 | 0.2.3 Define separation scope |  | 4d | 2026-06-10 | 2026-06-14 | 8, 9 | must start on 2026-06-10 | Legal; IT Lead |
| 11 | 2.1.3 | **0.3 Stakeholder & Change Readiness** |  | 8d | 2026-06-06 | 2026-06-14 |  |  | Change Lead |
| 12 | 2.1.3.1 | 0.3.1 User readiness assessment |  | 4d | 2026-06-06 | 2026-06-10 | 6 | must start on 2026-06-06 | Change Lead |
| 13 | 2.1.3.2 | 0.3.2 Site consultation |  | 4d | 2026-06-10 | 2026-06-14 | 12 | must start on 2026-06-10 | Change Lead |
| 14 | 2.1.4 | 0.4 QG0 - Intake Approval | milestone | 1d | 2026-06-26 | 2026-06-27 | 10, 13 | must start on 2026-06-26 | PMO; Steering |
| 15 | 2.2 | **1. CONCEPT & SCOPE PHASE** |  | 56d | 2026-06-26 | 2026-08-21 |  |  |  |
| 16 | 2.2.1 | **1.1 IT Architecture Baseline** |  | 20d | 2026-06-27 | 2026-07-17 |  |  | Infrastructure Architect |
| 17 | 2.2.1.1 | 1.1.1 Current state infrastructure mapping |  | 5d | 2026-06-27 | 2026-07-02 |  | must start on 2026-06-27 | Infrastructure Architect |
| 18 | 2.2.1.2 | 1.1.2 Design target architecture |  | 10d | 2026-07-02 | 2026-07-12 | 17 | must start on 2026-07-02 | Infrastructure Architect |
| 19 | 2.2.1.3 | 1.1.3 Network & security design |  | 5d | 2026-07-12 | 2026-07-17 | 18 | must start on 2026-07-12 | Security Architect |
| 20 | 2.2.2 | **1.2 Application & Data Strategy** |  | 22d | 2026-06-27 | 2026-07-19 |  |  | App Lead; Data Architect |
| 21 | 2.2.2.1 | 1.2.1 Application inventory & assessment |  | 6d | 2026-06-27 | 2026-07-03 |  | must start on 2026-06-27 | App Lead |
| 22 | 2.2.2.2 | 1.2.2 Data dependency mapping |  | 8d | 2026-07-03 | 2026-07-11 | 21 | must start on 2026-07-03 | Data Architect |
| 23 | 2.2.2.3 | 1.2.3 Carve-out strategy document |  | 8d | 2026-07-11 | 2026-07-19 | 22 | must start on 2026-07-11 | App Lead; Data Architect |
| 24 | 2.2.3 | **1.3 TSA & Transition Planning** |  | 15d | 2026-07-16 | 2026-07-31 |  |  | IT Lead; Finance |
| 25 | 2.2.3.1 | 1.3.1 Define TSA scope (Seller->Buyer) |  | 8d | 2026-07-16 | 2026-07-24 |  | must start on 2026-07-16 | IT Lead |
| 26 | 2.2.3.2 | 1.3.2 Plan transition & handover |  | 7d | 2026-07-24 | 2026-07-31 | 25 | must start on 2026-07-24 | Finance; IT Lead |
| 27 | 2.2.4 | 1.4 QG1 - Concept Gate | milestone | 1d | 2026-08-21 | 2026-08-22 | 19, 23, 26 | must start on 2026-08-21 | PMO; Steering |

Notes:
- 4: Resources: Ho Keng Hua + PMO
- 5: Resources: Ho Keng Hua
- 6: Resources: PMO + Legal
- 7: Resources: Business Analyst + IT Lead
- 8: Resources: Business Analyst
- 9: Resources: IT Lead
- 10: Resources: Legal + IT Lead
- 11: Resources: Change Lead
- 12: Resources: Change Lead
- 13: Resources: Change Lead
- 14: Resources: PMO + Steering / Project formally approved
- 16: Resources: Infrastructure Architect
- 17: Resources: Infrastructure Architect
- 18: Resources: Infrastructure Architect
- 19: Resources: Security Architect
- 20: Resources: App Lead + Data Architect
- 21: Resources: App Lead
- 22: Resources: Data Architect
- 23: Resources: App Lead + Data Architect
- 24: Resources: IT Lead + Finance
- 25: Resources: IT Lead
- 26: Resources: Finance + IT Lead
- 27: Resources: PMO + Steering / Concept phase approved

| ID | WBS | Task | Duration | Start | Finish | Predecessors | Constraint | Resources |
| --- | --- | --- | --- | --- | --- | --- | --- | --- |
| 28 | 2.3 | **2. DESIGN PHASE** | 45d | 2026-08-22 | 2026-10-06 |  |  |  |
| 29 | 2.3.1 | **2.1 Infrastructure Design Details** | 15d | 2026-08-23 | 2026-09-07 |  |  | Infrastructure Architect |
| 30 | 2.3.1.1 | 2.1.1 Network design (3 Singapore sites) | 5d | 2026-08-23 | 2026-08-28 | 27 | must start on 2026-08-23 | Infrastructure Architect |
| 31 | 2.3.1.2 | 2.1.2 Server & storage detail design | 5d | 2026-08-28 | 2026-09-02 | 30 | must start on 2026-08-28 | Infrastructure Architect |
| 32 | 2.3.1.3 | 2.1.3 Security & compliance hardening | 5d | 2026-09-02 | 2026-09-07 | 31 | must start on 2026-09-02 | Security Architect |
| 33 | 2.3.2 | **2.2 ERP & Database Design** | 18d | 2026-08-23 | 2026-09-10 |  |  | ERP Lead; DBA |
| 34 | 2.3.2.1 | 2.2.1 ERP separation strategy | 6d | 2026-08-23 | 2026-08-29 | 27 | must start on 2026-08-23 | ERP Lead |
| 35 | 2.3.2.2 | 2.2.2 Data migration & replication design | 6d | 2026-08-29 | 2026-09-04 | 34 | must start on 2026-08-29 | Data Architect |
| 36 | 2.3.2.3 | 2.2.3 Database backup & recovery plan | 6d | 2026-09-04 | 2026-09-10 | 35 | must start on 2026-09-04 | DBA |
| 37 | 2.3.3 | **2.3 Application Carve-Out Design** | 16d | 2026-08-29 | 2026-09-14 |  |  | App Lead |
| 38 | 2.3.3.1 | 2.3.1 Application separation design | 6d | 2026-08-29 | 2026-09-04 | 27 | must start on 2026-08-29 | App Lead |
| 39 | 2.3.3.2 | 2.3.2 API & integration points | 5d | 2026-09-04 | 2026-09-09 | 38 | must start on 2026-09-04 | Integration Architect |
| 40 | 2.3.3.3 | 2.3.3 Data protection & PII handling | 5d | 2026-09-09 | 2026-09-14 | 39 | must start on 2026-09-09 | Legal; Data Privacy |
| 41 | 2.3.4 | **2.4 Client & Endpoint Strategy** | 14d | 2026-09-02 | 2026-09-16 |  |  | Client Architect |
| 42 | 2.3.4.1 | 2.4.1 Endpoint OS & software assessment | 4d | 2026-09-02 | 2026-09-06 | 27 | must start on 2026-09-02 | Client Architect |
| 43 | 2.3.4.2 | 2.4.2 Device imaging & deployment design | 5d | 2026-09-06 | 2026-09-11 | 42 | must start on 2026-09-06 | Imaging Lead |
| 44 | 2.3.4.3 | 2.4.3 User migration plan (300 users) | 5d | 2026-09-11 | 2026-09-16 | 43 | must start on 2026-09-11 | Change Lead |
| 45 | 2.3.5 | **2.5 Cutover & Testing Strategy** | 12d | 2026-09-13 | 2026-09-25 |  |  | Cutover Lead |
| 46 | 2.3.5.1 | 2.5.1 Cutover window definition (3 sites) | 3d | 2026-09-13 | 2026-09-16 | 36 | must start on 2026-09-13 | Cutover Lead |
| 47 | 2.3.5.2 | 2.5.2 UAT & testing strategy | 5d | 2026-09-16 | 2026-09-21 | 46 | must start on 2026-09-16 | QA Lead |
| 48 | 2.3.5.3 | 2.5.3 Rollback & contingency plan | 4d | 2026-09-21 | 2026-09-25 | 47 | must start on 2026-09-21 | Cutover Lead |
| 49 | 2.4 | **3. BUILD & TEST PHASE** | 24d | 2026-10-05 | 2026-10-29 |  |  |  |
| 50 | 2.4.1 | **3.1 Infrastructure Build-Out** | 12d | 2026-10-06 | 2026-10-18 |  |  | Infrastructure Team |
| 51 | 2.4.1.1 | 3.1.1 Procure & deploy hardware (3 sites) | 6d | 2026-10-06 | 2026-10-12 |  | must start on 2026-10-06 | Procurement; Infrastructure |
| 52 | 2.4.1.2 | 3.1.2 Network deployment & security | 4d | 2026-10-12 | 2026-10-16 | 51 | must start on 2026-10-12 | Infrastructure Team |
| 53 | 2.4.1.3 | 3.1.3 Infrastructure testing & validation | 2d | 2026-10-16 | 2026-10-18 | 52 | must start on 2026-10-16 | Infrastructure Team |

Notes:
- 29: Resources: Infrastructure Architect
- 30: Resources: Infrastructure Architect
- 31: Resources: Infrastructure Architect
- 32: Resources: Security Architect
- 33: Resources: ERP Lead + DBA
- 34: Resources: ERP Lead
- 35: Resources: Data Architect
- 36: Resources: DBA
- 37: Resources: App Lead
- 38: Resources: App Lead
- 39: Resources: Integration Architect
- 40: Resources: Legal + Data Privacy
- 41: Resources: Client Architect
- 42: Resources: Client Architect
- 43: Resources: Imaging Lead
- 44: Resources: Change Lead
- 45: Resources: Cutover Lead
- 46: Resources: Cutover Lead
- 47: Resources: QA Lead
- 48: Resources: Cutover Lead
- 50: Resources: Infrastructure Team
- 51: Resources: Procurement + Infrastructure
- 52: Resources: Infrastructure Team
- 53: Resources: Infrastructure Team

| ID | WBS | Task | Type | Duration | Start | Finish | Predecessors | Constraint | Resources |
| --- | --- | --- | --- | --- | --- | --- | --- | --- | --- |
| 54 | 2.4.2 | **3.2 ERP Build & System Migration** |  | 14d | 2026-10-06 | 2026-10-20 |  |  | ERP Team; DBA |
| 55 | 2.4.2.1 | 3.2.1 ERP system clone/build |  | 5d | 2026-10-06 | 2026-10-11 |  | must start on 2026-10-06 | ERP Team |
| 56 | 2.4.2.2 | 3.2.2 Data extraction & transformation |  | 4d | 2026-10-11 | 2026-10-15 | 55 | must start on 2026-10-11 | Data Architect |
| 57 | 2.4.2.3 | 3.2.3 ERP configuration & testing |  | 3d | 2026-10-15 | 2026-10-18 | 56 | must start on 2026-10-15 | ERP Consultant |
| 58 | 2.4.2.4 | 3.2.4 Data validation & reconciliation |  | 2d | 2026-10-18 | 2026-10-20 | 57 | must start on 2026-10-18 | ERP Lead; DBA |
| 59 | 2.4.3 | **3.3 Application Build & Config** |  | 12d | 2026-10-11 | 2026-10-23 |  |  | App Dev Team |
| 60 | 2.4.3.1 | 3.3.1 Clone/provision applications |  | 5d | 2026-10-11 | 2026-10-16 |  | must start on 2026-10-11 | App Lead |
| 61 | 2.4.3.2 | 3.3.2 Configure integrations & APIs |  | 4d | 2026-10-16 | 2026-10-20 | 60 | must start on 2026-10-16 | Integration Architect |
| 62 | 2.4.3.3 | 3.3.3 Application testing |  | 3d | 2026-10-20 | 2026-10-23 | 61 | must start on 2026-10-20 | QA Team |
| 63 | 2.4.4 | **3.4 Client Imaging & Pilot** |  | 10d | 2026-10-14 | 2026-10-24 |  |  | Imaging & Deployment |
| 64 | 2.4.4.1 | 3.4.1 Prepare images & deployment |  | 3d | 2026-10-14 | 2026-10-17 |  | must start on 2026-10-14 | Imaging Lead |
| 65 | 2.4.4.2 | 3.4.2 Pilot deployment (Site 1, ~30 users) |  | 3d | 2026-10-17 | 2026-10-20 | 64 | must start on 2026-10-17 | Deployment Team |
| 66 | 2.4.4.3 | 3.4.3 Pilot feedback & adjustments |  | 4d | 2026-10-20 | 2026-10-24 | 65 | must start on 2026-10-20 | Change Lead; Users |
| 67 | 2.4.5 | 3.5 QG2&3 - Build & Test Gate | milestone | 1d | 2026-10-29 | 2026-10-30 | 53, 58, 62, 66 | must start on 2026-10-29 | PMO; QA |
| 68 | 2.5 | **4. FINAL UAT & CUTOVER PREP** |  | 4d | 2026-10-29 | 2026-11-02 |  |  |  |
| 69 | 2.5.1 | **4.1 Full UAT Execution** |  | 2d | 2026-10-30 | 2026-10-31 |  |  | QA Lead; Business |
| 70 | 2.5.1.1 | 4.1.1 Run UAT test scripts (all systems) |  | 1d | 2026-10-30 | 2026-10-30 | 67 | must start on 2026-10-30 | QA; Business Testers |
| 71 | 2.5.1.2 | 4.1.2 Critical defect resolution |  | 1d | 2026-10-30 | 2026-10-31 | 70 | must start on 2026-10-30 | Dev; QA |
| 72 | 2.5.2 | **4.2 Pre-GoLive Readiness Check** |  | 1d | 2026-10-31 | 2026-11-01 |  |  | PMO; Tech Leads |
| 73 | 2.5.2.1 | 4.2.1 Final infrastructure & system checks | milestone | 0d | 2026-10-31 | 2026-10-31 | 71 | must start on 2026-10-31 | Infrastructure Lead |
| 74 | 2.5.2.2 | 4.2.2 Cutover rollback test | milestone | 0d | 2026-10-31 | 2026-11-01 | 73 | must start on 2026-10-31 | Cutover Lead |
| 75 | 2.5.3 | 4.3 QG4 - Pre-GoLive Approval | milestone | 1d | 2026-11-01 | 2026-11-02 |  | must start on 2026-11-01 | PMO; Steering |
| 76 | 2.6 | **4b. FINAL READINESS & CUTOVER VERIFICATION** |  | 2d | 2026-11-02 | 2026-11-04 |  |  |  |
| 77 | 2.6.1 | **4b.1 UAT Closure & Sign-Off** |  | 1d | 2026-11-02 | 2026-11-03 |  |  | QA Lead; Business |
| 78 | 2.6.1.1 | 4b.1.1 Verify all UAT defects resolved | milestone | 0d | 2026-11-02 | 2026-11-02 | 75 | must start on 2026-11-02 | QA Lead |
| 79 | 2.6.1.2 | 4b.1.2 UAT sign-off document | milestone | 0d | 2026-11-02 | 2026-11-03 | 78 | must start on 2026-11-02 | Business Owner |

Notes:
- 54: Resources: ERP Team + DBA
- 55: Resources: ERP Team
- 56: Resources: Data Architect
- 57: Resources: ERP Consultant
- 58: Resources: ERP Lead + DBA
- 59: Resources: App Dev Team
- 60: Resources: App Lead
- 61: Resources: Integration Architect
- 62: Resources: QA Team
- 63: Resources: Imaging & Deployment
- 64: Resources: Imaging Lead
- 65: Resources: Deployment Team
- 66: Resources: Change Lead + Users
- 67: Resources: PMO + QA / Build phase complete, ready for UAT
- 69: Resources: QA Lead + Business
- 70: Resources: QA + Business Testers
- 71: Resources: Dev + QA
- 72: Resources: PMO + Tech Leads
- 73: Resources: Infrastructure Lead
- 74: Resources: Cutover Lead
- 75: Resources: PMO + Steering / QG4 gate passed; ready for final cutover checks
- 77: Resources: QA Lead + Business
- 78: Resources: QA Lead
- 79: Resources: Business Owner

| ID | WBS | Task | Type | Duration | Start | Finish | Predecessors | Constraint | Resources |
| --- | --- | --- | --- | --- | --- | --- | --- | --- | --- |
| 80 | 2.6.2 | **4b.2 Final Open Items Verification** |  | 1d | 2026-11-03 | 2026-11-04 |  |  | PMO; Steering |
| 81 | 2.6.2.1 | 4b.2.1 Confirm all action items closed | milestone | 0d | 2026-11-03 | 2026-11-03 | 79 | must start on 2026-11-03 | PMO |
| 82 | 2.6.2.2 | 4b.2.2 Final infrastructure readiness | milestone | 0d | 2026-11-03 | 2026-11-04 |  |  |  |
| 83 | 2.7 | **5. GOLIVE & HYPERCARE** |  | 91d | 2026-11-07 | 2027-02-05 |  |  | Infrastructure Lead |
| 84 | 2.7.1 | 5.1 GoLive - Day 1 Cutover | milestone | 1d | 2026-11-07 | 2026-11-08 |  | must start on 2026-11-07 | PMO; Ops Team |
| 85 | 2.7.2 | **5.2 Hypercare & Stabilization (90 days)** |  | 90d | 2026-11-08 | 2027-02-05 |  |  | Support Team; SMEs |
| 86 | 2.7.2.1 | 5.2.1 24/7 L3 support & issue triage |  | 60d | 2026-11-08 | 2027-01-06 | 84 | must start on 2026-11-08 | L3 Support; Engineers |
| 87 | 2.7.2.2 | 5.2.2 Performance tuning & hotfixes |  | 45d | 2026-11-08 | 2026-12-22 | 84 | must start on 2026-11-08 | Performance Engineer |
| 88 | 2.7.2.3 | 5.2.3 User training & enablement |  | 60d | 2026-11-08 | 2027-01-06 | 84 | must start on 2026-11-08 | Training Team |
| 89 | 2.7.2.4 | 5.2.4 Knowledge transfer & documentation |  | 30d | 2027-01-06 | 2027-02-05 | 86 | must start on 2027-01-06 | Support Lead |
| 90 | 2.8 | **6. OPERATIONS TRANSITION & CLOSURE** |  | 60d | 2027-02-06 | 2027-04-07 |  |  |  |
| 91 | 2.8.1 | **6.1 Transition to Steady-State** |  | 20d | 2027-02-06 | 2027-02-25 |  |  | Ops Lead; IT Manager |
| 92 | 2.8.1.1 | 6.1.1 Operations runbook finalization |  | 5d | 2027-02-06 | 2027-02-10 |  | must start on 2027-02-06 | Ops Lead |
| 93 | 2.8.1.2 | 6.1.2 Incident & escalation procedures |  | 5d | 2027-02-10 | 2027-02-15 | 92 | must start on 2027-02-10 | Ops Lead |
| 94 | 2.8.1.3 | 6.1.3 Capacity planning & baseline |  | 5d | 2027-02-15 | 2027-02-20 | 93 | must start on 2027-02-15 | Infrastructure |
| 95 | 2.8.1.4 | 6.1.4 Transition BAU support model |  | 5d | 2027-02-20 | 2027-02-25 | 94 | must start on 2027-02-20 | IT Manager |
| 96 | 2.8.2 | **6.2 Finance & Benefit Realization** |  | 20d | 2027-02-15 | 2027-03-07 |  |  | Finance; PMO |
| 97 | 2.8.2.1 | 6.2.1 Financial separation & P&L |  | 10d | 2027-02-15 | 2027-02-25 | 95 | must start on 2027-02-15 | Finance Lead |
| 98 | 2.8.2.2 | 6.2.2 Cost allocation & chargeback |  | 10d | 2027-02-25 | 2027-03-07 | 97 | must start on 2027-02-25 | Finance Lead |
| 99 | 2.8.3 | **6.3 Lessons Learned & Closure** |  | 15d | 2027-02-25 | 2027-03-12 |  |  | PMO; Team |
| 100 | 2.8.3.1 | 6.3.1 Lessons learned workshop |  | 3d | 2027-02-25 | 2027-02-28 | 98 | must start on 2027-02-25 | PMO |
| 101 | 2.8.3.2 | 6.3.2 Final project report & sign-off |  | 5d | 2027-02-28 | 2027-03-05 | 100 | must start on 2027-02-28 | Program Manager |
| 102 | 2.8.3.3 | 6.3.3 Project artifacts archival |  | 5d | 2027-03-05 | 2027-03-10 | 101 | must start on 2027-03-05 | PMO |
| 103 | 2.8.3.4 | 6.3.4 Final vendor settlement |  | 2d | 2027-03-10 | 2027-03-12 | 102 | must start on 2027-03-10 | Procurement; Finance |
| 104 | 2.8.4 | 6.4 QG5 - Project Completion | milestone | 1d | 2027-04-07 | 2027-04-08 | 103 | must start on 2027-04-07 | PMO; Steering |

Notes:
- 80: Resources: PMO + Steering
- 81: Resources: PMO
- 82: Resources: Infrastructure Lead
- 84: Resources: PMO + Ops Team / Production go-live
- 85: Resources: Support Team + SMEs / 90-day post-GoLive support
- 86: Resources: L3 Support + Engineers
- 87: Resources: Performance Engineer
- 88: Resources: Training Team
- 89: Resources: Support Lead
- 91: Resources: Ops Lead + IT Manager
- 92: Resources: Ops Lead
- 93: Resources: Ops Lead
- 94: Resources: Infrastructure
- 95: Resources: IT Manager
- 96: Resources: Finance + PMO
- 97: Resources: Finance Lead
- 98: Resources: Finance Lead
- 99: Resources: PMO + Team
- 100: Resources: PMO
- 101: Resources: Program Manager
- 102: Resources: PMO
- 103: Resources: Procurement + Finance
- 104: Resources: PMO + Steering / Project formally closed
