# Gamma

Schedule from MS Project XML, 2026-08-01 to 2027-05-31.

## Calendars

- Standard: Mon-Fri as the base calendar; Sat-Sun off.

## Resources

| Resource |
| --- |
| Alibaba Cloud |
| Alibaba IT |
| Alibaba ITSM |
| Alibaba Leadership |
| Alibaba PMO |
| Alibaba Security |
| Application Owners |
| Business Key Users |
| Business Leads |
| Communications |
| Data Leads |
| Deployment Lead |
| EY |
| EY Test Lead |
| Finance |
| HR |
| IT Operations |
| ITSM Leads |
| Infrastructure Leads |
| Infrastructure Operations |
| Legal |
| PMO |
| Procurement |
| Robert Bosch China IT |
| Robert Bosch China IT Security |
| Robert Bosch China Infrastructure |
| Robert Bosch China Leadership |
| Robert Bosch China PMO |
| Robert Bosch China Security |
| Security Leads |
| Service Desk |
| Steering Committee |
| Test Lead |
| Training Lead |
| Workstream Leads |

## Schedule

| ID | WBS | Task | Type | Duration | Start | Finish | Predecessors | Constraint | Resources |
| --- | --- | --- | --- | --- | --- | --- | --- | --- | --- |
| 1 | 1 | **Phase 0 - Mobilization and confidentiality control** |  | 35d | 2026-08-01 | 2026-09-04 |  |  |  |
| 2 | 1.1 | **0.1 Governance and restricted planning** |  | 19d | 2026-08-01 | 2026-08-19 |  |  |  |
| 3 | 1.1.1 | Launch core programme team and initiate Gamma confidentiality controls |  | 3d | 2026-08-01 | 2026-08-03 |  | must start on 2026-08-01 | EY; Robert Bosch China IT; Alibaba IT |
| 4 | 1.1.2 | Establish confidentiality protocol, clean-team access, and restricted stakeholder list |  | 10d | 2026-08-01 | 2026-08-10 | 3 | must start on 2026-08-01 | EY; Legal; Robert Bosch China IT Security |
| 5 | 1.1.3 | Set governance cadence, RACI, steerco path, and PMO controls |  | 16d | 2026-08-04 | 2026-08-19 | 3 | must start on 2026-08-04 | EY; Robert Bosch China PMO; Alibaba PMO |
| 6 | 1.2 | **0.2 Legal perimeter and scoped discovery** |  | 31d | 2026-08-04 | 2026-09-03 |  |  |  |
| 7 | 1.2.1 | Confirm carve-out perimeter, 50/50 JV assumptions, and decision rights |  | 12d | 2026-08-04 | 2026-08-15 | 3 | must start on 2026-08-04 | Legal; EY; Robert Bosch China Leadership; Alibaba Leadership |
| 8 | 1.2.2 | Launch antitrust due diligence tracker, legal workplan, and planning assumptions log |  | 18d | 2026-08-04 | 2026-08-21 | 3 | must start on 2026-08-04 | Legal; EY |
| 9 | 1.2.3 | Inventory 5 sites, 250 users, 20 applications, and infrastructure service towers |  | 18d | 2026-08-11 | 2026-08-28 | 4, 7 | must start on 2026-08-11 | EY; Robert Bosch China Infrastructure; Alibaba IT |
| 10 | 1.2.4 | Define discovery guardrails and phased stakeholder expansion path |  | 17d | 2026-08-18 | 2026-09-03 | 4, 8, 9 | must start on 2026-08-18 | EY; Legal; HR; Communications |
| 11 | 1.2.5 | QG0 - Mobilization approved | milestone | 1d | 2026-09-04 | 2026-09-04 | 5, 8, 9, 10 | must start on 2026-09-04 | Steering Committee |
| 12 | 2 | **Phase 1 - Concept and target-state design** |  | 55d | 2026-09-05 | 2026-10-29 |  |  |  |
| 13 | 2.1 | **1.1 Operating model and transition principles** |  | 26d | 2026-09-05 | 2026-09-30 |  |  |  |
| 14 | 2.1.1 | Define Day 1 and Day 2 scope boundaries for the JV operating model |  | 12d | 2026-09-05 | 2026-09-16 | 11 | must start on 2026-09-05 | EY; Robert Bosch China IT; Alibaba IT |
| 15 | 2.1.2 | Define interim service continuity, TSA needs, and exit conditions |  | 15d | 2026-09-09 | 2026-09-23 | 11 | must start on 2026-09-09 | EY; Robert Bosch China IT; Alibaba IT |
| 16 | 2.1.3 | Confirm sign-off route and approval process under legal confidentiality constraints |  | 14d | 2026-09-17 | 2026-09-30 | 14, 15 | must start on 2026-09-17 | EY; Legal; Steering Committee |
| 17 | 2.2 | **1.2 Infrastructure and security target design** |  | 33d | 2026-09-05 | 2026-10-07 |  |  |  |
| 18 | 2.2.1 | Design target hosting, network, connectivity, and environment segregation |  | 21d | 2026-09-05 | 2026-09-25 | 11 | must start on 2026-09-05 | Robert Bosch China Infrastructure; Alibaba Cloud; EY |
| 19 | 2.2.2 | Design identity, access, endpoint, and security operating model |  | 21d | 2026-09-12 | 2026-10-02 | 18 | must start on 2026-09-12 | Robert Bosch China Security; Alibaba Security; EY |
| 20 | 2.2.3 | Design collaboration, service management, monitoring, and support stack |  | 19d | 2026-09-19 | 2026-10-07 | 18 | must start on 2026-09-19 | Robert Bosch China Infrastructure; Alibaba ITSM; EY |
| 21 | 2.3 | **1.3 Application and migration design** |  | 47d | 2026-09-12 | 2026-10-28 |  |  |  |
| 22 | 2.3.1 | Classify 20 applications and decide separation pattern for each |  | 19d | 2026-09-12 | 2026-09-30 | 9, 11 | must start on 2026-09-12 | Application Owners; EY |
| 23 | 2.3.2 | Define migration waves for applications, users, devices, and sites |  | 16d | 2026-10-01 | 2026-10-16 | 19, 20, 22 | must start on 2026-10-01 | EY; Deployment Lead; Infrastructure Leads |
| 24 | 2.3.3 | Define test strategy, cutover principles, and rollback approach |  | 17d | 2026-10-05 | 2026-10-21 | 19, 20, 22 | must start on 2026-10-05 | EY Test Lead; Infrastructure Leads |
| 25 | 2.3.4 | Baseline risk register, dependency log, and entry criteria for build |  | 17d | 2026-10-12 | 2026-10-28 | 16, 23, 24 | must start on 2026-10-12 | EY; Workstream Leads |
| 26 | 2.3.5 | QG1 - Concept approved | milestone | 1d | 2026-10-29 | 2026-10-29 | 16, 19, 20, 23, 24, 25 | must start on 2026-10-29 | Steering Committee |

Notes:
- 1: Programme launch, restricted planning model, legal perimeter, and initial inventory for the Bosch Cloud carve-out into a 50/50 JV with Alibaba.
- 3: Resources: EY + Robert Bosch China IT + Alibaba IT / Only the core clean team is aware during startup because the JV and antitrust due diligence remain highly confidential.
- 4: Resources: EY + Legal + Robert Bosch China IT Security / Planning access is tightly controlled until legal allows a broader discovery group.
- 5: Resources: EY + Robert Bosch China PMO + Alibaba PMO / Governance reflects shared management of the future 50/50 JV.
- 7: Resources: Legal + EY + Robert Bosch China Leadership + Alibaba Leadership / Combination model remains the formal carve-out model; the 50/50 JV is the post-close governance construct.
- 8: Resources: Legal + EY / Legal uncertainty is treated as a hard planning dependency, not only a risk note.
- 9: Resources: EY + Robert Bosch China Infrastructure + Alibaba IT / Scope is pure infrastructure services with no SAP in scope.
- 10: Resources: EY + Legal + HR + Communications / Broader validation remains constrained until legal confirms what can be disclosed.
- 11: Resources: Steering Committee / Restricted-planning controls active, perimeter defined, and initial inventory complete.
- 12: Operating model, infrastructure target state, migration design, and formal readiness criteria.
- 14: Resources: EY + Robert Bosch China IT + Alibaba IT / Scope keeps Day 1 focused on infrastructure continuity and only the 20 in-scope applications.
- 15: Resources: EY + Robert Bosch China IT + Alibaba IT / Seller support is defined only where required until the new JV services are stable.
- 16: Resources: EY + Legal + Steering Committee / Approvals use a narrow escalation route because only limited associates can participate.
- 18: Resources: Robert Bosch China Infrastructure + Alibaba Cloud + EY / Target state is infrastructure-led and excludes SAP-related architecture.
- 19: Resources: Robert Bosch China Security + Alibaba Security + EY / Identity and access design supports joint governance without broadening access prematurely.
- 20: Resources: Robert Bosch China Infrastructure + Alibaba ITSM + EY / Service desk, monitoring, backup, and collaboration capabilities are defined for Day 1 operations.
- 22: Resources: Application Owners + EY / Each application is classified for retain, reconfigure, replace, or retire within the JV context.
- 23: Resources: EY + Deployment Lead + Infrastructure Leads / Wave design is modest because the scope is 5 sites, 250 users, and 20 applications.
- 24: Resources: EY Test Lead + Infrastructure Leads / Rollback and sign-off mechanics are formalized early due to legal and confidentiality sensitivity.
- 25: Resources: EY + Workstream Leads / Gamma-specific risks and dependencies are captured without borrowing reference-project content.
- 26: Resources: Steering Committee / Target-state concept, migration design, and restricted approval path are confirmed.

| ID | WBS | Task | Type | Duration | Start | Finish | Predecessors | Constraint | Resources |
| --- | --- | --- | --- | --- | --- | --- | --- | --- | --- |
| 27 | 3 | **Phase 2 - Build and integrated testing** |  | 74d | 2026-10-30 | 2027-01-11 |  |  |  |
| 28 | 3.1 | **2.1 Core infrastructure build** |  | 36d | 2026-10-30 | 2026-12-04 |  |  |  |
| 29 | 3.1.1 | Build landing zone, hosting, and network segmentation |  | 27d | 2026-10-30 | 2026-11-25 | 26 | must start on 2026-10-30 | Robert Bosch China Infrastructure; Alibaba Cloud |
| 30 | 3.1.2 | Build identity, IAM, endpoint, and access services |  | 29d | 2026-11-02 | 2026-11-30 | 26, 19 | must start on 2026-11-02 | Robert Bosch China Security; Alibaba Security |
| 31 | 3.1.3 | Build collaboration, service desk, monitoring, and backup services |  | 26d | 2026-11-09 | 2026-12-04 | 20, 29 | must start on 2026-11-09 | Infrastructure Operations; ITSM Leads |
| 32 | 3.2 | **2.2 Application and data separation build** |  | 40d | 2026-11-09 | 2026-12-18 |  |  |  |
| 33 | 3.2.1 | Reconfigure 20 applications for JV target services |  | 40d | 2026-11-09 | 2026-12-18 | 22, 29, 30 | must start on 2026-11-09 | Application Owners; Infrastructure Leads |
| 34 | 3.2.2 | Prepare shared data and file separation plus access remediation |  | 26d | 2026-11-16 | 2026-12-11 | 29, 30 | must start on 2026-11-16 | Data Leads; Security Leads |
| 35 | 3.2.3 | Complete third-party contract, DNS, certificate, and supplier changes |  | 26d | 2026-11-16 | 2026-12-11 | 15, 22 | must start on 2026-11-16 | Procurement; Legal; Infrastructure Leads |
| 36 | 3.3 | **2.3 Testing and migration rehearsal** |  | 33d | 2026-12-07 | 2027-01-08 |  |  |  |
| 37 | 3.3.1 | Execute system integration testing across infrastructure services and 20 applications |  | 17d | 2026-12-07 | 2026-12-23 | 31, 33, 34, 35 | must start on 2026-12-07 | Test Lead; Infrastructure Leads; Application Owners |
| 38 | 3.3.2 | Execute UAT with restricted business representatives and clean-team approvers |  | 17d | 2026-12-14 | 2026-12-30 | 37 | must start on 2026-12-14 | Business Key Users; EY |
| 39 | 3.3.3 | Run cutover rehearsal and rollback validation |  | 17d | 2026-12-21 | 2027-01-06 | 37, 38 | must start on 2026-12-21 | Infrastructure Leads; EY |
| 40 | 3.3.4 | Complete site, device, user, and communications migration packages |  | 19d | 2026-12-21 | 2027-01-08 | 31, 34, 35 | must start on 2026-12-21 | Deployment Lead; HR; Communications |
| 41 | 3.3.5 | QG2 and QG3 - Build and test approved | milestone | 1d | 2027-01-11 | 2027-01-11 | 38, 39, 40 | must start on 2027-01-11 | Steering Committee |
| 42 | 4 | **Phase 3 - Final readiness and GoLive** |  | 21d | 2027-01-12 | 2027-02-01 |  |  |  |
| 43 | 4.1 | **3.1 Pre-GoLive completion** |  | 14d | 2027-01-12 | 2027-01-25 |  |  |  |
| 44 | 4.1.1 | Close UAT defects and QG2 and QG3 action items |  | 9d | 2027-01-12 | 2027-01-20 | 41 | must start on 2027-01-12 | Test Lead; Application Owners; Infrastructure Leads |
| 45 | 4.1.2 | Complete pre-GoLive user, device, and site transitions |  | 10d | 2027-01-12 | 2027-01-21 | 40, 41 | must start on 2027-01-12 | Deployment Lead; Infrastructure Operations |
| 46 | 4.1.3 | Complete final security, operational readiness, and support staffing check |  | 8d | 2027-01-15 | 2027-01-22 | 31, 41, 44, 45 | must start on 2027-01-15 | Security Leads; IT Operations; EY |
| 47 | 4.1.4 | QG4 - Pre-GoLive approved | milestone | 1d | 2027-01-25 | 2027-01-25 | 44, 45, 46 | must start on 2027-01-25 | Steering Committee |
| 48 | 4.2 | **3.2 Final readiness and open item closure** |  | 5d | 2027-01-26 | 2027-01-30 |  |  |  |
| 49 | 4.2.1 | Verify all UAT defects and QG4 action items are closed |  | 2d | 2027-01-26 | 2027-01-27 | 47 | must start on 2027-01-26 | Test Lead; PMO |
| 50 | 4.2.2 | Run final infrastructure and service readiness checks |  | 3d | 2027-01-26 | 2027-01-28 | 47 | must start on 2027-01-26 | Infrastructure Operations; Security Leads |
| 51 | 4.2.3 | Execute final rollback confirmation and secure business sign-off |  | 2d | 2027-01-29 | 2027-01-30 | 49, 50 | must start on 2027-01-29 | EY; Business Leads; Infrastructure Leads |
| 52 | 4.2.4 | GoLive - Day 1 cutover complete | milestone | 1d | 2027-02-01 | 2027-02-01 | 51 | must start on 2027-02-01 | Steering Committee; Infrastructure Leads |

Notes:
- 27: Build core services, prepare the 20-application transition set, and complete integrated testing before final readiness.
- 29: Resources: Robert Bosch China Infrastructure + Alibaba Cloud / Core environment for the JV is established first to unblock downstream migration tasks.
- 30: Resources: Robert Bosch China Security + Alibaba Security / Identity controls are implemented with least-privilege access due to the restricted stakeholder model.
- 31: Resources: Infrastructure Operations + ITSM Leads / Day 1 support tooling and operational monitoring are completed before system integration testing.
- 33: Resources: Application Owners + Infrastructure Leads / Application work remains intentionally lean because the scope is limited and non-SAP.
- 34: Resources: Data Leads + Security Leads / Shared repositories and access rights are remediated before formal testing starts.
- 35: Resources: Procurement + Legal + Infrastructure Leads / Third-party dependencies are aligned with the future JV operating model and confidentiality constraints.
- 37: Resources: Test Lead + Infrastructure Leads + Application Owners / Integrated validation confirms that the infrastructure-led design supports the limited application set.
- 38: Resources: Business Key Users + EY / UAT uses the limited approved representative group because broad awareness is still constrained.
- 39: Resources: Infrastructure Leads + EY / Rollback evidence is required before QG2 and QG3 can be passed.
- 40: Resources: Deployment Lead + HR + Communications / All migration packages are completed before QG2 and QG3 and before the QG4 readiness window.
- 41: Resources: Steering Committee / Build complete, integrated testing passed, and final readiness activities may begin.
- 42: Complete residual pre-GoLive work, hold QG4, run the mandatory final readiness window, and execute Day 1 cutover.
- 44: Resources: Test Lead + Application Owners + Infrastructure Leads / All high-priority defects must be closed before the pre-GoLive gate.
- 45: Resources: Deployment Lead + Infrastructure Operations / All migrations are completed before QG4 in line with the schedule rule set.
- 46: Resources: Security Leads + IT Operations + EY / No critical alerts, unresolved access gaps, or support staffing issues may remain at gate review.
- 47: Resources: Steering Committee / GoLive is not on the same date as QG4; a mandatory final readiness window follows.
- 49: Resources: Test Lead + PMO / This is the first mandatory final-readiness activity after QG4.
- 50: Resources: Infrastructure Operations + Security Leads / Readiness checks confirm stability, no critical alerts, and support handoff readiness.
- 51: Resources: EY + Business Leads + Infrastructure Leads / Final approval closes the five-day readiness period between QG4 and GoLive.
- 52: Resources: Steering Committee + Infrastructure Leads / The Gamma JV environment goes live for 5 sites, 250 users, and 20 applications on the committed date.

| ID | WBS | Task | Type | Duration | Start | Finish | Predecessors | Constraint | Resources |
| --- | --- | --- | --- | --- | --- | --- | --- | --- | --- |
| 53 | 5 | **Phase 4 - Hypercare and closure** |  | 119d | 2027-02-02 | 2027-05-31 |  |  |  |
| 54 | 5.1 | **4.1 Hypercare stabilization only** |  | 90d | 2027-02-02 | 2027-05-02 |  |  |  |
| 55 | 5.1.1 | Run 24x7 incident triage and L3 support |  | 90d | 2027-02-02 | 2027-05-02 | 52 | must start on 2027-02-02 | IT Operations; Service Desk |
| 56 | 5.1.2 | Operate hotfix-only stabilization for infrastructure and applications |  | 76d | 2027-02-02 | 2027-04-18 | 52 | must start on 2027-02-02 | Infrastructure Leads; Application Owners |
| 57 | 5.1.3 | Deliver user enablement, knowledge transfer, and adoption support |  | 58d | 2027-02-02 | 2027-03-31 | 52 | must start on 2027-02-02 | Training Lead; Service Desk; PMO |
| 58 | 5.2 | **4.2 Transition service exit and steady-state handover** |  | 82d | 2027-02-15 | 2027-05-07 |  |  |  |
| 59 | 5.2.1 | Retire residual seller-hosted services and confirm exit criteria |  | 54d | 2027-02-15 | 2027-04-09 | 52 | must start on 2027-02-15 | Robert Bosch China IT; Alibaba IT; EY |
| 60 | 5.2.2 | Finalize JV runbooks, supplier handoffs, and service ownership |  | 68d | 2027-02-15 | 2027-04-23 | 52 | must start on 2027-02-15 | IT Operations; Procurement; PMO |
| 61 | 5.2.3 | Confirm operational KPIs and steady-state governance handover |  | 26d | 2027-04-12 | 2027-05-07 | 55, 56, 59, 60 | must start on 2027-04-12 | Steering Committee; IT Operations; EY |
| 62 | 5.2.4 | QG5 - Project completion approved | milestone | 1d | 2027-05-10 | 2027-05-10 | 55, 59, 60, 61 | must start on 2027-05-10 | Steering Committee |
| 63 | 5.3 | **4.3 Project closure** |  | 21d | 2027-05-11 | 2027-05-31 |  |  |  |
| 64 | 5.3.1 | Capture lessons learned and archive project artefacts |  | 11d | 2027-05-11 | 2027-05-21 | 62 | must start on 2027-05-11 | PMO; Workstream Leads |
| 65 | 5.3.2 | Close financials, confirm documentation, and issue closure report |  | 18d | 2027-05-11 | 2027-05-28 | 62 | must start on 2027-05-11 | Finance; PMO |
| 66 | 5.3.3 | Closure - Gamma programme archived | milestone | 1d | 2027-05-31 | 2027-05-31 | 64, 65 | must start on 2027-05-31 | Steering Committee |

Notes:
- 53: Ninety-day stabilization only after GoLive, followed by formal handover and closure.
- 55: Resources: IT Operations + Service Desk / Hypercare is stabilization only and lasts 90 calendar days.
- 56: Resources: Infrastructure Leads + Application Owners / Bug fixes only after GoLive; no new development, migration, or architecture change is allowed.
- 57: Resources: Training Lead + Service Desk + PMO / Support focuses on stabilizing the new operating model for the restricted but growing user community.
- 59: Resources: Robert Bosch China IT + Alibaba IT + EY / Only residual transition services remain after GoLive and are retired in a controlled manner.
- 60: Resources: IT Operations + Procurement + PMO / Operational ownership is formalized for the jointly managed JV steady state.
- 61: Resources: Steering Committee + IT Operations + EY / Readiness for steady-state operations is confirmed after hypercare evidence and service exits are complete.
- 62: Resources: Steering Committee / Ninety-day hypercare is complete, transition services are exited, and operational handover is accepted.
- 64: Resources: PMO + Workstream Leads / Repository artefacts and handover evidence are archived after QG5 approval.
- 65: Resources: Finance + PMO / Closure report finalizes the initial v1.0 Gamma package baseline.
- 66: Resources: Steering Committee / Formal closure milestone aligned with the committed completion date.
