# Trinity-CAM (GPT)

Schedule from MS Project XML, 2026-07-01 to 2028-04-01.

## Calendars

- Standard: Mon-Fri as the base calendar; Sat-Sun off.

## Resources

| Resource |
| --- |
| Bosch Business Lead |
| Bosch HR Lead |
| Bosch IT Manager |
| Bosch Legal Counsel |
| Bosch Sponsor |
| Infosys Application Lead |
| Infosys Cloud Lead |
| Infosys Data Migration Lead |
| Infosys IAM Lead |
| Infosys Infrastructure Architect |
| Infosys Network Lead |
| Infosys Programme Manager |
| Infosys QA Lead |
| Infosys SAP Lead |
| Infosys Security Lead |
| Infosys Service Delivery Lead |
| Infosys Workplace Lead |
| JCI Application Owner |
| JCI Business Lead |
| JCI HR Lead |
| JCI IT Manager |
| JCI Legal Counsel |
| JCI SAP Owner |
| JCI Sponsor |
| KPMG Change Lead |
| KPMG Data Architect |
| KPMG Deployment Lead |
| KPMG Enterprise Architect |
| KPMG Infrastructure Architect |
| KPMG PMO Lead |
| KPMG Project Manager |
| KPMG SAP Architect |
| KPMG Security Architect |
| KPMG Test Lead |
| KPMG Workplace Lead |

## Schedule

| ID | WBS | Task | Type | Duration | Start | Finish | Predecessors | Constraint | Resources |
| --- | --- | --- | --- | --- | --- | --- | --- | --- | --- |
| 1 | 1 | **Phase 0: Mobilize carve-out governance and TSA baseline** |  | 92d | 2026-07-01 | 2026-10-01 |  |  |  |
| 2 | 1.1 | **0.1 Governance and partner mobilization** |  | 60d | 2026-07-01 | 2026-08-30 |  |  |  |
| 3 | 1.1.1 | QG0 - Programme kickoff approved | milestone | 1d | 2026-07-01 | 2026-07-01 |  | must start on 2026-07-01 | KPMG PMO Lead; JCI Sponsor; Bosch Sponsor |
| 4 | 1.1.2 | Stand up PMO, governance cadence, and workstream RACI |  | 14d | 2026-07-01 | 2026-07-15 | 3 | must start on 2026-07-01 | KPMG PMO Lead; KPMG Project Manager |
| 5 | 1.1.3 | Onboard Infosys for merger zone delivery and managed services |  | 29d | 2026-07-02 | 2026-07-31 | 3 | must start on 2026-07-02 | KPMG PMO Lead; Infosys Programme Manager |
| 6 | 1.1.4 | Baseline TSA towers, service owners, and exit principles |  | 46d | 2026-07-15 | 2026-08-30 | 4, 5 | must start on 2026-07-15 | KPMG Project Manager; JCI IT Manager; Bosch IT Manager |
| 7 | 1.2 | **0.2 Separation compliance and stakeholder alignment** |  | 82d | 2026-07-11 | 2026-10-01 |  |  |  |
| 8 | 1.2.1 | Define legal perimeter, contracts, and supplier dependencies |  | 35d | 2026-07-11 | 2026-08-15 | 4 | must start on 2026-07-11 | KPMG Project Manager; JCI Legal Counsel; Bosch Legal Counsel |
| 9 | 1.2.2 | Assess privacy, works council, and cross-border data constraints |  | 50d | 2026-07-21 | 2026-09-09 | 8 | must start on 2026-07-21 | KPMG Data Architect; JCI Legal Counsel |
| 10 | 1.2.3 | Launch site change network and stakeholder communications |  | 62d | 2026-07-31 | 2026-10-01 | 6, 9 | must start on 2026-07-31 | KPMG Change Lead; JCI HR Lead; Bosch HR Lead |
| 11 | 1.2.4 | QG1 - Concept and transition model approved | milestone | 1d | 2026-10-01 | 2026-10-01 | 6, 9, 10 | must start on 2026-10-01 | KPMG PMO Lead; JCI Sponsor; Bosch Sponsor |
| 12 | 2 | **Phase 1: Discover landscape and design the merger zone** |  | 121d | 2026-10-02 | 2027-01-31 |  |  |  |
| 13 | 2.1 | **1.1 Application, SAP, and data discovery** |  | 87d | 2026-10-02 | 2026-12-28 |  |  |  |
| 14 | 2.1.1 | Catalogue 1,800-plus applications and assign transition disposition |  | 52d | 2026-10-02 | 2026-11-23 | 11 | must start on 2026-10-02 | KPMG Enterprise Architect; JCI Application Owner; Infosys Application Lead |
| 15 | 2.1.2 | Assess SAP landscape, interfaces, and shared services exposure |  | 62d | 2026-10-02 | 2026-12-03 | 11 | must start on 2026-10-02 | KPMG SAP Architect; JCI SAP Owner; Infosys SAP Lead |
| 16 | 2.1.3 | Map dependencies and define migration waves for apps and data |  | 35d | 2026-11-23 | 2026-12-28 | 14, 15 | must start on 2026-11-23 | KPMG Enterprise Architect; Infosys Application Lead |
| 17 | 2.2 | **1.2 Merger zone and target-state architecture** |  | 112d | 2026-10-02 | 2027-01-22 |  |  |  |
| 18 | 2.2.1 | Design merger zone hosting, network zones, and security blueprint |  | 57d | 2026-10-02 | 2026-11-28 | 11 | must start on 2026-10-02 | Infosys Infrastructure Architect; KPMG Infrastructure Architect |
| 19 | 2.2.2 | Design identity, Active Directory trust, and privileged access model |  | 55d | 2026-10-19 | 2026-12-13 | 18 | must start on 2026-10-19 | Infosys IAM Lead; KPMG Security Architect |
| 20 | 2.2.3 | Design workplace, M365, collaboration, and service management stack |  | 65d | 2026-10-29 | 2027-01-02 | 18 | must start on 2026-10-29 | Infosys Cloud Lead; KPMG Workplace Lead |
| 21 | 2.2.4 | Design Bosch landing zone integration for post-merger-zone operations |  | 45d | 2026-12-08 | 2027-01-22 | 18, 19, 20 | must start on 2026-12-08 | Bosch IT Manager; KPMG Infrastructure Architect; Infosys Programme Manager |
| 22 | 2.3 | **1.3 TSA, migration, and site sequencing design** |  | 94d | 2026-10-29 | 2027-01-31 |  |  |  |
| 23 | 2.3.1 | Define TSA service towers, KPIs, and operational reporting |  | 35d | 2026-10-29 | 2026-12-03 | 6, 11 | must start on 2026-10-29 | KPMG Project Manager; JCI IT Manager; Bosch IT Manager |
| 24 | 2.3.2 | Define exit criteria, acceptance tests, and service cutover checkpoints |  | 35d | 2026-12-03 | 2027-01-07 | 23 | must start on 2026-12-03 | KPMG Project Manager; Bosch IT Manager |
| 25 | 2.3.3 | Define data separation controls and reconciliation approach |  | 45d | 2026-11-08 | 2026-12-23 | 14, 15 | must start on 2026-11-08 | KPMG Data Architect; Infosys Data Migration Lead |
| 26 | 2.3.4 | Sequence 48 sites and 12,000 users into migration waves |  | 40d | 2026-12-08 | 2027-01-17 | 16, 20 | must start on 2026-12-08 | KPMG Deployment Lead; Infosys Service Delivery Lead |
| 27 | 2.3.5 | Design command center, cutover, and hypercare support model |  | 29d | 2027-01-02 | 2027-01-31 | 24, 26 | must start on 2027-01-02 | KPMG PMO Lead; Infosys Service Delivery Lead |

Notes:
- 1: Programme launch, TSA framing, approved extension control, partner mobilisation, and QG1 concept approval under change request version 1.1.
- 2: PMO setup with JCI, Bosch, KPMG, and Infosys.
- 3: Resources: KPMG PMO Lead + JCI Sponsor + Bosch Sponsor / Formal launch of the carve-out starting 2026-07-01. Users continue to work in the legacy JCI environment while Infosys builds the merger zone and the approved TSA extension remains available through 2027-07-31.
- 4: Resources: KPMG PMO Lead + KPMG Project Manager / Weekly governance, steering, RAID, and reporting in place.
- 5: Resources: KPMG PMO Lead + Infosys Programme Manager / Delivery scope confirms merger zone setup, operations, and migration execution.
- 6: Resources: KPMG Project Manager + JCI IT Manager + Bosch IT Manager / JCI TSA catalogue, approved extension through 2027-07-31, and exit logic defined for all in-scope IT towers.
- 7: Legal, privacy, communications, and regional alignment.
- 8: Resources: KPMG Project Manager + JCI Legal Counsel + Bosch Legal Counsel / Commercial and legal separation perimeter agreed.
- 9: Resources: KPMG Data Architect + JCI Legal Counsel / Regional data transfer and employee impact constraints captured.
- 10: Resources: KPMG Change Lead + JCI HR Lead + Bosch HR Lead / Regional comms and escalation channels activated across 48 sites.
- 11: Resources: KPMG PMO Lead + JCI Sponsor + Bosch Sponsor / Concept sign-off for JCI to merger zone to Bosch integration model.
- 12: Detailed discovery of applications, SAP, sites, data, and target merger zone design.
- 13: Discovery across more than 1,800 applications including major SAP scope.
- 14: Resources: KPMG Enterprise Architect + JCI Application Owner + Infosys Application Lead / Classify applications by retain, migrate, replace, retire, and TSA dependency.
- 15: Resources: KPMG SAP Architect + JCI SAP Owner + Infosys SAP Lead / Identify carve-out complexity across SAP systems, interfaces, and shared master data.
- 16: Resources: KPMG Enterprise Architect + Infosys Application Lead / Wave sequencing aligns critical apps, regional apps, and local edge cases.
- 17: Merger zone blueprint, security, connectivity, workplace, and Bosch end-state landing.
- 18: Resources: Infosys Infrastructure Architect + KPMG Infrastructure Architect / Target blueprint for temporary merger zone with secure JCI and Bosch connectivity.
- 19: Resources: Infosys IAM Lead + KPMG Security Architect / Trust path and identity controls support JCI to merger zone to Bosch transition.
- 20: Resources: Infosys Cloud Lead + KPMG Workplace Lead / Email, M365, Teams, endpoint management, and service desk operating design complete.
- 21: Resources: Bosch IT Manager + KPMG Infrastructure Architect + Infosys Programme Manager / Bosch target interfaces, identity landing, and support integration agreed.
- 22: TSA service tower design, migration controls, and regional sequencing.
- 23: Resources: KPMG Project Manager + JCI IT Manager + Bosch IT Manager / Service lines and TSA metrics defined for transition governance with the approved seller-service buffer through 2027-07-31.
- 24: Resources: KPMG Project Manager + Bosch IT Manager / Each tower receives explicit readiness and exit conditions.
- 25: Resources: KPMG Data Architect + Infosys Data Migration Lead / Controls for business data separation, validation, and audit trail agreed.
- 26: Resources: KPMG Deployment Lead + Infosys Service Delivery Lead / Regional wave plan balances business criticality and support capacity.
- 27: Resources: KPMG PMO Lead + Infosys Service Delivery Lead / Pre-GoLive command center and post-GoLive stabilization model defined.

| ID | WBS | Task | Type | Duration | Start | Finish | Predecessors | Constraint | Resources |
| --- | --- | --- | --- | --- | --- | --- | --- | --- | --- |
| 28 | 3 | **Phase 2: Build merger zone and prepare transition factory** |  | 180d | 2027-02-01 | 2027-07-31 |  |  |  |
| 29 | 3.1 | **2.1 Merger zone platform build** |  | 125d | 2027-02-01 | 2027-06-06 |  |  |  |
| 30 | 3.1.1 | Provision merger zone hosting, compute, storage, and base services |  | 70d | 2027-02-01 | 2027-04-12 | 18, 21 | must start on 2027-02-01 | Infosys Infrastructure Architect; KPMG Infrastructure Architect |
| 31 | 3.1.2 | Deploy network connectivity, segmentation, and core security controls |  | 100d | 2027-02-26 | 2027-06-06 | 18, 19 | must start on 2027-02-26 | Infosys Network Lead; Infosys Security Lead |
| 32 | 3.1.3 | Build identity federation, AD services, and privileged access tooling |  | 90d | 2027-02-16 | 2027-05-17 | 19 | must start on 2027-02-16 | Infosys IAM Lead; KPMG Security Architect |
| 33 | 3.1.4 | Stand up M365 tenant, collaboration tools, and service desk platform |  | 85d | 2027-03-03 | 2027-05-27 | 20, 27 | must start on 2027-03-03 | Infosys Cloud Lead; Infosys Service Delivery Lead |
| 34 | 3.1.5 | Implement monitoring, backup, disaster recovery, and observability |  | 55d | 2027-04-12 | 2027-06-06 | 30, 31, 33 | must start on 2027-04-12 | Infosys Infrastructure Architect; KPMG Infrastructure Architect |
| 35 | 3.2 | **2.2 SAP and application transition factory** |  | 180d | 2027-02-01 | 2027-07-31 |  |  |  |
| 36 | 3.2.1 | Prepare SAP environments, copies, and carve-out configuration path |  | 85d | 2027-03-03 | 2027-05-27 | 15, 25, 30 | must start on 2027-03-03 | Infosys SAP Lead; KPMG SAP Architect |
| 37 | 3.2.2 | Execute SAP separation build, role redesign, and interface rewiring |  | 40d | 2027-05-27 | 2027-07-06 | 36 | must start on 2027-05-27 | Infosys SAP Lead; KPMG SAP Architect; JCI SAP Owner |
| 38 | 3.2.3 | Build migration factory, tooling, and automation for application moves |  | 85d | 2027-02-01 | 2027-04-27 | 16, 25 | must start on 2027-02-01 | Infosys Application Lead; Infosys Data Migration Lead |
| 39 | 3.2.4 | Build and validate wave 1 critical applications in merger zone |  | 65d | 2027-04-27 | 2027-07-01 | 30, 38 | must start on 2027-04-27 | Infosys Application Lead; KPMG Enterprise Architect |
| 40 | 3.2.5 | Pre-build wave 2 standard applications and package wave 3 edge apps |  | 75d | 2027-05-12 | 2027-07-26 | 38 | must start on 2027-05-12 | Infosys Application Lead; KPMG Enterprise Architect |
| 41 | 3.3 | **2.3 Site and user migration readiness** |  | 155d | 2027-02-26 | 2027-07-31 |  |  |  |
| 42 | 3.3.1 | Build device images, enrollment policies, and endpoint packaging |  | 80d | 2027-02-26 | 2027-05-17 | 20, 26 | must start on 2027-02-26 | Infosys Workplace Lead; KPMG Workplace Lead |
| 43 | 3.3.2 | Prepare regional migration playbooks, floorwalker model, and logistics |  | 65d | 2027-04-27 | 2027-07-01 | 26, 27, 42 | must start on 2027-04-27 | KPMG Deployment Lead; Infosys Service Delivery Lead |
| 44 | 3.3.3 | Run pilot site connectivity and service desk rehearsals |  | 55d | 2027-06-06 | 2027-07-31 | 31, 33, 43 | must start on 2027-06-06 | Infosys Service Delivery Lead; JCI IT Manager |
| 45 | 3.4 | **2.4 Test planning and go-no-go preparation** |  | 95d | 2027-04-27 | 2027-07-31 |  |  |  |
| 46 | 3.4.1 | Build SIT and UAT plans, evidence templates, and sign-off workflow |  | 40d | 2027-04-27 | 2027-06-06 | 27, 33 | must start on 2027-04-27 | KPMG Test Lead; Infosys QA Lead |
| 47 | 3.4.2 | Run SAP mock cutover rehearsal 1 and capture rollback evidence |  | 30d | 2027-06-16 | 2027-07-16 | 37, 46 | must start on 2027-06-16 | Infosys SAP Lead; KPMG SAP Architect |
| 48 | 3.4.3 | Complete operational readiness dossier for command center launch |  | 55d | 2027-06-06 | 2027-07-31 | 34, 44, 46, 47 | must start on 2027-06-06 | KPMG PMO Lead; Infosys Programme Manager |
| 49 | 3.4.4 | QG2 and QG3 - Build complete and test entry approved | milestone | 1d | 2027-07-31 | 2027-07-31 | 39, 40, 44, 47, 48 | must start on 2027-07-31 | KPMG PMO Lead; JCI Sponsor; Bosch Sponsor |
| 50 | 4 | **Phase 3: Test, migrate to merger zone, and prepare Bosch landing** |  | 131d | 2027-08-01 | 2027-12-10 |  |  |  |
| 51 | 4.1 | **3.1 Formal testing and defect closure** |  | 104d | 2027-08-01 | 2027-11-13 |  |  |  |
| 52 | 4.1.1 | Execute end-to-end SIT across SAP, applications, and core services |  | 54d | 2027-08-01 | 2027-09-24 | 49 | must start on 2027-08-01 | Infosys QA Lead; KPMG Test Lead; Infosys SAP Lead |
| 53 | 4.1.2 | Run performance, security, and disaster recovery validation |  | 60d | 2027-08-15 | 2027-10-14 | 49, 34 | must start on 2027-08-15 | Infosys Security Lead; Infosys Infrastructure Architect |
| 54 | 4.1.3 | Run UAT with business teams across all regions and site groups |  | 55d | 2027-09-04 | 2027-10-29 | 46, 52 | must start on 2027-09-04 | KPMG Test Lead; JCI Business Lead; Bosch Business Lead |
| 55 | 4.1.4 | Close defects, run regression, and obtain UAT closure evidence |  | 40d | 2027-10-04 | 2027-11-13 | 52, 53, 54 | must start on 2027-10-04 | Infosys QA Lead; KPMG Test Lead |

Notes:
- 28: Build core platforms, prepare migration factory, and complete test readiness for QG2 and QG3.
- 29: Infrastructure, security, identity, workplace, and monitoring build.
- 30: Resources: Infosys Infrastructure Architect + KPMG Infrastructure Architect / Core hosting platform established for temporary operational landing zone.
- 31: Resources: Infosys Network Lead + Infosys Security Lead / Connectivity enables progressive site onboarding with required security segregation.
- 32: Resources: Infosys IAM Lead + KPMG Security Architect / Core identity services ready for user migration into the merger zone.
- 33: Resources: Infosys Cloud Lead + Infosys Service Delivery Lead / Workplace and support stack prepared for all migrated users.
- 34: Resources: Infosys Infrastructure Architect + KPMG Infrastructure Architect / Operational readiness controls active before broad migration starts.
- 35: SAP carve-out build plus app migration factory and tooling.
- 36: Resources: Infosys SAP Lead + KPMG SAP Architect / SAP technical path into merger zone prepared and validated.
- 37: Resources: Infosys SAP Lead + KPMG SAP Architect + JCI SAP Owner / Shared services, roles, and interfaces aligned to carved-out business scope.
- 38: Resources: Infosys Application Lead + Infosys Data Migration Lead / Migration tooling covers data movement, validation, and evidence collection.
- 39: Resources: Infosys Application Lead + KPMG Enterprise Architect / Critical application stack prepared first for integrated testing.
- 40: Resources: Infosys Application Lead + KPMG Enterprise Architect / Standard and specialist applications prepared for accelerated migration execution.
- 41: Endpoint readiness, local playbooks, and pilot readiness across 48 sites.
- 42: Resources: Infosys Workplace Lead + KPMG Workplace Lead / Endpoint build supports phased user migration into merger zone services.
- 43: Resources: KPMG Deployment Lead + Infosys Service Delivery Lead / Regional cutover packs and local support rosters ready.
- 44: Resources: Infosys Service Delivery Lead + JCI IT Manager / Pilot proves merger zone onboarding process and support flows before scaled migration.
- 45: Formal test planning, mock rehearsals, and readiness evidence model.
- 46: Resources: KPMG Test Lead + Infosys QA Lead / Common evidence and defect lifecycle agreed for all workstreams.
- 47: Resources: Infosys SAP Lead + KPMG SAP Architect / Initial mock validates timing, dependencies, and rollback controls.
- 48: Resources: KPMG PMO Lead + Infosys Programme Manager / Evidence package prepared for test-ready milestone and steering review.
- 49: Resources: KPMG PMO Lead + JCI Sponsor + Bosch Sponsor / Merger zone build complete and programme cleared for integrated testing and migration execution.
- 50: Formal testing, migration waves, Bosch operational readiness, and QG4 entry.
- 51: Integrated testing, UAT, security, performance, DR, and regression closure.
- 52: Resources: Infosys QA Lead + KPMG Test Lead + Infosys SAP Lead / Full end-to-end process flows validated inside the merger zone.
- 53: Resources: Infosys Security Lead + Infosys Infrastructure Architect / Capacity, resilience, and control effectiveness validated for GoLive load.
- 54: Resources: KPMG Test Lead + JCI Business Lead + Bosch Business Lead / Business users validate SAP and non-SAP journeys needed at cutover.
- 55: Resources: Infosys QA Lead + KPMG Test Lead / Critical and high defects resolved before final readiness stage.

| ID | WBS | Task | Type | Duration | Start | Finish | Predecessors | Constraint | Resources |
| --- | --- | --- | --- | --- | --- | --- | --- | --- | --- |
| 56 | 4.2 | **3.2 Migration waves into merger zone** |  | 110d | 2027-08-15 | 2027-12-03 |  |  |  |
| 57 | 4.2.1 | Migrate user waves 1 and 2 with workplace and identity cutover |  | 60d | 2027-08-15 | 2027-10-14 | 44, 49 | must start on 2027-08-15 | Infosys Service Delivery Lead; Infosys Workplace Lead; JCI IT Manager |
| 58 | 4.2.2 | Migrate user waves 3 and 4 and complete 48-site onboarding |  | 50d | 2027-10-14 | 2027-12-03 | 57, 55 | must start on 2027-10-14 | Infosys Service Delivery Lead; Infosys Workplace Lead; JCI IT Manager |
| 59 | 4.2.3 | Execute wave 1 application and data migration into merger zone |  | 45d | 2027-08-15 | 2027-09-29 | 39, 52 | must start on 2027-08-15 | Infosys Application Lead; Infosys Data Migration Lead |
| 60 | 4.2.4 | Execute wave 2 application and data migration into merger zone |  | 40d | 2027-09-29 | 2027-11-08 | 40, 59 | must start on 2027-09-29 | Infosys Application Lead; Infosys Data Migration Lead |
| 61 | 4.2.5 | Execute wave 3 specialist application completion and data closure |  | 25d | 2027-11-08 | 2027-12-03 | 60, 55 | must start on 2027-11-08 | Infosys Application Lead; Infosys Data Migration Lead |
| 62 | 4.3 | **3.3 Bosch landing and operating model readiness** |  | 90d | 2027-09-04 | 2027-12-03 |  |  |  |
| 63 | 4.3.1 | Enable Bosch connectivity, identity trust, and operational acceptance |  | 65d | 2027-09-04 | 2027-11-08 | 21, 32, 33 | must start on 2027-09-04 | Bosch IT Manager; Infosys IAM Lead; Infosys Network Lead |
| 64 | 4.3.2 | Align resolver groups, service desk, and runbooks with Bosch operations |  | 45d | 2027-10-14 | 2027-11-28 | 55, 63 | must start on 2027-10-14 | Infosys Service Delivery Lead; Bosch IT Manager |
| 65 | 4.3.3 | Run final SAP cutover rehearsal and certify rollback readiness |  | 35d | 2027-10-29 | 2027-12-03 | 37, 55 | must start on 2027-10-29 | Infosys SAP Lead; KPMG SAP Architect |
| 66 | 4.4 | **3.4 Pre-GoLive evidence pack** |  | 9d | 2027-12-01 | 2027-12-10 |  |  |  |
| 67 | 4.4.1 | Reconcile all migrations and archive formal UAT sign-off |  | 5d | 2027-12-01 | 2027-12-06 | 58, 61, 55 | must start on 2027-12-01 | KPMG PMO Lead; Infosys Programme Manager |
| 68 | 4.4.2 | Finalize infrastructure, SAP, and operational readiness dossier |  | 6d | 2027-12-01 | 2027-12-07 | 53, 64, 65 | must start on 2027-12-01 | Infosys Programme Manager; KPMG PMO Lead |
| 69 | 4.4.3 | Prepare steering gate deck and cutover recommendation |  | 4d | 2027-12-06 | 2027-12-10 | 67, 68 | must start on 2027-12-06 | KPMG PMO Lead; Bosch Sponsor; JCI Sponsor |
| 70 | 4.4.4 | QG4 - Pre-GoLive gate approved | milestone | 1d | 2027-12-10 | 2027-12-10 | 69 | must start on 2027-12-10 | KPMG PMO Lead; JCI Sponsor; Bosch Sponsor |
| 71 | 5 | **Phase 4: Final readiness and GoLive decision** |  | 21d | 2027-12-11 | 2028-01-01 |  |  |  |
| 72 | 5.1 | **4.1 Final readiness and open item closure** |  | 20d | 2027-12-11 | 2027-12-31 |  |  |  |
| 73 | 5.1.1 | Resolve residual defects, confirm health checks, and secure business sign-off |  | 20d | 2027-12-11 | 2027-12-31 | 70 | must start on 2027-12-11 | KPMG Test Lead; Infosys Service Delivery Lead; Bosch Business Lead |
| 74 | 5.1.2 | Activate cutover command center and issue final go decision |  | 2d | 2027-12-29 | 2027-12-31 | 73 | must start on 2027-12-29 | KPMG PMO Lead; Infosys Programme Manager; JCI Sponsor; Bosch Sponsor |
| 75 | 5.1.3 | GoLive - Day 1 cutover to merger zone complete | milestone | 1d | 2028-01-01 | 2028-01-01 | 74 | must start on 2028-01-01 | KPMG PMO Lead; Infosys Programme Manager; JCI Sponsor; Bosch Sponsor |
| 76 | 6 | **Phase 5: Hypercare, TSA exit, and Bosch handover** |  | 90d | 2028-01-02 | 2028-04-01 |  |  |  |
| 77 | 6.1 | **5.1 Hypercare stabilization only** |  | 90d | 2028-01-02 | 2028-04-01 |  |  |  |
| 78 | 6.1.1 | Run 24x7 incident triage and command center support |  | 90d | 2028-01-02 | 2028-04-01 | 75 | must start on 2028-01-02 | Infosys Service Delivery Lead; KPMG Project Manager |
| 79 | 6.1.2 | Operate hotfix-only release cadence and eliminate recurring problems |  | 60d | 2028-01-02 | 2028-03-02 | 75 | must start on 2028-01-02 | Infosys Application Lead; Infosys SAP Lead |
| 80 | 6.1.3 | Provide user enablement, local floorwalking, and adoption support |  | 40d | 2028-01-02 | 2028-02-11 | 75 | must start on 2028-01-02 | KPMG Change Lead; Infosys Workplace Lead |

Notes:
- 56: Users, applications, and data move from JCI to the merger zone after the approved TSA buffer period while overall programme progress and GoLive remain unchanged.
- 57: Resources: Infosys Service Delivery Lead + Infosys Workplace Lead + JCI IT Manager / First half of the user base transitions from JCI to merger zone services.
- 58: Resources: Infosys Service Delivery Lead + Infosys Workplace Lead + JCI IT Manager / All 12,000 users operate from the merger zone before QG4.
- 59: Resources: Infosys Application Lead + Infosys Data Migration Lead / Critical application and data moves completed with reconciliation.
- 60: Resources: Infosys Application Lead + Infosys Data Migration Lead / Standard application estate transitioned and validated.
- 61: Resources: Infosys Application Lead + Infosys Data Migration Lead / Specialist and regional edge applications completed before QG4.
- 62: Bosch acceptance of connectivity, support processes, and eventual integration path.
- 63: Resources: Bosch IT Manager + Infosys IAM Lead + Infosys Network Lead / Bosch confirms connectivity and identity patterns for downstream integration.
- 64: Resources: Infosys Service Delivery Lead + Bosch IT Manager / Support ownership model agreed for post-GoLive stabilization and later handover.
- 65: Resources: Infosys SAP Lead + KPMG SAP Architect / Final rehearsal confirms cutover steps and fallback timing.
- 66: Final evidence pack proving all migration and readiness activities are complete.
- 67: Resources: KPMG PMO Lead + Infosys Programme Manager / Users, applications, and data all reconciled before gate approval.
- 68: Resources: Infosys Programme Manager + KPMG PMO Lead / Operations, security, SAP, and service evidence complete for steering.
- 69: Resources: KPMG PMO Lead + Bosch Sponsor + JCI Sponsor / Formal gate recommendation prepared for QG4 decision.
- 70: Resources: KPMG PMO Lead + JCI Sponsor + Bosch Sponsor / Pre-GoLive approval granted; final readiness and open-item closure begins.
- 71: Mandatory buffer between QG4 and GoLive for closure, checks, rollback rehearsal, and sign-off.
- 72: No migrations remain; only closure, checks, sign-offs, and command center activation.
- 73: Resources: KPMG Test Lead + Infosys Service Delivery Lead + Bosch Business Lead / All QG4 actions closed and no critical alerts remain before cutover.
- 74: Resources: KPMG PMO Lead + Infosys Programme Manager + JCI Sponsor + Bosch Sponsor / Rollback path revalidated and final go decision issued before GoLive day 1.
- 75: Resources: KPMG PMO Lead + Infosys Programme Manager + JCI Sponsor + Bosch Sponsor / All in-scope users and services operate from the merger zone on GoLive.
- 76: Ninety-day stabilization only; no new development or migration after GoLive.
- 77: Support, hotfixes, enablement, and operational stabilization only.
- 78: Resources: Infosys Service Delivery Lead + KPMG Project Manager / Round-the-clock stabilization support across all regions.
- 79: Resources: Infosys Application Lead + Infosys SAP Lead / Bug fixes only after GoLive; no new features or migrations.
- 80: Resources: KPMG Change Lead + Infosys Workplace Lead / Support users in the new merger zone operating model after cutover.

| ID | WBS | Task | Type | Duration | Start | Finish | Predecessors | Constraint | Resources |
| --- | --- | --- | --- | --- | --- | --- | --- | --- | --- |
| 81 | 6.2 | **5.2 TSA exit and Bosch operations handover** |  | 80d | 2028-01-12 | 2028-04-01 |  |  |  |
| 82 | 6.2.1 | Execute TSA exits by service tower and confirm acceptance |  | 60d | 2028-01-12 | 2028-03-12 | 75 | must start on 2028-01-12 | KPMG Project Manager; JCI IT Manager; Bosch IT Manager |
| 83 | 6.2.2 | Transfer knowledge, runbooks, and service ownership to Bosch operations |  | 65d | 2028-01-12 | 2028-03-17 | 75, 64 | must start on 2028-01-12 | Bosch IT Manager; Infosys Programme Manager; KPMG Infrastructure Architect |
| 84 | 6.2.3 | Transition merger zone operating model to Bosch steady-state teams |  | 45d | 2028-02-11 | 2028-03-27 | 82, 83 | must start on 2028-02-11 | Bosch IT Manager; Infosys Programme Manager |
| 85 | 6.3 | **5.3 Governance closure and archive** |  | 30d | 2028-03-02 | 2028-04-01 |  |  |  |
| 86 | 6.3.1 | Close financials, capture lessons learned, and archive artefacts |  | 25d | 2028-03-02 | 2028-03-27 | 82, 83 | must start on 2028-03-02 | KPMG PMO Lead; KPMG Project Manager |
| 87 | 6.3.2 | QG5 - Project completion approved | milestone | 1d | 2028-04-01 | 2028-04-01 | 78, 84, 86 | must start on 2028-04-01 | KPMG PMO Lead; JCI Sponsor; Bosch Sponsor |

Notes:
- 81: Tower-by-tower TSA exit followed by Bosch operational ownership uplift.
- 82: Resources: KPMG Project Manager + JCI IT Manager + Bosch IT Manager / JCI TSA services closed according to approved exit criteria and acceptance tests.
- 83: Resources: Bosch IT Manager + Infosys Programme Manager + KPMG Infrastructure Architect / Bosch operations absorb merger zone support knowledge and control model.
- 84: Resources: Bosch IT Manager + Infosys Programme Manager / Operational ownership transitions from project mode to Bosch steady-state teams.
- 85: Closure reporting, lessons learned, and artefact archive.
- 86: Resources: KPMG PMO Lead + KPMG Project Manager / Programme closure outputs completed and repository artefacts archived.
- 87: Resources: KPMG PMO Lead + JCI Sponsor + Bosch Sponsor / Ninety-day hypercare complete, TSA exited, and handover to Bosch operations complete.
