# Trinity-CAM

Schedule from MS Project XML, 2026-07-01 to 2028-04-01.

## Calendars

- Standard: Mon-Fri as the base calendar; Sat-Sun off.

## Resources

| Resource |
| --- |
| Bosch Data Owner |
| Bosch HR Director |
| Bosch IT Manager |
| Bosch Legal Counsel |
| Bosch Programme Sponsor |
| Infosys Application Lead |
| Infosys Cloud Lead |
| Infosys Data Migration Lead |
| Infosys IAM Lead |
| Infosys Infrastructure Architect |
| Infosys Network Lead |
| Infosys Programme Manager |
| Infosys SAP Architect |
| Infosys SAP Lead |
| Infosys Security Lead |
| Infosys Service Delivery Lead |
| JCI Data Owner |
| JCI HR Director |
| JCI IT Manager |
| JCI Legal Counsel |
| JCI Programme Sponsor |
| JCI SAP Owner |
| KPMG Data Architect |
| KPMG Infrastructure Architect |
| KPMG PMO Lead |
| KPMG Project Manager |
| KPMG SAP Architect |

## Schedule

| ID | WBS | Task | Type | Duration | Start | Finish | Predecessors | Constraint | Resources |
| --- | --- | --- | --- | --- | --- | --- | --- | --- | --- |
| 1 | 1 | **Phase 0: Project Initiation & Governance** |  | 92d | 2026-07-01 | 2026-10-01 |  |  |  |
| 2 | 1.1 | **0.1 Project Governance & PMO Setup** |  | 46d | 2026-07-01 | 2026-08-16 |  |  |  |
| 3 | 1.1.1 | QG0 - Programme Kickoff & Mobilisation | milestone | 0d | 2026-07-01 | 2026-07-01 |  | must start on 2026-07-01 | KPMG PMO Lead; JCI Programme Sponsor; Bosch Programme Sponsor |
| 4 | 1.1.2 | Establish KPMG PMO & Project Management Office |  | 14d | 2026-07-01 | 2026-07-15 | 3 | must start on 2026-07-01 | KPMG PMO Lead; KPMG Project Manager |
| 5 | 1.1.3 | Appoint Project Steering Committee (JCI + Bosch + KPMG) |  | 10d | 2026-07-01 | 2026-07-11 | 3 | must start on 2026-07-01 | KPMG PMO Lead; JCI Programme Sponsor; Bosch Programme Sponsor |
| 6 | 1.1.4 | Define RACI & IT Workstream Structure |  | 14d | 2026-07-12 | 2026-07-26 | 5 | must start on 2026-07-12 | KPMG Project Manager; KPMG PMO Lead |
| 7 | 1.1.5 | Onboard Infosys as IT Delivery Partner (Merger Zone) |  | 45d | 2026-07-02 | 2026-08-16 | 3 | must start on 2026-07-02 | KPMG PMO Lead; Infosys Programme Manager |
| 8 | 1.1.6 | Stakeholder Communication Plan (JCI / Bosch / Infosys / 48 Sites) |  | 14d | 2026-07-16 | 2026-07-30 | 4 | must start on 2026-07-16 | KPMG Project Manager; KPMG PMO Lead |
| 9 | 1.1.7 | Initial Risk & Issue Register Baseline |  | 21d | 2026-07-23 | 2026-08-13 | 8 | must start on 2026-07-23 | KPMG Project Manager |
| 10 | 1.2 | **0.2 Legal & Regulatory Compliance Framework** |  | 71d | 2026-07-11 | 2026-09-20 |  |  |  |
| 11 | 1.2.1 | GDPR & Data Privacy Assessment (12,000 Users - 48 Sites) |  | 46d | 2026-07-11 | 2026-08-26 | 6 | must start on 2026-07-11 | KPMG Project Manager; JCI Legal Counsel |
| 12 | 1.2.2 | Legal Entity Separation & Carve-out Structure |  | 46d | 2026-07-11 | 2026-08-26 | 6 | must start on 2026-07-11 | KPMG Project Manager; JCI Legal Counsel; Bosch Legal Counsel |
| 13 | 1.2.3 | Regulatory & Competition Law Review (Multi-jurisdiction) |  | 46d | 2026-07-31 | 2026-09-15 | 11 | must start on 2026-07-31 | KPMG Project Manager; JCI Legal Counsel |
| 14 | 1.2.4 | QG1 - Concept Approval | milestone | 0d | 2026-10-01 | 2026-10-01 | 9, 13 | must start on 2026-10-01 | KPMG PMO Lead; JCI Programme Sponsor; Bosch Programme Sponsor |
| 15 | 2 | **Phase 1: Discovery & Architecture Design** |  | 122d | 2026-10-01 | 2027-01-31 |  |  |  |
| 16 | 2.1 | **1.1 Application Landscape Assessment (1,800+ Applications)** |  | 111d | 2026-10-01 | 2027-01-20 |  |  |  |
| 17 | 2.1.1 | SAP System Landscape Analysis (Full SAP Scope) |  | 45d | 2026-10-01 | 2026-11-15 | 14 | must start on 2026-10-01 | KPMG SAP Architect; Infosys SAP Lead; JCI SAP Owner |
| 18 | 2.1.2 | Non-SAP Application Inventory & Classification (1,800+ Apps) |  | 60d | 2026-10-01 | 2026-11-30 | 14 | must start on 2026-10-01 | KPMG Data Architect; Infosys Application Lead; JCI IT Manager |
| 19 | 2.1.3 | Application Dependency Mapping & Interface Analysis |  | 35d | 2026-11-15 | 2026-12-20 | 17 | must start on 2026-11-15 | KPMG Data Architect; Infosys Application Lead |
| 20 | 2.1.4 | Application Migration Wave Planning (Waves 1-3) |  | 31d | 2026-12-20 | 2027-01-20 | 18, 19 | must start on 2026-12-20 | KPMG Data Architect; KPMG PMO Lead; Infosys Application Lead |
| 21 | 2.2 | **1.2 Infrastructure & Network Assessment (48 Sites)** |  | 77d | 2026-10-01 | 2026-12-17 |  |  |  |
| 22 | 2.2.1 | JCI Network Architecture Review (48 Sites) |  | 30d | 2026-10-01 | 2026-10-31 | 14 | must start on 2026-10-01 | KPMG Infrastructure Architect; Infosys Network Lead; JCI IT Manager |
| 23 | 2.2.2 | Data Centre & Cloud Inventory (JCI Hosted Assets) |  | 31d | 2026-10-01 | 2026-11-01 | 14 | must start on 2026-10-01 | KPMG Infrastructure Architect; JCI IT Manager |
| 24 | 2.2.3 | Network Segregation Design (48 Sites to Merger Zone) |  | 46d | 2026-11-01 | 2026-12-17 | 22, 23 | must start on 2026-11-01 | KPMG Infrastructure Architect; Infosys Network Lead |
| 25 | 2.2.4 | End-User Device Estate Assessment (12,000 Users) |  | 45d | 2026-10-01 | 2026-11-15 | 14 | must start on 2026-10-01 | KPMG Infrastructure Architect; JCI IT Manager |

Notes:
- 1: PMO mobilisation, governance, Infosys onboarding, legal, QG1 approval
- 2: KPMG PMO, steering, RACI, Infosys onboarding
- 3: Resources: KPMG PMO Lead + JCI Programme Sponsor + Bosch Programme Sponsor / Programme officially started; all workstream leads mobilised; Infosys contractually engaged
- 4: Resources: KPMG PMO Lead + KPMG Project Manager / PMO governance tools active; reporting cadence; SharePoint site live
- 5: Resources: KPMG PMO Lead + JCI Programme Sponsor + Bosch Programme Sponsor / Steering committee chartered; meeting calendar confirmed
- 6: Resources: KPMG Project Manager + KPMG PMO Lead / RACI approved; nine workstreams defined: Infrastructure, SAP, Applications, Identity, End-User Workplace, Data Migration, Security/GDPR, TSA Exit/HR/Legal, Programme Control
- 7: Resources: KPMG PMO Lead + Infosys Programme Manager / Infosys Statement of Work executed; MZ scope confirmed; delivery team onsite
- 8: Resources: KPMG Project Manager + KPMG PMO Lead / Comms plan approved; escalation path; change management approach
- 9: Resources: KPMG Project Manager / Risk register v1.0 baselined; top 25 risks scored and owned (24 threats, 1 opportunity)
- 10: GDPR, legal entity separation, competition law
- 11: Resources: KPMG Project Manager + JCI Legal Counsel / Privacy impact assessment; data residency; cross-border transfer rules
- 12: Resources: KPMG Project Manager + JCI Legal Counsel + Bosch Legal Counsel / NewCo SPA; legal entity readiness; Integration model structures confirmed
- 13: Resources: KPMG Project Manager + JCI Legal Counsel / Multi-jurisdiction clearance tracking; antitrust filings; no blocking conditions
- 14: Resources: KPMG PMO Lead + JCI Programme Sponsor + Bosch Programme Sponsor / Project concept approved; Infosys scope confirmed; proceed to Discovery & Architecture
- 15: App inventory 1800+, MZ architecture, TSA catalogue, data strategy
- 16: SAP analysis, non-SAP inventory, dependency mapping, wave planning
- 17: Resources: KPMG SAP Architect + Infosys SAP Lead + JCI SAP Owner / SAP component list; modules in scope; interface inventory; carve-out complexity
- 18: Resources: KPMG Data Architect + Infosys Application Lead + JCI IT Manager / Full app inventory; ownership; migration classification: Keep/Retire/Replace/Re-host
- 19: Resources: KPMG Data Architect + Infosys Application Lead / Cross-app and SAP dependencies; integration interface inventory; circular deps flagged
- 20: Resources: KPMG Data Architect + KPMG PMO Lead + Infosys Application Lead / Wave 1: ~400 critical apps; Wave 2: ~800 standard; Wave 3: ~600 local/specialist
- 21: JCI network, DC/cloud, segregation design, device estate
- 22: Resources: KPMG Infrastructure Architect + Infosys Network Lead + JCI IT Manager / WAN, LAN, SD-WAN, firewall topology per site; bandwidth baseline
- 23: Resources: KPMG Infrastructure Architect + JCI IT Manager / Primary & secondary DC; cloud workloads; contracts; hosting obligations
- 24: Resources: KPMG Infrastructure Architect + Infosys Network Lead / Site-by-site network separation design; MZ connectivity model; SD-WAN approach
- 25: Resources: KPMG Infrastructure Architect + JCI IT Manager / Device inventory by site; OS; age; refresh plan; Intune/SCCM readiness

| ID | WBS | Task | Duration | Start | Finish | Predecessors | Constraint | Resources |
| --- | --- | --- | --- | --- | --- | --- | --- | --- |
| 26 | 2.3 | **1.3 Merger Zone Architecture Design (Infosys-led)** | 84d | 2026-10-01 | 2026-12-24 |  |  |  |
| 27 | 2.3.1 | Merger Zone Infrastructure Blueprint (Infosys) | 61d | 2026-10-01 | 2026-12-01 | 22, 23 | must start on 2026-10-01 | Infosys Infrastructure Architect; KPMG Infrastructure Architect |
| 28 | 2.3.2 | Identity & Active Directory Design (Merger Zone) | 46d | 2026-10-01 | 2026-11-16 | 25 | must start on 2026-10-01 | KPMG Infrastructure Architect; Infosys IAM Lead |
| 29 | 2.3.3 | Core Services Architecture (Email, M365, Collaboration, Security) | 61d | 2026-10-24 | 2026-12-24 | 27 | must start on 2026-10-24 | KPMG Infrastructure Architect; Infosys Cloud Lead |
| 30 | 2.4 | **1.4 TSA Service Catalogue & Exit Plan** | 92d | 2026-10-01 | 2027-01-01 |  |  |  |
| 31 | 2.4.1 | TSA Service Definition & SLA Agreement per Service Line | 31d | 2026-10-01 | 2026-11-01 | 14 | must start on 2026-10-01 | KPMG Project Manager; JCI IT Manager; Bosch IT Manager |
| 32 | 2.4.2 | TSA Governance & Transition Reporting Framework | 30d | 2026-11-01 | 2026-12-01 | 31 | must start on 2026-11-01 | KPMG Project Manager; JCI IT Manager |
| 33 | 2.4.3 | TSA Exit Criteria per Service Line | 31d | 2026-12-01 | 2027-01-01 | 32 | must start on 2026-12-01 | KPMG Project Manager; KPMG PMO Lead |
| 34 | 2.5 | **1.5 Data Segregation & Migration Strategy** | 101d | 2026-10-01 | 2027-01-10 |  |  |  |
| 35 | 2.5.1 | Data Classification & Ownership (JCI Aircon Business) | 46d | 2026-10-01 | 2026-11-16 | 14 | must start on 2026-10-01 | KPMG Data Architect; JCI Data Owner; Bosch Data Owner |
| 36 | 2.5.2 | Data Migration Approach: JCI to Merger Zone to Bosch | 55d | 2026-11-16 | 2027-01-10 | 35 | must start on 2026-11-16 | KPMG Data Architect; Infosys Data Migration Lead |
| 37 | 2.6 | **1.6 HR & People Transition Planning** | 92d | 2026-10-01 | 2027-01-01 |  |  |  |
| 38 | 2.6.1 | Employee Mapping: JCI Aircon to Carve-out Entity (12,000 Users) | 45d | 2026-10-01 | 2026-11-15 | 14 | must start on 2026-10-01 | KPMG Project Manager; JCI HR Director; Bosch HR Director |
| 39 | 2.6.2 | People Communication Plan (Multi-region, 48 Sites) | 47d | 2026-11-15 | 2027-01-01 | 38 | must start on 2026-11-15 | KPMG Project Manager; JCI HR Director |
| 40 | 3 | **Phase 2: Merger Zone Build & Configuration (Infosys)** | 180d | 2027-02-01 | 2027-07-31 |  |  |  |
| 41 | 3.1 | **2.1 Infrastructure Build - Merger Zone (Infosys)** | 121d | 2027-02-01 | 2027-06-02 |  |  |  |
| 42 | 3.1.1 | Merger Zone DC / Cloud Environment Setup (Infosys) | 60d | 2027-02-01 | 2027-04-02 | 29, 27 | must start on 2027-02-01 | Infosys Infrastructure Architect; KPMG Infrastructure Architect |
| 43 | 3.1.2 | Network Connectivity: All 48 Sites to Merger Zone (Infosys) | 91d | 2027-03-03 | 2027-06-02 | 24 | must start on 2027-03-03 | Infosys Network Lead; KPMG Infrastructure Architect; JCI IT Manager |
| 44 | 3.1.3 | Security Architecture & Firewall Implementation (Merger Zone) | 60d | 2027-02-16 | 2027-04-17 | 29 | must start on 2027-02-16 | Infosys Security Lead; KPMG Infrastructure Architect |
| 45 | 3.1.4 | Backup, Disaster Recovery & Business Continuity Setup | 45d | 2027-04-02 | 2027-05-17 | 44 | must start on 2027-04-02 | Infosys Infrastructure Architect; KPMG Infrastructure Architect |
| 46 | 3.2 | **2.2 Identity & Access Management (Merger Zone)** | 90d | 2027-02-01 | 2027-05-02 |  |  |  |
| 47 | 3.2.1 | Active Directory Forest Setup (Merger Zone) | 43d | 2027-02-01 | 2027-03-16 | 28 | must start on 2027-02-01 | Infosys IAM Lead; KPMG Infrastructure Architect |
| 48 | 3.2.2 | Identity Federation: JCI to Merger Zone (SSO) | 46d | 2027-03-16 | 2027-05-01 | 47 | must start on 2027-03-16 | Infosys IAM Lead; KPMG Infrastructure Architect |
| 49 | 3.2.3 | Privileged Access Management (PAM) Setup | 30d | 2027-03-17 | 2027-04-16 | 47 | must start on 2027-03-17 | Infosys Security Lead; KPMG Infrastructure Architect |
| 50 | 3.2.4 | MFA & Security Policy Enforcement (12,000 Users) | 30d | 2027-04-02 | 2027-05-02 | 49 | must start on 2027-04-02 | Infosys Security Lead; KPMG Infrastructure Architect |

Notes:
- 26: MZ blueprint, AD design, core services architecture
- 27: Resources: Infosys Infrastructure Architect + KPMG Infrastructure Architect / MZ DC/cloud topology; compute; storage; network zones; security perimeter
- 28: Resources: KPMG Infrastructure Architect + Infosys IAM Lead / MZ AD forest design; trust model with JCI and Bosch; federation approach
- 29: Resources: KPMG Infrastructure Architect + Infosys Cloud Lead / MZ M365 tenant architecture; Teams; security tooling; ITSM platform selection
- 30: JCI TSA services catalogued; SLA agreed; exit criteria defined
- 31: Resources: KPMG Project Manager + JCI IT Manager + Bosch IT Manager / All JCI services to continue under TSA catalogued; SLA and KPI per service line
- 32: Resources: KPMG Project Manager + JCI IT Manager / Monthly TSA service reports; escalation path; service exit trigger criteria
- 33: Resources: KPMG Project Manager + KPMG PMO Lead / Exit criteria defined per service; acceptance testing approach; sign-off process
- 34: Data classification, migration approach JCI > MZ > Bosch
- 35: Resources: KPMG Data Architect + JCI Data Owner + Bosch Data Owner / PII, IP, regulated data identified; data ownership matrix approved
- 36: Resources: KPMG Data Architect + Infosys Data Migration Lead / Tooling selection; ETL methodology; data validation; SAP non-selective approach
- 37: 12,000-user mapping; multi-jurisdiction employment; comms plan
- 38: Resources: KPMG Project Manager + JCI HR Director + Bosch HR Director / User list by site; role mapping; TUPE and transfer rules per jurisdiction
- 39: Resources: KPMG Project Manager + JCI HR Director / Phased comms per wave; change management; union consultation plans
- 40: MZ infrastructure build, IAM, core IT, SAP system copy, app wave 1
- 41: DC/cloud, network, security, backup/DR
- 42: Resources: Infosys Infrastructure Architect + KPMG Infrastructure Architect / Primary and secondary MZ hosting environments provisioned and validated
- 43: Resources: Infosys Network Lead + KPMG Infrastructure Architect + JCI IT Manager / Site-by-site WAN/SD-WAN activation; phased rollout; all 48 sites connected to MZ
- 44: Resources: Infosys Security Lead + KPMG Infrastructure Architect / MZ perimeter security; DLP; endpoint protection; SOC integration; IDS/IPS
- 45: Resources: Infosys Infrastructure Architect + KPMG Infrastructure Architect / DR test plan; RPO/RTO targets defined and validated; backup cadence confirmed
- 46: AD forest, identity federation, PAM, MFA
- 47: Resources: Infosys IAM Lead + KPMG Infrastructure Architect / MZ AD forest live; OU structure; delegation model; trust relationships
- 48: Resources: Infosys IAM Lead + KPMG Infrastructure Architect / Federation live; ADFS/Azure AD Connect; JCI users authenticate to MZ services
- 49: Resources: Infosys Security Lead + KPMG Infrastructure Architect / PAM tooling deployed; all admin accounts vaulted; session recording active
- 50: Resources: Infosys Security Lead + KPMG Infrastructure Architect / MFA enrolled for all 12,000 users; conditional access; security baselines enforced

| ID | WBS | Task | Type | Duration | Start | Finish | Predecessors | Constraint | Resources |
| --- | --- | --- | --- | --- | --- | --- | --- | --- | --- |
| 51 | 3.3 | **2.3 Core IT Services Build (Merger Zone)** |  | 121d | 2027-02-01 | 2027-06-02 |  |  |  |
| 52 | 3.3.1 | Email & M365 Tenant Setup (Merger Zone) |  | 60d | 2027-02-01 | 2027-04-02 | 29 | must start on 2027-02-01 | Infosys Cloud Lead; KPMG Infrastructure Architect |
| 53 | 3.3.2 | SharePoint & OneDrive Migration Tooling Setup |  | 45d | 2027-04-02 | 2027-05-17 | 52, 42 | must start on 2027-04-02 | Infosys Cloud Lead; KPMG Infrastructure Architect |
| 54 | 3.3.3 | Collaboration Tools: Teams & VOIP (Merger Zone) |  | 46d | 2027-04-02 | 2027-05-18 | 52 | must start on 2027-04-02 | Infosys Cloud Lead; KPMG Infrastructure Architect |
| 55 | 3.3.4 | Service Desk & ITSM Tool Configuration (Infosys) |  | 61d | 2027-03-03 | 2027-05-03 | 29 | must start on 2027-03-03 | Infosys Service Delivery Lead; KPMG Project Manager |
| 56 | 3.4 | **2.4 SAP Build & Configuration (Infosys SAP Team)** |  | 180d | 2027-02-01 | 2027-07-31 |  |  |  |
| 57 | 3.4.1 | SAP System Copy: JCI to Merger Zone |  | 60d | 2027-04-02 | 2027-06-01 | 20, 42 | must start on 2027-04-02 | Infosys SAP Architect; KPMG SAP Architect; JCI SAP Owner |
| 58 | 3.4.2 | SAP Client Separation & Carve-out Configuration |  | 30d | 2027-06-01 | 2027-07-01 | 57 | must start on 2027-06-01 | Infosys SAP Architect; KPMG SAP Architect; JCI SAP Owner |
| 59 | 3.4.3 | SAP Interface Rewiring: JCI to Merger Zone Endpoints |  | 30d | 2027-07-01 | 2027-07-31 | 58 | must start on 2027-07-01 | Infosys SAP Architect; KPMG SAP Architect |
| 60 | 3.4.4 | SAP Security Role Redesign & Authorization Model |  | 30d | 2027-06-01 | 2027-07-01 | 57 | must start on 2027-06-01 | Infosys SAP Architect; KPMG SAP Architect |
| 61 | 3.4.5 | SAP Data Migration Preparation (Technical Setup) |  | 75d | 2027-02-01 | 2027-04-17 | 36 | must start on 2027-02-01 | Infosys Data Migration Lead; KPMG Data Architect |
| 62 | 3.5 | **2.5 Non-SAP Application Migration - Wave 1 (~400 Critical Apps)** |  | 176d | 2027-02-01 | 2027-07-27 |  |  |  |
| 63 | 3.5.1 | Wave 1 Application Prioritization & Scope Finalization |  | 30d | 2027-02-01 | 2027-03-03 | 20 | must start on 2027-02-01 | KPMG Data Architect; Infosys Application Lead |
| 64 | 3.5.2 | Wave 1 Application Setup in Merger Zone |  | 46d | 2027-04-02 | 2027-05-18 | 63, 42 | must start on 2027-04-02 | Infosys Application Lead; KPMG Infrastructure Architect |
| 65 | 3.5.3 | Wave 1 Data Migration Execution |  | 45d | 2027-05-18 | 2027-07-02 | 64 | must start on 2027-05-18 | Infosys Data Migration Lead; KPMG Data Architect |
| 66 | 3.5.4 | Wave 1 Application Smoke Testing & Validation |  | 25d | 2027-07-02 | 2027-07-27 | 65 | must start on 2027-07-02 | Infosys Application Lead; KPMG Infrastructure Architect; JCI IT Manager |
| 67 | 3.5.5 | QG2&3 - Build Complete & Test Ready | milestone | 0d | 2027-07-31 | 2027-07-31 | 59, 60, 66 | must start on 2027-07-31 | KPMG PMO Lead; JCI Programme Sponsor; Bosch Programme Sponsor |
| 68 | 4 | **Phase 3: Testing & Migration Waves** |  | 122d | 2027-08-01 | 2027-12-01 |  |  |  |
| 69 | 4.1 | **3.1 Systems Integration Testing** |  | 62d | 2027-08-01 | 2027-10-02 |  |  |  |
| 70 | 4.1.1 | End-to-End Integration Test: SAP & Non-SAP (Wave 1) |  | 46d | 2027-08-01 | 2027-09-16 | 67 | must start on 2027-08-01 | Infosys SAP Architect; KPMG SAP Architect; KPMG Infrastructure Architect |
| 71 | 4.1.2 | Performance & Load Testing (12,000 Concurrent Users) |  | 47d | 2027-08-01 | 2027-09-17 | 67 | must start on 2027-08-01 | Infosys Infrastructure Architect; KPMG Infrastructure Architect |
| 72 | 4.1.3 | Security Penetration Testing (Merger Zone & Applications) |  | 30d | 2027-08-25 | 2027-09-24 | 67 | must start on 2027-08-25 | Infosys Security Lead; KPMG Infrastructure Architect |
| 73 | 4.1.4 | Disaster Recovery Failover Test |  | 30d | 2027-08-25 | 2027-09-24 | 45 | must start on 2027-08-25 | Infosys Infrastructure Architect; KPMG Infrastructure Architect |
| 74 | 4.2 | **3.2 User Acceptance Testing (UAT)** |  | 109d | 2027-08-01 | 2027-11-18 |  |  |  |
| 75 | 4.2.1 | UAT Planning & Test Case Design (All Workstreams) |  | 31d | 2027-08-01 | 2027-09-01 | 67 | must start on 2027-08-01 | KPMG Project Manager; JCI IT Manager; Bosch IT Manager |
| 76 | 4.2.2 | UAT Execution: All User Groups (12,000 Users, Phased) |  | 46d | 2027-09-01 | 2027-10-17 | 75, 70 | must start on 2027-09-01 | KPMG Project Manager; Infosys Service Delivery Lead; JCI IT Manager |
| 77 | 4.2.3 | UAT Defect Triage & Resolution |  | 31d | 2027-10-01 | 2027-11-01 | 76 | must start on 2027-10-01 | Infosys Application Lead; Infosys SAP Architect; KPMG Project Manager |
| 78 | 4.2.4 | UAT Sign-off by Business & IT Owners (All Sites) |  | 15d | 2027-11-01 | 2027-11-16 | 77 | must start on 2027-11-01 | KPMG PMO Lead; JCI IT Manager; Bosch IT Manager |

Notes:
- 51: Email/M365, SharePoint, Teams, ITSM service desk
- 52: Resources: Infosys Cloud Lead + KPMG Infrastructure Architect / MZ M365 tenant provisioned; mail flow validated; DNS prepared for cutover
- 53: Resources: Infosys Cloud Lead + KPMG Infrastructure Architect / Migration tooling configured and tested; user data migration pipeline validated
- 54: Resources: Infosys Cloud Lead + KPMG Infrastructure Architect / Teams provisioned; VOIP platform migrated; telephony operational for MZ users
- 55: Resources: Infosys Service Delivery Lead + KPMG Project Manager / ITSM platform live; service catalogue; SLA monitoring; L1/L2 support model
- 56: SAP system copy, client sep, interface rewiring, security, data prep
- 57: Resources: Infosys SAP Architect + KPMG SAP Architect + JCI SAP Owner / Full SAP landscape replication into MZ environment; technical validation complete
- 58: Resources: Infosys SAP Architect + KPMG SAP Architect + JCI SAP Owner / Aircon business data separated; shared client access revoked; configuration validated
- 59: Resources: Infosys SAP Architect + KPMG SAP Architect / All outbound/inbound SAP interfaces rewired to MZ endpoints; EDI remapped
- 60: Resources: Infosys SAP Architect + KPMG SAP Architect / Role matrix redesigned; SoD rules applied; SAP GRC configured for MZ
- 61: Resources: Infosys Data Migration Lead + KPMG Data Architect / Migration tooling; data mapping; extraction rules; transformation logic; test datasets
- 62: Prioritization, setup in MZ, data migration, smoke testing
- 63: Resources: KPMG Data Architect + Infosys Application Lead / Wave 1 app list frozen; business criticality confirmed; migration sequence defined
- 64: Resources: Infosys Application Lead + KPMG Infrastructure Architect / All Wave 1 apps installed and configured in MZ; integration points validated
- 65: Resources: Infosys Data Migration Lead + KPMG Data Architect / Data extracted from JCI; transformed; loaded into MZ; integrity checks passed
- 66: Resources: Infosys Application Lead + KPMG Infrastructure Architect + JCI IT Manager / Functional smoke tests passed; business owners sign-off Wave 1 app readiness
- 67: Resources: KPMG PMO Lead + JCI Programme Sponsor + Bosch Programme Sponsor / MZ infrastructure live; SAP interfaces rewired; Wave 1 apps validated; proceed to testing
- 68: SIT, UAT, 12k user migrations, app waves 2-3, SAP cutover rehearsal
- 69: E2E, performance, security pen test, DR test
- 70: Resources: Infosys SAP Architect + KPMG SAP Architect + KPMG Infrastructure Architect / Full E2E flows across SAP, Wave 1 apps, MZ services; defects logged and resolved
- 71: Resources: Infosys Infrastructure Architect + KPMG Infrastructure Architect / Peak load simulation; 12,000 concurrent users; MZ performance baselines met
- 72: Resources: Infosys Security Lead + KPMG Infrastructure Architect / External and internal pen test; critical findings remediated; security report signed
- 73: Resources: Infosys Infrastructure Architect + KPMG Infrastructure Architect / Full DR failover executed; RTO/RPO targets validated; runbook confirmed
- 74: UAT planning, execution, defect resolution, sign-off
- 75: Resources: KPMG Project Manager + JCI IT Manager + Bosch IT Manager / Test scenarios per workstream; 48-site scope covered; business testers briefed
- 76: Resources: KPMG Project Manager + Infosys Service Delivery Lead + JCI IT Manager / Phased UAT across all 48 sites; SAP transactions; Wave 1 apps; collaboration tools
- 77: Resources: Infosys Application Lead + Infosys SAP Architect + KPMG Project Manager / All critical and high defects resolved; regression tested; defect log shows zero blocking
- 78: Resources: KPMG PMO Lead + JCI IT Manager + Bosch IT Manager / Formal UAT sign-off received; go-forward confirmation from all 48 sites

| ID | WBS | Task | Type | Duration | Start | Finish | Predecessors | Constraint | Resources |
| --- | --- | --- | --- | --- | --- | --- | --- | --- | --- |
| 79 | 4.3 | **3.3 User Migration Waves (12,000 Users - 48 Sites)** |  | 119d | 2027-08-01 | 2027-11-28 |  |  |  |
| 80 | 4.3.1 | User Migration Wave 1: Sites 1-12 (3,000 Users) |  | 32d | 2027-08-16 | 2027-09-17 | 67 | must start on 2027-08-16 | Infosys Service Delivery Lead; KPMG Infrastructure Architect; JCI IT Manager |
| 81 | 4.3.2 | User Migration Wave 2: Sites 13-24 (3,000 Users) |  | 31d | 2027-09-17 | 2027-10-18 | 80 | must start on 2027-09-17 | Infosys Service Delivery Lead; KPMG Infrastructure Architect; JCI IT Manager |
| 82 | 4.3.3 | User Migration Wave 3: Sites 25-36 (3,000 Users) |  | 23d | 2027-10-18 | 2027-11-10 | 81 | must start on 2027-10-18 | Infosys Service Delivery Lead; KPMG Infrastructure Architect; JCI IT Manager |
| 83 | 4.3.4 | User Migration Wave 4: Sites 37-48 (3,000 Users) |  | 18d | 2027-11-10 | 2027-11-28 | 82 | must start on 2027-11-10 | Infosys Service Delivery Lead; KPMG Infrastructure Architect; JCI IT Manager |
| 84 | 4.4 | **3.4 Non-SAP Application Migration - Wave 2 (~800 Standard Apps)** |  | 92d | 2027-08-01 | 2027-11-01 |  |  |  |
| 85 | 4.4.1 | Wave 2 Application Migration & Integration Testing |  | 46d | 2027-08-01 | 2027-09-16 | 67 | must start on 2027-08-01 | Infosys Application Lead; KPMG Data Architect |
| 86 | 4.4.2 | Wave 2 Data Migration Execution |  | 46d | 2027-09-16 | 2027-11-01 | 85 | must start on 2027-09-16 | Infosys Data Migration Lead; KPMG Data Architect |
| 87 | 4.5 | **3.5 Non-SAP Application Migration - Wave 3 (~600 Specialist Apps)** |  | 61d | 2027-10-01 | 2027-12-01 |  |  |  |
| 88 | 4.5.1 | Wave 3 Application Migration & Integration Testing |  | 46d | 2027-10-01 | 2027-11-16 | 86 | must start on 2027-10-01 | Infosys Application Lead; KPMG Data Architect |
| 89 | 4.5.2 | Wave 3 Data Migration Execution |  | 29d | 2027-11-01 | 2027-11-30 | 86 | must start on 2027-11-01 | Infosys Data Migration Lead; KPMG Data Architect |
| 90 | 4.6 | **3.6 SAP Production Cutover Planning & Rehearsal** |  | 86d | 2027-09-01 | 2027-11-26 |  |  |  |
| 91 | 4.6.1 | SAP GoLive Cutover Strategy & Run Book |  | 45d | 2027-09-01 | 2027-10-16 | 61 | must start on 2027-09-01 | Infosys SAP Architect; KPMG SAP Architect; JCI SAP Owner |
| 92 | 4.6.2 | SAP Mock Cutover Exercise 1 (Full Dry Run) |  | 20d | 2027-10-16 | 2027-11-05 | 91 | must start on 2027-10-16 | Infosys SAP Architect; KPMG SAP Architect; JCI SAP Owner |
| 93 | 4.6.3 | SAP Mock Cutover Exercise 2 (Final Rehearsal) |  | 21d | 2027-11-05 | 2027-11-26 | 92 | must start on 2027-11-05 | Infosys SAP Architect; KPMG SAP Architect; JCI SAP Owner |
| 94 | 5 | **Phase 4: Pre-GoLive Readiness** |  | 31d | 2027-12-01 | 2028-01-01 |  |  |  |
| 95 | 5.1 | **4.1 QG4 Gate Preparation** |  | 7d | 2027-12-01 | 2027-12-08 |  |  |  |
| 96 | 5.1.1 | All Migration Waves Completed & Verified (Users + Apps + Data) |  | 6d | 2027-12-01 | 2027-12-07 | 83, 89, 93, 78 | must start on 2027-12-01 | KPMG PMO Lead; Infosys Programme Manager |
| 97 | 5.1.2 | Infrastructure Readiness Sign-off (Infosys + KPMG) |  | 6d | 2027-12-01 | 2027-12-07 | 73, 50 | must start on 2027-12-01 | Infosys Infrastructure Architect; KPMG Infrastructure Architect |
| 98 | 5.1.3 | SAP Production Readiness Confirmed |  | 6d | 2027-12-01 | 2027-12-07 | 93 | must start on 2027-12-01 | Infosys SAP Architect; KPMG SAP Architect; JCI SAP Owner |
| 99 | 5.1.4 | Cutover Rollback Plan Approved |  | 6d | 2027-12-01 | 2027-12-07 | 91 | must start on 2027-12-01 | KPMG PMO Lead; Infosys Programme Manager |
| 100 | 5.1.5 | QG4 - Pre-GoLive Gate Approval | milestone | 0d | 2027-12-08 | 2027-12-08 | 96, 97, 98, 99 | must start on 2027-12-08 | KPMG PMO Lead; JCI Programme Sponsor; Bosch Programme Sponsor |
| 101 | 5.2 | **4.2 Final Readiness & Open Item Closure** |  | 21d | 2027-12-09 | 2027-12-30 |  |  |  |
| 102 | 5.2.1 | All UAT Defects Resolved - QA Sign-off |  | 8d | 2027-12-09 | 2027-12-17 | 100 | must start on 2027-12-09 | KPMG Project Manager; Infosys Service Delivery Lead |
| 103 | 5.2.2 | Final Infrastructure & Systems Health Checks (No Critical Alerts) |  | 12d | 2027-12-09 | 2027-12-21 | 100 | must start on 2027-12-09 | Infosys Infrastructure Architect; KPMG Infrastructure Architect |
| 104 | 5.2.3 | Cutover Rollback Test Executed (Production-like) |  | 10d | 2027-12-10 | 2027-12-20 | 100 | must start on 2027-12-10 | Infosys SAP Architect; KPMG Project Manager |
| 105 | 5.2.4 | Business & Steering Committee Sign-off (GoLive Authorisation) |  | 7d | 2027-12-22 | 2027-12-29 | 102, 103, 104 | must start on 2027-12-22 | KPMG PMO Lead; JCI Programme Sponsor; Bosch Programme Sponsor |
| 106 | 5.2.5 | GoLive - Merger Zone Day 1 Cutover (2028-01-01) | milestone | 0d | 2028-01-01 | 2028-01-01 | 105 | must start on 2028-01-01 | KPMG PMO Lead; Infosys Programme Manager; JCI Programme Sponsor; Bosch Programme Sponsor |

Notes:
- 79: Four waves covering all 12,000 users across 48 sites - completed pre-QG4
- 80: Resources: Infosys Service Delivery Lead + KPMG Infrastructure Architect + JCI IT Manager / Wave 1 users migrated to MZ; devices enrolled; M365 mailboxes cut; service desk live
- 81: Resources: Infosys Service Delivery Lead + KPMG Infrastructure Architect + JCI IT Manager / Wave 2 sites migrated; L1/L2 support cover maintained throughout window
- 82: Resources: Infosys Service Delivery Lead + KPMG Infrastructure Architect + JCI IT Manager / Wave 3 complete; all APAC and EMEA tail sites on MZ services
- 83: Resources: Infosys Service Delivery Lead + KPMG Infrastructure Architect + JCI IT Manager / All 12,000 users migrated to Merger Zone; JCI user access fully transitioned
- 84: Wave 2 app migration and data migration - completed pre-QG4
- 85: Resources: Infosys Application Lead + KPMG Data Architect / Wave 2 apps migrated to MZ; integration tests passed; business sign-off
- 86: Resources: Infosys Data Migration Lead + KPMG Data Architect / Wave 2 data extracted, transformed, loaded; integrity validated; reconciliation done
- 87: Wave 3 app and data migration - completed pre-QG4
- 88: Resources: Infosys Application Lead + KPMG Data Architect / Wave 3 specialist/regional apps migrated; integration validated; defects resolved
- 89: Resources: Infosys Data Migration Lead + KPMG Data Architect / Wave 3 data migration complete; all 1,800+ app data in MZ; no outstanding items
- 90: SAP cutover run book, two mock cutovers - completed pre-QG4
- 91: Resources: Infosys SAP Architect + KPMG SAP Architect + JCI SAP Owner / Detailed run book; cutover sequence; rollback plan; timing and resources confirmed
- 92: Resources: Infosys SAP Architect + KPMG SAP Architect + JCI SAP Owner / Full dry run; timing measured; issues logged; rollback tested successfully
- 93: Resources: Infosys SAP Architect + KPMG SAP Architect + JCI SAP Owner / Issues from Mock 1 corrected; cutover timing confirmed; go/no-go criteria met
- 94: QG4 preparation, final readiness checks, GoLive cutover
- 95: All migration verification, infrastructure and SAP readiness, rollback plan
- 96: Resources: KPMG PMO Lead + Infosys Programme Manager / 12,000 users migrated; all 1,800+ apps on MZ; all data reconciled; UAT signed off
- 97: Resources: Infosys Infrastructure Architect + KPMG Infrastructure Architect / MZ infrastructure fully operational; DR validated; security cleared; monitoring active
- 98: Resources: Infosys SAP Architect + KPMG SAP Architect + JCI SAP Owner / SAP production environment validated; interfaces live; authorization model approved
- 99: Resources: KPMG PMO Lead + Infosys Programme Manager / Rollback plan reviewed and approved by steering; go/no-go criteria documented
- 100: Resources: KPMG PMO Lead + JCI Programme Sponsor + Bosch Programme Sponsor / All workstreams ready; QG4 approved; proceed to Final Readiness & GoLive preparation
- 101: Mandatory: UAT defects, infra checks, rollback test, steering sign-off
- 102: Resources: KPMG Project Manager + Infosys Service Delivery Lead / Zero blocking defects; QA formally signs off UAT closure; test evidence archived
- 103: Resources: Infosys Infrastructure Architect + KPMG Infrastructure Architect / All MZ components green; no open P1 tickets; capacity validated for GoLive load
- 104: Resources: Infosys SAP Architect + KPMG Project Manager / Full rollback test completed; rollback timing confirmed within window; approved
- 105: Resources: KPMG PMO Lead + JCI Programme Sponsor + Bosch Programme Sponsor / Formal steering approval to proceed to GoLive; all action items closed; date confirmed
- 106: Resources: KPMG PMO Lead + Infosys Programme Manager + JCI Programme Sponsor + Bosch Programme Sponsor / All 12,000 users live on Merger Zone; SAP production activated; 1,800+ apps operational; 24/7 support active

| ID | WBS | Task | Type | Duration | Start | Finish | Predecessors | Constraint | Resources |
| --- | --- | --- | --- | --- | --- | --- | --- | --- | --- |
| 107 | 6 | **Phase 5: Hypercare & Project Closure** |  | 90d | 2028-01-02 | 2028-04-01 |  |  |  |
| 108 | 6.1 | **5.1 Hypercare Support (90 Days - Stabilisation Only)** |  | 90d | 2028-01-02 | 2028-04-01 |  |  |  |
| 109 | 6.1.1 | 24/7 L3 Support & Incident Triage (Infosys) |  | 90d | 2028-01-02 | 2028-04-01 | 106 | must start on 2028-01-02 | Infosys Service Delivery Lead; KPMG Project Manager |
| 110 | 6.1.2 | Hotfix Release Management (Critical Bug Fixes Only) |  | 60d | 2028-01-02 | 2028-03-02 | 106 | must start on 2028-01-02 | Infosys Application Lead; Infosys SAP Architect |
| 111 | 6.1.3 | User Enablement & Adoption Programs (12,000 Users) |  | 45d | 2028-01-02 | 2028-02-16 | 106 | must start on 2028-01-02 | KPMG Project Manager; Infosys Service Delivery Lead; JCI IT Manager |
| 112 | 6.1.4 | Knowledge Transfer to Bosch IT Operations |  | 60d | 2028-01-16 | 2028-03-16 | 106 | must start on 2028-01-16 | KPMG Infrastructure Architect; Infosys Infrastructure Architect; Bosch IT Manager |
| 113 | 6.2 | **5.2 Bosch Integration Handover & Project Closure** |  | 76d | 2028-01-16 | 2028-04-01 |  |  |  |
| 114 | 6.2.1 | JCI TSA Service Exit Execution |  | 46d | 2028-01-16 | 2028-03-02 | 106 | must start on 2028-01-16 | KPMG Project Manager; JCI IT Manager; Bosch IT Manager |
| 115 | 6.2.2 | Bosch IT Systems Integration Handover |  | 56d | 2028-02-01 | 2028-03-28 | 112 | must start on 2028-02-01 | Infosys Programme Manager; KPMG Infrastructure Architect; Bosch IT Manager |
| 116 | 6.2.3 | Documentation & Runbook Finalization (All Workstreams) |  | 44d | 2028-02-01 | 2028-03-16 | 112 | must start on 2028-02-01 | KPMG PMO Lead; Infosys Programme Manager |
| 117 | 6.2.4 | Lessons Learned & PMO Closure Report (KPMG) |  | 31d | 2028-03-01 | 2028-04-01 | 115, 116 | must start on 2028-03-01 | KPMG PMO Lead; KPMG Project Manager |
| 118 | 6.2.5 | QG5 - Project Completion | milestone | 0d | 2028-04-01 | 2028-04-01 | 109, 117 | must start on 2028-04-01 | KPMG PMO Lead; JCI Programme Sponsor; Bosch Programme Sponsor |

Notes:
- 107: 90-day hypercare, Bosch integration handover, TSA exit, PMO closure
- 108: 24/7 L3 support, hotfixes, user enablement, Bosch knowledge transfer
- 109: Resources: Infosys Service Delivery Lead + KPMG Project Manager / Round-the-clock L3 support; P1/P2 hotline; daily ops standups all regions
- 110: Resources: Infosys Application Lead + Infosys SAP Architect / Bug fixes only; no new features; change freeze enforced; release cadence weekly
- 111: Resources: KPMG Project Manager + Infosys Service Delivery Lead + JCI IT Manager / Self-service guides; regional training; adoption dashboards; help desk KPIs tracked
- 112: Resources: KPMG Infrastructure Architect + Infosys Infrastructure Architect + Bosch IT Manager / Run books; architecture docs; SAP operational guides; ITSM transition to Bosch team
- 113: TSA exit, Bosch IT handover, documentation, lessons learned
- 114: Resources: KPMG Project Manager + JCI IT Manager + Bosch IT Manager / JCI services formally exited per TSA exit criteria; acceptance tests passed; contracts closed
- 115: Resources: Infosys Programme Manager + KPMG Infrastructure Architect + Bosch IT Manager / MZ services formally handed to Bosch IT operations; Infosys role concluded; ITSM transferred
- 116: Resources: KPMG PMO Lead + Infosys Programme Manager / Architecture docs; SAP guides; operational runbooks; security playbooks; all archived
- 117: Resources: KPMG PMO Lead + KPMG Project Manager / Lessons learned workshop; final PMO report; project artifacts archived; team debrief
- 118: Resources: KPMG PMO Lead + JCI Programme Sponsor + Bosch Programme Sponsor / 90-day hypercare complete; JCI TSA fully exited; Bosch IT operations live; programme closed
